# Waterfall WBS (N+) MS Project Schedule

Schedule from MS Project, 2009-01-09 to 2010-06-24, costs in CHF, A marks actual dates.
N2952 JAP AR6
CREDIT SUISSE
Version 32.0 Status: Final

## Calendars

- Standard: Mon-Fri 08:00-12:00, 13:00-17:00; Sat-Sun off. Exceptions (off unless hours are given): 2009-12-25, 2010-01-01.

## Resources

| Resource | Group | Rate |
| --- | --- | --- |
| Lüthi Rico F. | Lüthi Rico F. (KIRO 12) | 1 |
| Neumann Gabriele | Neumann Gabriele (KIRF 64) |  |
| Bennek Robert | Bennek Robert (KIRF 64) |  |
| Telgheider Jörg | Telgheider Jörg (KIRO 65) |  |
| Piol Domenico | Piol Domenico (KIRF 65) |  |
| Hess Andreas | Hess Andreas (KIRF 63) |  |
| Trindler Markus | Trindler Markus (KIRF 62) |  |
| Lackmann Ralph | Lackmann Ralph (KIRF 62) |  |
| Scheidegger Ruedi | Scheidegger Ruedi (KIRF 63) |  |
| Polisano Riccardo | Polisano Riccardo (KIRF 63) |  |
| Zulliger Markus | Zulliger Markus (KSLB 3) |  |
| Schelling Adrian | Schelling Adrian (KIRF 63) |  |
| Koch Thomas | Koch Thomas (KIRF 6) |  |
| Matthes Andreas | Matthes Andreas (KIRF 62) |  |
| Dörsam Holger | Dörsam Holger (KIRF 62) |  |
| Participans |  |  |
| Obradovic Daniela | Obradovic Daniela (KIRF 63) |  |
| Haller Marcel | Haller Marcel (KIDG 43) |  |
| Janosevic Dejan | Janosevic Dejan (KIRF 65) |  |
| Thurner Rubert | Thurner Rubert (KIRF 65) |  |
| Paulicke Stephan | Paulicke Stephan (KIRF 65) |  |
| Singh Kulbir | Singh Kulbir (KIRF 22) |  |
| Rawal Dhirendra | Rawal, Dhirendra |  |
| Powischer Kolja | Powischer Kolja (KIRF 65) |  |
| Muthuirulappan Vijayalakshmi | Muthuirulappan Vijayalakshmi (KIRF 65) |  |
| Hermann René | Hermann René (KIRF 62) |  |
| all |  |  |
| Schreier Balz | Schreier Balz (KIRF 64) |  |
| Andreas Thomas | Andreas Thomas (KIRF 64) |  |
| Geppert Andreas |  |  |
| Kradolfer Markus | Kradolfer Markus (KIRF 64) |  |
| Duma Claudiu |  |  |
| Meyer Andrea P |  |  |
| Bu Sigve | Bu Sigve (KIRF 62) |  |
| Oezgen Oya | Oezgen Oya (KIRF 62) |  |
| von Itzenplitz Georg | von Itzenplitz Georg (KIRF 61) |  |
| Oberndorfer Richard | Oberndorfer Richard (KIRF 62) |  |
| Frank Pascal | Frank Pascal (KIRF 61) |  |
| Spencer Phil |  |  |
| Lutzenberger Wilhelm | Lutzenberger Wilhelm (KIRF 62) |  |

## Schedule

| ID | WBS | Task | Type | Duration | Start | Finish | Predecessors | Complete | Remaining | Total slack | Free slack | Constraint | Deadline | Resources | Work | Actual work | Cost | Actual cost | Text11 | Text23 | Text30 |
| --- | --- | --- | --- | --- | --- | --- | --- | --- | --- | --- | --- | --- | --- | --- | --- | --- | --- | --- | --- | --- | --- |
| 1 | 01 | **N2952 (JAP AR6) N+** |  | 377d? | 2009-01-09 A | 2010-06-24 |  | 59% | 153.76d? | 0d |  |  |  |  | 33149h | 18236.6h | 2,529.19 | 1,871.19 | (0) HelpTasks | medium | (2) Normal |
| 2 | 01.1 | **Milestones & Dependency** |  | 377d | 2009-01-09 | 2010-06-24 |  |  |  | 0d |  |  |  |  |  |  |  |  | (0) HelpTasks | medium | (2) Normal |
| 3 | 01.1.1 | **Milestones** |  | 369d | 2009-01-09 | 2010-06-11 |  |  |  | 0d |  |  |  |  |  |  |  |  | (0) HelpTasks | medium | (2) Normal |
| 4 | 01.1.1.1 | **Phases** |  | 369d | 2009-01-09 | 2010-06-11 |  |  |  | 0d |  |  |  |  |  |  |  |  | (0) HelpTasks | medium | (2) Normal |
| 5 | 01.1.1.1.1 | **Request** |  | 0d | 2009-01-09 | 2009-01-09 |  |  |  | 0d |  |  |  | Lüthi Rico F. |  |  |  |  | (0) HelpTasks | medium | (2) Normal |
| 6 | 01.1.1.1.1.1 | End Request Phase | milestone | 0d | 2009-01-09 | 2009-01-09 |  |  |  | 0d |  |  |  |  |  |  |  |  | (0) HelpTasks | medium | (2) Normal |
| 7 | 01.1.1.1.2 | **Setup Phase** |  | 74d | 2009-01-09 | 2009-04-22 | 6 |  |  | 0d |  |  |  |  |  |  |  |  | (0) HelpTasks | medium | (2) Normal |
| 8 | 01.1.1.1.2.1 | Start Setup Phase | milestone | 0d | 2009-01-09 | 2009-01-09 |  |  |  | 0d |  |  |  |  |  |  |  |  | (0) HelpTasks | medium | (2) Normal |
| 9 | 01.1.1.1.2.2 | Temp Task |  | 25d | 2009-01-09 | 2009-02-12 | 8 |  |  | 0d |  |  |  |  |  |  |  |  | (0) HelpTasks | medium | (2) Normal |
| 10 | 01.1.1.1.2.3 | Requirements Freeze | milestone | 0d | 2009-02-12 | 2009-02-12 | 9 |  |  | 0d |  |  | 2009-02-12 |  |  |  |  |  | (0) HelpTasks | medium | (2) Normal |
| 11 | 01.1.1.1.2.4 | Temp Task |  | 38d | 2009-02-13 | 2009-04-07 | 10 |  |  | 0d |  |  |  |  |  |  |  |  | (0) HelpTasks | medium | (2) Normal |
| 12 | 01.1.1.1.2.5 | PC (Project Concept) delivered | milestone | 0d | 2009-04-07 | 2009-04-07 | 11 |  |  | 0d |  |  | 2009-04-07 |  |  |  |  |  | (0) HelpTasks | medium | (2) Normal |
| 13 | 01.1.1.1.2.6 | Temp Task |  | 11d | 2009-04-08 | 2009-04-22 | 12 |  |  | 0d |  |  |  |  |  |  |  |  | (0) HelpTasks | medium | (2) Normal |
| 14 | 01.1.1.1.2.7 | PRB Meeting for PC | milestone | 0d | 2009-04-22 | 2009-04-22 | 13 |  |  | 0d |  |  | 2009-04-22 |  |  |  |  |  | (0) HelpTasks | medium | (2) Normal |
| 15 | 01.1.1.1.2.8 | End Setup Phase | milestone | 0d | 2009-04-22 | 2009-04-22 | 14 |  |  | 303d |  |  |  |  |  |  |  |  | (0) HelpTasks | medium | (2) Normal |
| 16 | 01.1.1.1.3 | **Initialization Phase** |  | 80.5d | 2009-04-07 | 2009-07-29 |  |  |  | 0.5d |  |  |  |  |  |  |  |  | (0) HelpTasks | medium | (2) Normal |
| 17 | 01.1.1.1.3.1 | Start Initialization Phase | milestone | 0d | 2009-04-07 | 2009-04-07 | 12 |  |  | 0.5d | 0d |  |  |  |  |  |  |  | (0) HelpTasks | medium | (2) Normal |
| 18 | 01.1.1.1.3.2 | Temp Task |  | 69.5d | 2009-04-08 | 2009-07-14 | 17 |  |  | 0.5d | 0d |  |  |  |  |  |  |  | (0) HelpTasks | medium | (2) Normal |
| 19 | 01.1.1.1.3.3 | PO (Planning Offer) delivered | milestone | 0d | 2009-07-14 | 2009-07-14 | 18, 581, 455 |  |  | 0.5d | 0d |  | 2009-07-14 |  |  |  |  |  | (0) HelpTasks | medium | (2) Normal |
| 20 | 01.1.1.1.3.4 | Temp Task |  | 11d | 2009-07-14 | 2009-07-29 | 19 |  |  | 0.5d | 0d |  |  |  |  |  |  |  | (0) HelpTasks | medium | (2) Normal |
| 21 | 01.1.1.1.3.5 | PRB Meeting for PO | milestone | 0d | 2009-07-29 | 2009-07-29 | 20 |  |  | 0.5d | 0d |  | 2009-07-29 |  |  |  |  |  | (0) HelpTasks | medium | (2) Normal |
| 22 | 01.1.1.1.3.6 | End Initialization Phase PRB | milestone | 0d | 2009-07-29 | 2009-07-29 | 21 |  |  | 233.5d |  |  |  |  |  |  |  |  | (0) HelpTasks | medium | (2) Normal |
| 23 | 01.1.1.1.4 | **System Design Phase** |  | 61.5d | 2009-07-14 | 2009-10-07 |  |  |  | 0d |  |  |  |  |  |  |  |  | (0) HelpTasks | medium | (2) Normal |
| 24 | 01.1.1.1.4.1 | Start System Design Phase | milestone | 0d | 2009-07-14 | 2009-07-14 | 19 |  |  | 0.5d | 0d | start no earlier than 2009-07-14 | 2009-07-14 |  |  |  |  |  | (0) HelpTasks | medium | (2) Normal |
| 25 | 01.1.1.1.4.2 | Temp Planning |  | 11d | 2009-07-14 | 2009-07-29 | 24 |  |  | 0.5d | 0d |  |  |  |  |  |  |  | (0) HelpTasks | medium | (2) Normal |
| 26 | 1.1.1.1.4.3 | PRB OK | milestone | 0d | 2009-07-29 | 2009-07-29 | 25, 20 |  |  | 0.5d | 0d |  | 2009-07-29 |  |  |  |  |  |  | medium | (2) Normal |
| 27 | 01.1.1.1.4.11 | Temp Task |  | 39d | 2009-07-29 | 2009-09-22 | 26 |  |  | 0.5d |  |  |  |  |  |  |  |  | (0) HelpTasks | medium | (2) Normal |
| 28 | 01.1.1.1.4.12 | RO (Realization Offer) delivered | milestone | 0d | 2009-09-22 | 2009-09-22 | 27, 763, 1083 |  |  | 0d |  |  | 2009-09-22 |  |  |  |  |  | (0) HelpTasks | medium | (2) Normal |
| 29 | 01.1.1.1.4.13 | Temp Task |  | 11d | 2009-09-23 | 2009-10-07 | 28 |  |  | 0d |  |  |  |  |  |  |  |  | (0) HelpTasks | medium | (2) Normal |
| 30 | 1.1.1.1.4.7 | Supplier Delivery PG1 | milestone | 0d | 2009-09-25 | 2009-09-25 | 892, 1084 |  |  | 0d |  | must start on 2009-09-25 | 2009-09-25 |  |  |  |  |  |  | medium | (2) Normal |
| 31 | 01.1.1.1.4.14 | PRB Meeting for RO | milestone | 0d | 2009-10-07 | 2009-10-07 | 29 |  |  | 0d |  |  | 2009-10-07 |  |  |  |  |  | (0) HelpTasks | medium | (2) Normal |
| 32 | 01.1.1.1.4.15 | End System Design Phase | milestone | 0d | 2009-10-07 | 2009-10-07 | 31, 1085 |  |  | 0d |  |  | 2009-10-07 |  |  |  |  |  | (0) HelpTasks | medium | (2) Normal |

Notes:
- 1: Notiz

| ID | WBS | Task | Type | Duration | Start | Finish | Predecessors | Total slack | Free slack | Constraint | Deadline | Text11 | Text23 | Text30 | Text26 |
| --- | --- | --- | --- | --- | --- | --- | --- | --- | --- | --- | --- | --- | --- | --- | --- |
| 33 | 01.1.1.1.5 | **Realization Phase** |  | 134d | 2009-09-22 | 2010-03-31 |  | 0d |  |  |  | (0) HelpTasks | medium | (2) Normal |  |
| 34 | 01.1.1.1.5.1 | Start Realization Phase | milestone | 0d | 2009-09-22 | 2009-09-22 | 28 | 0d |  |  | 2009-09-22 | (0) HelpTasks | medium | (2) Normal |  |
| 35 | 01.1.1.1.5.2 | Temp Planing |  | 11d | 2009-09-23 | 2009-10-07 | 34 | 0d |  |  |  | (0) HelpTasks | medium | (2) Normal |  |
| 36 | 01.1.1.1.5.3 | PRB OK | milestone | 0d | 2009-10-07 | 2009-10-07 | 35, 31 | 0d |  |  | 2009-10-07 | (0) HelpTasks | medium | (2) Normal | OK |
| 37 | 1.1.1.1.5.4 | Temp IAT Phase |  | 53d | 2009-10-08 | 2009-12-21 | 36 | 0d |  |  |  |  | medium | (2) Normal |  |
| 38 | 1.1.1.1.5.5 | Start IT | milestone | 0d | 2009-12-21 | 2009-12-21 | 37 | 0d |  |  | 2009-12-21 |  | medium | (2) Normal |  |
| 39 | 1.1.1.1.5.6 | Temp IT |  | 38d | 2009-12-22 | 2010-02-15 | 38 | 0d |  |  |  |  | medium | (2) Normal |  |
| 40 | 1.1.1.1.5.7 | Start PT | milestone | 0d | 2010-02-15 | 2010-02-15 | 39 | 0d |  |  | 2010-02-15 |  | medium | (2) Normal |  |
| 41 | 1.1.1.1.5.8 | Temp PT |  | 19d | 2010-02-16 | 2010-03-12 | 40 | 0d |  |  |  |  | medium | (2) Normal |  |
| 42 | 1.1.1.1.5.9 | Start PA | milestone | 0d | 2010-03-12 | 2010-03-12 | 41 | 0d |  |  | 2010-03-12 |  | medium | (2) Normal |  |
| 43 | 1.1.1.1.5.10 | Temp PA |  | 13d | 2010-03-15 | 2010-03-31 | 42 | 0d |  |  |  |  | medium | (2) Normal |  |
| 44 | 1.1.1.1.5.11 | **PG & PC** |  | 94d | 2009-09-25 | 2010-02-05 |  | 20d |  |  |  |  | medium | (2) Normal |  |
| 45 | 1.1.1.1.5.11.1 | Temp Implementation PG1 |  | 12d | 2009-09-25 | 2009-10-12 | 30 | 117d | 0d |  |  |  | medium | (2) Normal |  |
| 46 | 1.1.1.1.5.11.2 | PG1 Ready | milestone | 0d | 2009-10-12 | 2009-10-12 | 45 | 117d | 0d |  |  |  | medium | (2) Normal |  |
| 47 | 1.1.1.1.5.11.3 | Supplier Delivery PG2 | milestone | 0d | 2009-10-23 | 2009-10-23 |  | 0d |  | must start on 2009-10-23 |  |  | medium | (2) Normal |  |
| 48 | 1.1.1.1.5.11.4 | Temp Implementation PG2 |  | 11d | 2009-10-23 | 2009-11-06 | 47 | 98d | 0d |  |  |  | medium | (2) Normal |  |
| 49 | 1.1.1.1.5.11.5 | PG2 Ready | milestone | 0d | 2009-11-06 | 2009-11-06 | 48 | 98d | 0d |  |  |  | medium | (2) Normal |  |
| 50 | 1.1.1.1.5.11.6 | Supplier Delivery PG3 | milestone | 0d | 2009-11-20 | 2009-11-20 |  | 0d |  | must start on 2009-11-20 |  |  | medium | (2) Normal |  |
| 51 | 1.1.1.1.5.11.7 | Temp Implementation PG3 |  | 11d | 2009-11-20 | 2009-12-04 | 50 | 78d | 0d |  |  |  | medium | (2) Normal |  |
| 52 | 1.1.1.1.5.11.8 | PG3 Ready | milestone | 0d | 2009-12-04 | 2009-12-04 | 51 | 78d | 0d |  |  |  | medium | (2) Normal |  |
| 53 | 1.1.1.1.5.11.9 | Supplier Delivery RC1 | milestone | 0d | 2009-12-18 | 2009-12-18 |  | 0d |  | must start on 2009-12-18 |  |  | medium | (2) Normal |  |
| 54 | 1.1.1.1.5.11.10 | Temp Implementation RC1 |  | 18d | 2009-12-18 | 2010-01-14 | 53 | 51d | 0d |  |  |  | medium | (2) Normal |  |
| 55 | 1.1.1.1.5.11.11 | RC1 Ready | milestone | 0d | 2010-01-14 | 2010-01-14 | 54 | 51d | 0d |  |  |  | medium | (2) Normal |  |
| 56 | 1.1.1.1.5.11.12 | Supplier Delivery RC2 | milestone | 0d | 2010-01-22 | 2010-01-22 |  | 0d |  | must start on 2010-01-22 |  |  | medium | (2) Normal |  |
| 57 | 1.1.1.1.5.11.13 | Temp Implementation RC2 |  | 11d | 2010-01-22 | 2010-02-05 | 56 | 35d | 0d |  |  |  | medium | (2) Normal |  |
| 58 | 1.1.1.1.5.11.14 | RC 2 Ready | milestone | 0d | 2010-02-05 | 2010-02-05 | 57 | 35d | 0d |  |  |  | medium | (2) Normal |  |
| 59 | 01.1.1.1.5.19 | End PA | milestone | 0d | 2010-03-31 | 2010-03-31 | 43, 1912, 1391, 1584, 1552, 1913, 2104, 1201, 1357, 1158, 1115 | 0d |  |  |  | (0) HelpTasks | medium | (2) Normal | green |
| 60 | 01.1.1.1.5.20 | CCB | milestone | 0d | 2010-03-31 | 2010-03-31 | 59, 1531, 1356, 1424 | 0d |  |  | 2010-03-31 | (0) HelpTasks | medium | (2) Normal | green |

| ID | WBS | Task | Type | Duration | Start | Finish | Predecessors | Total slack | Free slack | Constraint | Deadline | Text11 | Text23 | Text30 |
| --- | --- | --- | --- | --- | --- | --- | --- | --- | --- | --- | --- | --- | --- | --- |
| 61 | 01.1.1.1.6 | **Deployment Phase** |  | 22d | 2010-04-01 | 2010-04-30 |  | 0d |  |  |  | (0) HelpTasks | medium | (2) Normal |
| 62 | 01.1.1.1.6.1 | Start of Deployment Phase | milestone | 0d | 2010-04-01 | 2010-04-01 | 60 | 0d |  | as late as possible |  | (0) HelpTasks | medium | (2) Normal |
| 63 | 01.1.1.1.6.2 | Temp Task |  | 12d | 2010-04-01 | 2010-04-16 | 62 | 0d |  |  |  | (0) HelpTasks | medium | (2) Normal |
| 64 | 01.1.1.1.6.3 | RD (Request for Conclusion) delivered | milestone | 0d | 2010-04-16 | 2010-04-16 | 63 | 0d |  |  | 2010-04-16 | (0) HelpTasks | medium | (2) Normal |
| 65 | 01.1.1.1.6.4 | Temp Task |  | 10d | 2010-04-19 | 2010-04-30 | 64 | 0d |  |  |  | (0) HelpTasks | medium | (2) Normal |
| 66 | 01.1.1.1.6.5 | PRB Meeting for RD | milestone | 0d | 2010-04-30 | 2010-04-30 | 65 | 0d |  |  |  | (0) HelpTasks | medium | (2) Normal |
| 67 | 01.1.1.1.6.6 | GA | milestone | 0d | 2010-04-30 | 2010-04-30 | 66, 2171FS+5d | 0d |  |  | 2010-04-30 | (0) HelpTasks | medium | (2) Normal |
| 68 | 1.1.1.1.7 | **Portal Functionality** |  | 95d | 2010-02-01 | 2010-06-11 |  | 0d |  |  |  |  | medium | (2) Normal |
| 69 | 1.1.1.1.7.1 | Start of Portal Functionality | milestone | 0d | 2010-02-01 | 2010-02-01 |  | 0d |  | start no earlier than 2010-02-01 | 2010-02-01 |  | medium | (2) Normal |
| 70 | 1.1.1.1.7.2 | Temp Development |  | 65d | 2010-02-01 | 2010-04-30 | 69 | 8d | 0d |  |  |  | medium | (2) Normal |
| 71 | 1.1.1.1.7.3 | Supplier Delivery Portal RC | milestone | 0d | 2010-04-30 | 2010-04-30 | 70 | 8d | 0d |  |  |  | medium | (2) Normal |
| 72 | 1.1.1.1.7.4 | Temp Implementation |  | 30d | 2010-05-03 | 2010-06-11 | 71 | 8d | 0d |  |  |  | medium | (2) Normal |
| 73 | 1.1.1.1.7.5 | Portal RC Redy | milestone | 0d | 2010-06-11 | 2010-06-11 | 72 | 8d |  |  |  |  | medium | (2) Normal |
| 74 | 1.1.1.1.7.6 | GA Portal Functionlity | milestone | 0d | 2010-06-11 | 2010-06-11 | 2283, 2237, 2245FS+5d, 70 | 0d |  |  | 2010-06-11 |  | medium | (2) Normal |
| 75 | 01.1.1.2 | End JAP AR6 | milestone | 0d | 2010-06-11 | 2010-06-11 | 74, 2284 | 0d |  |  | 2010-06-11 | (0) HelpTasks | medium | (2) Normal |
| 76 | 01.1.2 | **Dependency** |  | 364d | 2009-01-27 | 2010-06-24 |  | 0d |  |  |  | (0) HelpTasks | medium | (2) Normal |
| 77 | 01.1.2.1 | **JAP STC** |  | 364d | 2009-01-27 | 2010-06-24 |  | 0d |  |  |  | (0) HelpTasks | medium | (2) Normal |
| 78 | 01.1.2.1.1 | JAP STC January | milestone | 0d | 2009-01-27 | 2009-01-27 |  | 0d |  | start no earlier than 2009-01-27 | 2009-01-27 | (0) HelpTasks | medium | (2) Normal |
| 79 | 01.1.2.1.2 | JAP STC February | milestone | 0d | 2009-02-24 | 2009-02-24 |  | 0d |  | start no earlier than 2009-02-24 | 2009-02-24 | (0) HelpTasks | medium | (2) Normal |
| 80 | 01.1.2.1.3 | JAP STC March | milestone | 0d | 2009-03-30 | 2009-03-30 |  | 0d |  | start no earlier than 2009-03-30 | 2009-03-30 | (0) HelpTasks | medium | (2) Normal |
| 81 | 01.1.2.1.4 | JAP STC April | milestone | 0d | 2009-04-28 | 2009-04-28 |  | 0d |  | start no earlier than 2009-04-28 | 2009-04-28 | (0) HelpTasks | medium | (2) Normal |
| 82 | 01.1.2.1.5 | JAP STC May | milestone | 0d | 2009-05-26 | 2009-05-26 |  | 0d |  | start no earlier than 2009-05-26 | 2009-05-26 | (0) HelpTasks | medium | (2) Normal |
| 83 | 01.1.2.1.6 | JAP STC June | milestone | 0d | 2009-06-30 | 2009-06-30 | 337 | 0d |  | start no earlier than 2009-06-30 | 2009-06-30 | (0) HelpTasks | medium | (2) Normal |
| 84 | 01.1.2.1.7 | JAP STC August | milestone | 0d | 2009-08-24 | 2009-08-24 |  | 0d |  | start no earlier than 2009-08-24 | 2009-08-24 | (0) HelpTasks | medium | (2) Normal |
| 85 | 01.1.2.1.8 | JAP STC September | milestone | 0d | 2009-09-29 | 2009-09-29 |  | 0d |  | start no earlier than 2009-09-29 | 2009-09-29 | (0) HelpTasks | medium | (2) Normal |
| 86 | 01.1.2.1.9 | JAP STC October | milestone | 0d | 2009-10-27 | 2009-10-27 | 1164 | 0d |  | start no earlier than 2009-10-27 | 2009-10-27 | (0) HelpTasks | medium | (2) Normal |
| 87 | 1.1.2.1.10 | JAP STC November | milestone | 0d | 2009-11-30 | 2009-11-30 | 1171 | 0d |  | start no earlier than 2009-11-30 | 2009-11-30 |  | medium | (2) Normal |
| 88 | 1.1.2.1.11 | JAP STC December | milestone | 0d | 2009-12-22 | 2009-12-22 | 1178 | 0d |  | start no earlier than 2009-12-22 | 2009-12-22 |  | medium | (2) Normal |
| 89 | 1.1.2.1.12 | JAP STC January | milestone | 0d | 2010-01-25 | 2010-01-25 | 1185 | 0d |  | start no earlier than 2010-01-25 | 2010-01-25 |  | medium | (2) Normal |
| 90 | 1.1.2.1.13 | JAP STC February | milestone | 0d | 2010-02-24 | 2010-02-24 | 1192 | 0d |  | start no earlier than 2010-02-24 | 2010-02-24 |  | medium | (2) Normal |
| 91 | 1.1.2.1.14 | JAP STC March | milestone | 0d | 2010-03-24 | 2010-03-24 | 1199 | 0d |  | start no earlier than 2010-03-24 | 2010-03-24 |  | medium | (2) Normal |
| 92 | 1.1.2.1.15 | JAP STC April | milestone | 0d | 2010-04-26 | 2010-04-26 |  | 1d |  | start no earlier than 2010-04-26 | 2010-04-26 |  | medium | (2) Normal |
| 93 | 1.1.2.1.16 | JAP STC May | milestone | 0d | 2010-05-24 | 2010-05-24 |  | 1d |  | start no earlier than 2010-05-24 | 2010-05-24 |  | medium | (2) Normal |
| 94 | 1.1.2.1.17 | JAP STC June | milestone | 0d | 2010-06-24 | 2010-06-24 |  | 0d |  | start no earlier than 2010-06-24 | 2010-06-24 |  | medium | (2) Normal |

| ID | WBS | Task | Type | Duration | Start | Finish | Complete | Remaining | Total slack | Free slack | Constraint | Resources | Work | Actual work | Cost | Actual cost | Text11 | Text13 | Text23 | Text30 | Text12 | Text17 | Text25 |
| --- | --- | --- | --- | --- | --- | --- | --- | --- | --- | --- | --- | --- | --- | --- | --- | --- | --- | --- | --- | --- | --- | --- | --- |
| 95 | 1.1.2.2 | **CSS Dates** |  | 58d | 2009-10-16 | 2010-01-08 |  |  | 0d |  |  |  |  |  |  |  |  |  |  |  |  |  |  |
| 96 | 1.1.2.2.1 | CSS 3.0 IT1 finished | milestone | 0d | 2009-10-16 | 2009-10-16 |  |  | 0d |  | must start on 2009-10-16 |  |  |  |  |  |  |  |  |  |  |  |  |
| 97 | 1.1.2.2.2 | CSS 3.0 IT2 finished | milestone | 0d | 2009-11-13 | 2009-11-13 |  |  | 0d |  | must start on 2009-11-13 |  |  |  |  |  |  |  |  |  |  |  |  |
| 98 | 1.1.2.2.3 | CSS 3.0 PT finished | milestone | 0d | 2009-12-18 | 2009-12-18 |  |  | 57d | 0d | start no earlier than 2009-12-18 |  |  |  |  |  |  |  |  |  |  |  |  |
| 99 | 1.1.2.2.4 | CSS 3.0 GA | milestone | 0d | 2010-01-08 | 2010-01-08 |  |  | 49d | 0d | start no earlier than 2010-01-08 |  |  |  |  |  |  |  |  |  |  |  |  |
| 100 | 01.2 | **JAP AR 6.0** |  | 369d? | 2009-01-09 A | 2010-06-11 | 62% | 141.24d? | 8d |  |  |  | 33149h | 18236.6h | 2,529.19 | 1,871.19 | (0) HelpTasks | Project Management | medium | (2) Normal |  |  |  |
| 101 | 01.2.1 | **Project Setup Phase** |  | 73d? | 2009-01-09 A | 2009-04-21 A | 100% |  |  |  |  |  | 562.13h | 562.13h | 136 | 136 | (1) Setup | Project Management | medium | (2) Normal |  |  |  |
| 102 | 01.2.1.1 | **Business Project Management** |  | 38d? | 2009-02-12 A | 2009-04-06 A | 100% |  |  |  |  |  | 16h | 16h |  |  | (1) Setup | Business Project Management | medium | (2) Normal |  |  |  |
| 103 | 01.2.1.1.1 | Preparation of Project Concept Chapters |  | 38d? | 2009-02-12 A | 2009-04-06 A | 100% |  |  |  | start no earlier than 2009-02-12 | Zulliger Markus [2.6%] | 8h | 8h |  |  | (1) Setup | Business Project Management | medium | (2) Normal | 01.1 | Not Started | Zulliger Markus (KSLB 3) |
| 104 | 01.2.1.1.2 | Preparation of PRB Doc |  | 38d? | 2009-02-12 A | 2009-04-06 A | 100% |  |  |  | start no earlier than 2009-02-12 | Zulliger Markus [2.6%] | 8h | 8h |  |  | (1) Setup | Business Project Management | medium | (2) Normal | 01.2 | Not Started | Zulliger Markus (KSLB 3) |
| 105 | 01.2.1.2 | **Project Management** |  | 38d? | 2009-02-12 A | 2009-04-06 A | 100% |  |  |  |  |  | 112h | 112h |  |  | (1) Setup | Project Management | medium | (2) Normal |  |  |  |
| 106 | 01.2.1.2.1 | Presales |  | 38d? | 2009-02-12 A | 2009-04-06 A | 100% |  |  |  | start no earlier than 2009-02-12 | Scheidegger Ruedi [2.6%] | 8h | 8h |  |  | (1) Setup | Project Management | medium | (2) Normal | 02.6 | Not Started | Scheidegger Ruedi (KIRO 11) |
| 107 | 01.2.1.2.2 | Onboard BPL |  | 38d? | 2009-02-12 A | 2009-04-06 A | 100% |  |  |  | start no earlier than 2009-02-12 | Scheidegger Ruedi [2.6%] | 8h | 8h |  |  | (1) Setup | Project Management | medium | (2) Normal | 02.1 | Not Started | Scheidegger Ruedi (KIRO 11) |
| 108 | 01.2.1.2.3 | Get timeline decision from STC |  | 38d? | 2009-02-12 A | 2009-04-06 A | 100% |  |  |  | start no earlier than 2009-02-12 | Scheidegger Ruedi [2.6%] | 8h | 8h |  |  | (1) Setup | Project Management | medium | (2) Normal | 02.2 | Not Started | Scheidegger Ruedi (KIRO 11) |
| 109 | 01.2.1.2.4 | Get staffing commitments |  | 38d? | 2009-02-12 A | 2009-04-06 A | 100% |  |  |  | start no earlier than 2009-02-12 | Scheidegger Ruedi [2.6%] | 8h | 8h |  |  | (1) Setup | Project Management | medium | (2) Normal | 02.3 | Not Started | Scheidegger Ruedi (KIRO 11) |
| 110 | 01.2.1.2.5 | Define Scope |  | 38d? | 2009-02-12 A | 2009-04-06 A | 100% |  |  |  | start no earlier than 2009-02-12 | Scheidegger Ruedi [2.6%] | 8h | 8h |  |  | (1) Setup | Project Management | medium | (2) Normal | 02.4 | Not Started | Scheidegger Ruedi (KIRO 11) |
| 111 | 01.2.1.2.6 | Organize and head the Planning of the Initialization Phase |  | 38d? | 2009-02-12 A | 2009-04-06 A | 100% |  |  |  | start no earlier than 2009-02-12 | Scheidegger Ruedi [2.6%] | 8h | 8h |  |  | (1) Setup | Project Management | medium | (2) Normal | 02.5 | Not Started | Scheidegger Ruedi (KIRO 11) |
| 112 | 01.2.1.2.7 | Planning Initialization Phase |  | 38d? | 2009-02-12 A | 2009-04-06 A | 100% |  |  |  | start no earlier than 2009-02-12 | Scheidegger Ruedi [2.6%] | 8h | 8h |  |  | (1) Setup | Project Management | medium | (2) Normal | 03.2 | Not Started | Scheidegger Ruedi (KIRO 11) |
| 113 | 01.2.1.2.8 | HVLC closure |  | 38d? | 2009-02-12 A | 2009-04-06 A | 100% |  |  |  | start no earlier than 2009-02-12 | Scheidegger Ruedi [2.6%] | 8h | 8h |  |  | (1) Setup | Project Management | medium | (2) Normal | 02.7 | Not Started | Scheidegger Ruedi (KIRO 11) |
| 114 | 01.2.1.2.9 | **Staffing** |  | 38d? | 2009-02-12 A | 2009-04-06 A | 100% |  |  |  |  |  | 8h | 8h |  |  | (1) Setup | Project Management | medium | (2) Normal |  |  |  |
| 115 | 01.2.1.2.9.1 | Setup staffing for ""Setup Phase"" |  | 38d? | 2009-02-12 A | 2009-04-06 A | 100% |  |  |  | start no earlier than 2009-02-12 | Scheidegger Ruedi [2.6%] | 8h | 8h |  |  | (1) Setup | Project Management | medium | (2) Normal | 02.8 | Not Started | Scheidegger Ruedi (KIRO 11) |
| 116 | 01.2.1.2.10 | **Budget** |  | 38d? | 2009-02-12 A | 2009-04-06 A | 100% |  |  |  |  |  | 16h | 16h |  |  | (1) Setup | Project Management | medium | (2) Normal |  |  |  |
| 117 | 01.2.1.2.10.1 | Setup detail budget for ""Setup Phase"" |  | 38d? | 2009-02-12 A | 2009-04-06 A | 100% |  |  |  | start no earlier than 2009-02-12 | Scheidegger Ruedi [2.6%] | 8h | 8h |  |  | (1) Setup | Project Management | medium | (2) Normal | 02.9 | Not Started | Scheidegger Ruedi (KIRO 11) |
| 118 | 01.2.1.2.10.2 | Setup detail budget for ""Initialization Phase"" |  | 38d? | 2009-02-12 A | 2009-04-06 A | 100% |  |  |  | start no earlier than 2009-02-12 | Scheidegger Ruedi [2.6%] | 8h | 8h |  |  | (1) Setup | Project Management | medium | (2) Normal | 02.10 | Not Started | Scheidegger Ruedi (KIRO 11) |

| ID | WBS | Task | Duration | Start | Finish | Complete | Constraint | Resources | Work | Actual work | Text11 | Text13 | Text23 | Text30 | Text12 | Text17 | Text25 | Text20 | Text22 |
| --- | --- | --- | --- | --- | --- | --- | --- | --- | --- | --- | --- | --- | --- | --- | --- | --- | --- | --- | --- |
| 119 | 01.2.1.2.11 | **PRB Docs** | 38d? | 2009-02-12 A | 2009-04-06 A | 100% |  |  | 24h | 24h | (1) Setup | Project Management | medium | (2) Normal |  |  |  |  |  |
| 120 | 01.2.1.2.11.1 | **PRB general document preparation** | 38d? | 2009-02-12 A | 2009-04-06 A | 100% |  |  | 8h | 8h | (1) Setup | Project Management | medium | (2) Normal |  |  |  |  |  |
| 121 | 01.2.1.2.11.1.1 | Preparation of PRB Docs | 38d? | 2009-02-12 A | 2009-04-06 A | 100% | start no earlier than 2009-02-12 | Scheidegger Ruedi [2.6%] | 8h | 8h | (1) Setup | Project Management | medium | (2) Normal | 02.11 | Not Started | Scheidegger Ruedi (KIRO 11) |  |  |
| 122 | 01.2.1.2.11.2 | **Preparation of Project Concept Chapters** | 38d? | 2009-02-12 A | 2009-04-06 A | 100% |  | Scheidegger Ruedi [2.6%] | 16h | 16h | (1) Setup | Project Management | medium | (2) Normal | 02.12 | Not Started | Scheidegger Ruedi (KIRO 11) |  |  |
| 123 | 01.2.1.2.11.2.1 | Describe Request | 38d? | 2009-02-12 A | 2009-04-06 A | 100% | start no earlier than 2009-02-12 | Scheidegger Ruedi [2.6%] | 8h | 8h | (1) Setup | Project Management | medium | (2) Normal | 02.13 | Not Started | Scheidegger Ruedi (KIRO 11) |  |  |
| 124 | 01.2.1.3 | **Architecture** | 21d? | 2009-03-09 A | 2009-04-06 A | 100% |  |  | 138.13h | 138.13h | (1) Setup | Stream Lead Architecture | medium | (2) Normal |  |  |  |  |  |
| 125 | 01.2.1.3.1 | **Requests** | 19d? | 2009-03-09 A | 2009-04-02 A | 100% |  |  | 122.13h | 122.13h | (1) Setup | Stream Lead Architecture | medium | (2) Normal |  |  |  |  |  |
| 126 | 01.2.1.3.1.1 | **Describe Requests & Clarify with provider** | 19d? | 2009-03-09 A | 2009-04-02 A | 100% |  |  | 122.13h | 122.13h | (1) Setup | Stream Lead Architecture | medium | (2) Normal |  |  |  |  |  |
| 127 | 01.2.1.3.1.1.1 | **Describe Requests** | 19d? | 2009-03-09 A | 2009-04-02 A | 100% |  | Trindler Markus [6.7%] | 122.13h | 122.13h | (1) Setup | Stream Lead Architecture | medium | (2) Normal | 04.1 | Waiting on someone else | Trindler Markus (KIRO 12) | 20% | 47 |
| 128 | 01.2.1.3.1.1.1.1 | Request - RTP & ECO | 19d? | 2009-03-09 A | 2009-04-02 A | 100% | start no earlier than 2009-03-09 | Trindler Markus [5.3%] | 8h | 8h | (1) Setup | Stream Lead Architecture | medium | (2) Normal | 4.1.1 | In Progress | Trindler Markus (KIRO 12) |  |  |
| 129 | 01.2.1.3.1.1.1.2 | Request - Deployment Environment | 19d? | 2009-03-09 A | 2009-04-02 A | 100% | start no earlier than 2009-03-09 | Bennek Robert [5.3%] | 8h | 8h | (1) Setup | Stream Lead Architecture | medium | (2) Normal | 4.1.10 | In Progress | Bennek Robert (KIRO 14) |  |  |
| 130 | 01.2.1.3.1.1.1.3 | Request - Bulk Services | 19d? | 2009-03-09 A | 2009-04-02 A | 100% | start no earlier than 2009-03-09 | Neumann Gabriele [5.3%] | 8h | 8h | (1) Setup | Stream Lead Architecture | medium | (2) Normal | 4.1.11 | In Progress | Neumann Gabriele (KIRO 14) |  |  |
| 131 | 01.2.1.3.1.1.1.4 | Request - Batch | 19d? | 2009-03-09 A | 2009-04-02 A | 100% | start no earlier than 2009-03-09 | Neumann Gabriele [5.3%] | 8h | 8h | (1) Setup | Stream Lead Architecture | medium | (2) Normal | 4.1.12 | In Progress | Neumann Gabriele (KIRO 14) |  |  |
| 132 | 01.2.1.3.1.1.1.5 | Request - Portal | 19d? | 2009-03-09 A | 2009-04-02 A | 100% | start no earlier than 2009-03-09 | Neumann Gabriele [5.3%] | 8h | 8h | (1) Setup | Stream Lead Architecture | medium | (2) Normal | 4.1.13 | In Progress | Neumann Gabriele (KIRO 14) |  |  |
| 133 | 01.2.1.3.1.1.1.6 | Request - Persistency Enhancements | 19d? | 2009-03-09 A | 2009-04-02 A | 100% | start no earlier than 2009-03-09 | Neumann Gabriele [5.3%] | 8h | 8h | (1) Setup | Stream Lead Architecture | medium | (2) Normal | 4.1.14 | In Progress | Neumann Gabriele (KIRO 14) |  |  |
| 134 | 01.2.1.3.1.1.1.7 | Request - Workflow Integration | 19d? | 2009-03-09 A | 2009-04-02 A | 100% | start no earlier than 2009-03-09 | Trindler Markus [5.3%] | 8h | 8h | (1) Setup | Stream Lead Architecture | medium | (2) Normal | 4.1.2 | In Progress | Trindler Markus (KIRO 12) |  |  |
| 135 | 01.2.1.3.1.1.1.8 | Request - Monitoring | 19d? | 2009-03-09 A | 2009-04-02 A | 100% | start no earlier than 2009-03-09 | Trindler Markus [5.3%] | 8h | 8h | (1) Setup | Stream Lead Architecture | medium | (2) Normal | 4.1.3 | In Progress | Trindler Markus (KIRO 12) |  |  |
| 136 | 01.2.1.3.1.1.1.9 | Request - Transaction Platform | 19d? | 2009-03-09 A | 2009-04-02 A | 100% | start no earlier than 2009-03-09 | Trindler Markus [5.3%] | 8h | 8h | (1) Setup | Stream Lead Architecture | medium | (2) Normal | 4.1.4 | In Progress | Trindler Markus (KIRO 12) |  |  |
| 137 | 01.2.1.3.1.1.1.10 | Request - Logging & Auditing | 19d? | 2009-03-09 A | 2009-04-02 A | 100% | start no earlier than 2009-03-09 | Bennek Robert [5.3%] | 8h | 8h | (1) Setup | Stream Lead Architecture | medium | (2) Normal | 4.1.5 | In Progress | Bennek Robert (KIRO 14) |  |  |
| 138 | 01.2.1.3.1.1.1.11 | Request - Asynchronous Services | 19d? | 2009-03-09 A | 2009-04-02 A | 100% | start no earlier than 2009-03-09 | Bennek Robert [5.3%] | 8h | 8h | (1) Setup | Stream Lead Architecture | medium | (2) Normal | 4.1.6 | In Progress | Bennek Robert (KIRO 14) |  |  |
| 139 | 01.2.1.3.1.1.1.12 | Request - Development Environment | 19d? | 2009-03-09 A | 2009-04-02 A | 100% | start no earlier than 2009-03-09 | Bennek Robert [5.3%] | 8h | 8h | (1) Setup | Stream Lead Architecture | medium | (2) Normal | 4.1.7 | In Progress | Bennek Robert (KIRO 14) |  |  |
| 140 | 01.2.1.3.1.1.1.13 | Request - SOA | 19d? | 2009-03-09 A | 2009-04-02 A | 100% | start no earlier than 2009-03-09 | Bennek Robert [5.3%] | 8h | 8h | (1) Setup | Stream Lead Architecture | medium | (2) Normal | 4.1.8 | In Progress | Bennek Robert (KIRO 14) |  |  |
| 141 | 01.2.1.3.1.1.1.14 | Request - Synchronous Services | 19d? | 2009-03-09 A | 2009-04-02 A | 100% | start no earlier than 2009-03-09 | Bennek Robert [5.3%] | 8h | 8h | (1) Setup | Stream Lead Architecture | medium | (2) Normal | 4.1.9 | In Progress | Bennek Robert (KIRO 14) |  |  |
| 142 | 01.2.1.3.2 | **PRB Doc** | 11d? | 2009-03-23 A | 2009-04-06 A | 100% |  |  | 8h | 8h | (1) Setup | Stream Lead Architecture | medium | (2) Normal |  |  |  |  |  |
| 143 | 01.2.1.3.2.1 | Preparation of PRB Doc (PC) | 11d? | 2009-03-23 A | 2009-04-06 A | 100% | start no earlier than 2009-03-23 | Trindler Markus [9.1%] | 8h | 8h | (1) Setup | Stream Lead Architecture | medium | (2) Normal | 04.2 | Waiting on someone else | Trindler Markus (KIRO 12) | 10% |  |
| 144 | 01.2.1.3.3 | Planning Initialization Phase | 4d? | 2009-03-25 A | 2009-03-30 A | 100% | start no earlier than 2009-03-25 | Trindler Markus [25%] | 8h | 8h | (1) Setup | Stream Lead Architecture | medium | (2) Normal | 04.3 | Waiting on someone else | Trindler Markus (KIRO 12) | 10% |  |

| ID | WBS | Task | Duration | Start | Finish | Complete | Constraint | Resources | Work | Actual work | Cost | Actual cost | Text11 | Text13 | Text23 | Text30 | Text12 | Text17 | Text20 | Text25 | Text22 |
| --- | --- | --- | --- | --- | --- | --- | --- | --- | --- | --- | --- | --- | --- | --- | --- | --- | --- | --- | --- | --- | --- |
| 145 | 01.2.1.4 | **Integration** | 38d? | 2009-02-12 A | 2009-04-06 A | 100% |  |  | 64h | 64h |  |  | (1) Setup | Stream Lead JAP Integration | medium | (2) Normal |  |  |  |  |  |
| 146 | 01.2.1.4.1 | Setup supplier agreement | 38d? | 2009-02-12 A | 2009-04-06 A | 100% | start no earlier than 2009-02-12 | Lackmann Ralph [2.6%] | 8h | 8h |  |  | (1) Setup | Stream Lead JAP Integration | medium | (2) Normal | 05.1 | In Progress | 20% | Lackmann Ralph (KIRO 12) |  |
| 147 | 01.2.1.4.2 | Decide test tools | 38d? | 2009-02-12 A | 2009-04-06 A | 100% | start no earlier than 2009-02-12 | Lackmann Ralph [2.6%] | 8h | 8h |  |  | (1) Setup | Stream Lead JAP Integration | medium | (2) Normal | 05.2 | In Progress | 10% | Lackmann Ralph (KIRO 12) |  |
| 148 | 01.2.1.4.3 | Decide automatic creation of bundles | 38d? | 2009-02-12 A | 2009-04-06 A | 100% | start no earlier than 2009-02-12 | Lackmann Ralph [2.6%] | 8h | 8h |  |  | (1) Setup | Stream Lead JAP Integration | medium | (2) Normal | 05.3 | In Progress | 10% | Lackmann Ralph (KIRO 12) | 10 |
| 149 | 01.2.1.4.4 | Create hardware blueprint | 38d? | 2009-02-12 A | 2009-04-06 A | 100% | start no earlier than 2009-02-12 | Lackmann Ralph [2.6%] | 8h | 8h |  |  | (1) Setup | Stream Lead JAP Integration | medium | (2) Normal | 05.4 | In Progress | 1% | Lackmann Ralph (KIRO 12) |  |
| 150 | 01.2.1.4.5 | Planning Initialization Phase | 38d? | 2009-02-12 A | 2009-04-06 A | 100% | start no earlier than 2009-02-12 | Lackmann Ralph [2.6%] | 8h | 8h |  |  | (1) Setup | Stream Lead JAP Integration | medium | (2) Normal | 05.5 | Not Started |  | Lackmann Ralph (KIRO 12) |  |
| 151 | 01.2.1.4.6 | **PRB Doc** | 38d? | 2009-02-12 A | 2009-04-06 A | 100% |  |  | 16h | 16h |  |  | (1) Setup | Stream Lead JAP Integration | medium | (2) Normal |  |  |  |  |  |
| 152 | 01.2.1.4.6.1 | Preparation of PRB Docs | 38d? | 2009-02-12 A | 2009-04-06 A | 100% | start no earlier than 2009-02-12 | Lackmann Ralph [2.6%] | 8h | 8h |  |  | (1) Setup | Stream Lead JAP Integration | smal | (2) Normal | 05.6 | Not Started |  | Lackmann Ralph (KIRO 12) |  |
| 153 | 01.2.1.4.6.2 | Preparation of Project Concept Chapters | 38d? | 2009-02-12 A | 2009-04-06 A | 100% | start no earlier than 2009-02-12 | Lackmann Ralph [2.6%] | 8h | 8h |  |  | (1) Setup | Stream Lead JAP Integration | medium | (2) Normal | 05.7 | Waiting on someone else |  | Lackmann Ralph (KIRO 12) |  |
| 154 | 01.2.1.4.7 | **Describe Request** | 38d? | 2009-02-12 A | 2009-04-06 A | 100% |  |  | 8h | 8h |  |  | (1) Setup | Stream Lead JAP Integration | medium | (2) Normal |  |  |  |  |  |
| 155 | 01.2.1.4.7.1 | Describe Request | 38d? | 2009-02-12 A | 2009-04-06 A | 100% | start no earlier than 2009-02-12 | Lackmann Ralph [2.6%] | 8h | 8h |  |  | (1) Setup | Stream Lead JAP Integration | medium | (2) Normal | 05.8 | Waiting on someone else |  | Lackmann Ralph (KIRO 12) |  |
| 156 | 01.2.1.5 | **ToolChain** | 38d? | 2009-02-12 A | 2009-04-06 A | 100% |  |  | 32h | 32h |  |  | (1) Setup | Stream Lead JAP Engineering | medium | (2) Normal |  |  |  |  |  |
| 157 | 01.2.1.5.1 | Clarify Project Budget and Accounting | 38d? | 2009-02-12 A | 2009-04-06 A | 100% | start no earlier than 2009-02-12 | Telgheider Jörg [2.6%] | 8h | 8h |  |  | (1) Setup | Stream Lead JAP Engineering | medium | (2) Normal | 06.1 | In Progress |  | Telgheider Jörg (KIRO 5) |  |
| 158 | 01.2.1.5.2 | Clarify Requirements | 38d? | 2009-02-12 A | 2009-04-06 A | 100% | start no earlier than 2009-02-12 | Telgheider Jörg [2.6%] | 8h | 8h |  |  | (1) Setup | Stream Lead JAP Engineering | medium | (2) Normal | 06.2 | In Progress |  | Telgheider Jörg (KIRO 5) |  |
| 159 | 01.2.1.5.3 | Planning Initialization Phase | 38d? | 2009-02-12 A | 2009-04-06 A | 100% | start no earlier than 2009-02-12 | Telgheider Jörg [2.6%] | 8h | 8h |  |  | (1) Setup | Stream Lead JAP Engineering | medium | (2) Normal | 06.3 | Not Started |  | Telgheider Jörg (KIRO 5) |  |
| 160 | 01.2.1.5.4 | Setup synchronization of new features with AO | 38d? | 2009-02-12 A | 2009-04-06 A | 100% | start no earlier than 2009-02-12 | Telgheider Jörg [2.6%] | 8h | 8h |  |  | (1) Setup | Stream Lead JAP Engineering | medium | (2) Normal | 06.4 | Not Started |  | Telgheider Jörg (KIRO 5) |  |
| 161 | 01.2.1.6 | **Project Support** | 73d? | 2009-01-09 A | 2009-04-21 A | 100% |  |  | 192h | 192h | 136 | 136 | (1) Setup | Stream Lead Project Support | medium | (2) Normal |  |  |  |  |  |
| 162 | 01.2.1.6.1 | **Tool Support** | 62d? | 2009-01-09 A | 2009-04-06 A | 100% |  |  | 16h | 16h | 16 | 16 | (1) Setup | Stream Lead Project Support | medium | (2) Normal |  |  |  |  |  |
| 163 | 01.2.1.6.1.1 | Prepare SharePoint | 38d? | 2009-02-12 A | 2009-04-06 A | 100% | start no earlier than 2009-02-12 | Lüthi Rico F. [2.6%] | 8h | 8h | 8 | 8 | (1) Setup | Stream Lead Project Support | medium | (2) Normal | 08.1 | Not Started |  | Lüthi Rico F. (KIRO 12) | 10 |
| 164 | 01.2.1.6.1.2 | **SharePoint preparation** | 41d? | 2009-01-09 A | 2009-03-06 A | 100% |  |  | 8h | 8h | 8 | 8 | (1) Setup | Stream Lead Project Support | medium | (2) Normal |  |  |  |  |  |
| 165 | 01.2.1.6.1.2.1 | Prepare Main Site | 41d? | 2009-01-09 A | 2009-03-06 A | 100% | start no earlier than 2009-01-09 | Lüthi Rico F. [2.4%] | 8h | 8h | 8 | 8 | (1) Setup | Stream Lead Project Support | medium | (2) Normal | 0.1 |  |  | Lüthi Rico F. (KIRO 12) |  |
| 166 | 01.2.1.6.2 | Setup PRB Requirements | 38d? | 2009-02-12 A | 2009-04-06 A | 100% | start no earlier than 2009-02-12 | Lüthi Rico F. [2.6%] | 8h | 8h | 8 | 8 | (1) Setup | Stream Lead Project Support | medium | (2) Normal | 09.1 | In Progress | 60% | Lüthi Rico F. (KIRO 12) |  |
| 167 | 01.2.1.6.3 | Develop AR6 Logo | 38d? | 2009-02-12 A | 2009-04-06 A | 100% | start no earlier than 2009-02-12 | Lüthi Rico F. [2.6%] | 8h | 8h | 8 | 8 | (1) Setup | Stream Lead Project Support | medium | (2) Normal | 09.2 | Completed | 100% | Lüthi Rico F. (KIRO 12) | 0.5 |
| 168 | 01.2.1.6.4 | Prepare Communication Plan | 38d? | 2009-02-12 A | 2009-04-06 A | 100% | start no earlier than 2009-02-12 | Lüthi Rico F. [2.6%] | 8h | 8h | 8 | 8 | (1) Setup | Stream Lead Project Support | medium | (2) Normal | 09.3 | Not Started |  | Lüthi Rico F. (KIRO 12) |  |
| 169 | 01.2.1.6.5 | Prepare Status Report Template | 38d? | 2009-02-12 A | 2009-04-06 A | 100% | start no earlier than 2009-02-12 | Lüthi Rico F. [2.6%] | 8h | 8h | 8 | 8 | (1) Setup | Stream Lead Project Support | medium | (2) Normal | 09.4 | In Progress | 10% | Lüthi Rico F. (KIRO 12) |  |
| 170 | 01.2.1.6.6 | Setup regular status meeting | 38d? | 2009-02-12 A | 2009-04-06 A | 100% | start no earlier than 2009-02-12 | Lüthi Rico F. [2.6%] | 8h | 8h | 8 | 8 | (1) Setup | Stream Lead Project Support | medium | (2) Normal | 09.5 | In Progress | 50% | Lüthi Rico F. (KIRO 12) |  |
| 171 | 01.2.1.6.7 | Prepare MS-Project schedule | 38d? | 2009-02-12 A | 2009-04-06 A | 100% | start no earlier than 2009-02-12 | Lüthi Rico F. [2.6%] | 8h | 8h | 8 | 8 | (1) Setup | Stream Lead Project Support | medium | (2) Normal | 09.6 | In Progress | 20% | Lüthi Rico F. (KIRO 12) |  |
| 172 | 01.2.1.6.8 | Preparation of Project Concept Chapters | 38d? | 2009-02-12 A | 2009-04-06 A | 100% | start no earlier than 2009-02-12 | Lüthi Rico F. [2.6%] | 8h | 8h | 8 | 8 | (1) Setup | Stream Lead Project Support | medium | (2) Normal | 09.7 | Not Started |  | Lüthi Rico F. (KIRO 12) |  |

| ID | WBS | Task | Type | Duration | Start | Finish | Predecessors | Complete | Constraint | Resources | Work | Actual work | Cost | Actual cost | Text11 | Text13 | Text23 | Text30 | Text12 | Text17 | Text25 | Text20 | Text22 | Text21 | Text19 |
| --- | --- | --- | --- | --- | --- | --- | --- | --- | --- | --- | --- | --- | --- | --- | --- | --- | --- | --- | --- | --- | --- | --- | --- | --- | --- |
| 173 | 01.2.1.6.9 | **Requirements** |  | 38d? | 2009-02-12 A | 2009-04-06 A |  | 100% |  |  | 32h | 32h |  |  | (1) Setup | Requirements Management | medium | (2) Normal |  |  |  |  |  |  |  |
| 174 | 01.2.1.6.9.1 | Describe Request |  | 38d? | 2009-02-12 A | 2009-04-06 A |  | 100% | start no earlier than 2009-02-12 | Hess Andreas [2.6%] | 8h | 8h |  |  | (1) Setup | Requirements Management | medium | (2) Normal | 10.1 | Not Started | Hess Andreas (KIRO 11) |  |  |  |  |
| 175 | 01.2.1.6.9.2 | Planning Initialization Phase |  | 38d? | 2009-02-12 A | 2009-04-06 A |  | 100% | start no earlier than 2009-02-12 | Hess Andreas [2.6%] | 8h | 8h |  |  | (1) Setup | Requirements Management | medium | (2) Normal | 10.2 | Not Started | Hess Andreas (KIRO 11) |  |  |  |  |
| 176 | 01.2.1.6.9.3 | Requirements |  | 38d? | 2009-02-12 A | 2009-04-06 A |  | 100% | start no earlier than 2009-02-12 | Hess Andreas [2.6%] | 8h | 8h |  |  | (1) Setup | Requirements Management | medium | (2) Normal | 10.3 | Not Started | Hess Andreas (KIRO 11) |  |  |  |  |
| 177 | 01.2.1.6.9.4 | Preparation of PRB Docs |  | 38d? | 2009-02-12 A | 2009-04-06 A |  | 100% | start no earlier than 2009-02-12 | Hess Andreas [2.6%] | 8h | 8h |  |  | (1) Setup | Requirements Management | medium | (2) Normal | 10.4 | Not Started | Hess Andreas (KIRO 11) |  |  |  |  |
| 178 | 01.2.1.6.10 | **Configuration Management** |  | 38d? | 2009-02-12 A | 2009-04-06 A |  | 100% |  |  | 16h | 16h | 16 | 16 | (1) Setup | Configuration Management | medium | (2) Normal |  |  |  |  |  |  |  |
| 179 | 01.2.1.6.10.1 | Setup Baseline |  | 38d? | 2009-02-12 A | 2009-04-06 A |  | 100% | start no earlier than 2009-02-12 | Lüthi Rico F. [2.6%] | 8h | 8h | 8 | 8 | (1) Setup | Configuration Management | medium | (2) Normal | 11.1 | Not Started | Lüthi Rico F. (KIRO 12) |  |  |  |  |
| 180 | 01.2.1.6.10.2 | Preparation of PRB Doc |  | 38d? | 2009-02-12 A | 2009-04-06 A |  | 100% | start no earlier than 2009-02-12 | Lüthi Rico F. [2.6%] | 8h | 8h | 8 | 8 | (1) Setup | Configuration Management | medium | (2) Normal | 11.2 | Not Started | Lüthi Rico F. (KIRO 12) | 80% | 10 |  |  |
| 181 | 01.2.1.6.11 | **QAP** |  | 38d? | 2009-02-12 A | 2009-04-06 A |  | 100% |  |  | 24h | 24h |  |  | (1) Setup | Quality Management | medium | (2) Normal |  |  |  |  |  |  |  |
| 182 | 01.2.1.6.11.1 | Preparation of PRB Docs |  | 38d? | 2009-02-12 A | 2009-04-06 A |  | 100% | start no earlier than 2009-02-12 | Polisano Riccardo [2.6%] | 8h | 8h |  |  | (1) Setup | Quality Management | medium | (2) Normal | 12.1 | Not Started | Polisano Riccardo (KIRO 11) |  |  |  |  |
| 183 | 01.2.1.6.11.2 | Preparation of Project Concept Chapters |  | 38d? | 2009-02-12 A | 2009-04-06 A |  | 100% | start no earlier than 2009-02-12 | Polisano Riccardo [2.6%] | 8h | 8h |  |  | (1) Setup | Quality Management | medium | (2) Normal | 12.2 | Not Started | Polisano Riccardo (KIRO 11) |  |  |  |  |
| 184 | 01.2.1.6.11.3 | Describe Request |  | 38d? | 2009-02-12 A | 2009-04-06 A |  | 100% | start no earlier than 2009-02-12 | Polisano Riccardo [2.6%] | 8h | 8h |  |  | (1) Setup | Quality Management | medium | (2) Normal | 12.3 | Not Started | Polisano Riccardo (KIRO 11) |  |  |  |  |
| 185 | 01.2.1.6.12 | **Stream** |  | 49d? | 2009-02-12 A | 2009-04-21 A |  | 100% |  |  | 48h | 48h | 48 | 48 | (1) Setup | Stream Lead Project Support | medium | (2) Normal |  |  |  |  |  |  |  |
| 186 | 01.2.1.6.12.1 | Planning Initialization Phase |  | 11d? | 2009-04-07 A | 2009-04-21 A |  | 100% | start no earlier than 2009-04-07 | Lüthi Rico F. [9.1%] | 8h | 8h | 8 | 8 | (1) Setup | Stream Lead Project Support | medium | (2) Normal | 07.1 | Not Started | Lüthi Rico F. (KIRO 12) |  | 10 |  |  |
| 187 | 01.2.1.6.12.2 | Coordinate Requirement Management |  | 38d? | 2009-02-12 A | 2009-04-06 A |  | 100% | start no earlier than 2009-02-12 | Lüthi Rico F. [2.6%] | 8h | 8h | 8 | 8 | (1) Setup | Stream Lead Project Support | medium | (2) Normal | 07.2 | Not Started | Lüthi Rico F. (KIRO 12) |  | 10 |  |  |
| 188 | 01.2.1.6.12.3 | Coordinate PMO |  | 38d? | 2009-02-12 A | 2009-04-06 A |  | 100% | start no earlier than 2009-02-12 | Lüthi Rico F. [2.6%] | 8h | 8h | 8 | 8 | (1) Setup | Stream Lead Project Support | medium | (2) Normal | 07.3 | Not Started | Lüthi Rico F. (KIRO 12) |  |  |  |  |
| 189 | 01.2.1.6.12.4 | Coordinate Configuration Management |  | 38d? | 2009-02-12 A | 2009-04-06 A |  | 100% | start no earlier than 2009-02-12 | Lüthi Rico F. [2.6%] | 8h | 8h | 8 | 8 | (1) Setup | Stream Lead Project Support | medium | (2) Normal | 07.4 | Not Started | Lüthi Rico F. (KIRO 12) |  |  |  |  |
| 190 | 01.2.1.6.12.5 | Coordinate Tool Support |  | 38d? | 2009-02-12 A | 2009-04-06 A |  | 100% | start no earlier than 2009-02-12 | Lüthi Rico F. [2.6%] | 8h | 8h | 8 | 8 | (1) Setup | Stream Lead Project Support | medium | (2) Normal | 07.5 | Not Started | Lüthi Rico F. (KIRO 12) |  |  |  |  |
| 191 | 01.2.1.6.12.6 | Coordinate QAP |  | 38d? | 2009-02-12 A | 2009-04-06 A |  | 100% | start no earlier than 2009-02-12 | Lüthi Rico F. [2.6%] | 8h | 8h | 8 | 8 | (1) Setup | Stream Lead Project Support | medium | (2) Normal | 07.6 | Not Started | Lüthi Rico F. (KIRO 12) |  |  |  |  |
| 192 | 01.2.1.7 | **Product Management** |  | 38d? | 2009-02-12 A | 2009-04-06 A |  | 100% |  |  | 8h | 8h |  |  | (1) Setup | Product Management | medium | (2) Normal |  |  |  |  |  |  |  |
| 193 | 01.2.1.7.1 | Preparation of Project Concept Chapters |  | 38d? | 2009-02-12 A | 2009-04-06 A |  | 100% | start no earlier than 2009-02-12 | Schelling Adrian [2.6%] | 8h | 8h |  |  | (1) Setup | Product Management | medium | (2) Normal | 13.1 | Not Started | Schelling Adrian (KIRO 11) |  |  |  |  |
| 194 | 01.2.2 | **Project Initialization Phase** |  | 81d? | 2009-04-07 A | 2009-07-29 A |  | 100% |  |  | 10611.3h | 10611.3h | 1,242.35 | 1,242.35 | (2) Initialization | Project Management | medium | (2) Normal |  |  |  |  |  | IT- Project Manager |  |
| 195 | 01.2.2.1 | Start Project Initialization Phase | milestone | 0d | 2009-04-07 A | 2009-04-07 A | 17 | 100% |  |  |  |  |  |  | (2) Initialization | Project Management | medium | (2) Normal | PO-00.0010 |  |  |  |  |  |  |
| 196 | 01.2.2.2 | **Reporting** |  | 51.63d? | 2009-04-17 A | 2009-06-30 A |  | 100% |  |  | 176.5h | 176.5h | 73.24 | 73.24 | (2) Initialization | Project Management | medium | (2) Normal | PO-00.0020 |  |  |  |  | IT- Project Manager |  |
| 197 | 01.2.2.2.1 | **Status Meeting** |  | 51.63d? | 2009-04-17 A | 2009-06-30 A |  | 100% |  |  | 140.5h | 140.5h | 55.24 | 55.24 | (2) Initialization | Project Management | medium | (2) Normal | PO-00.0030 |  |  |  |  | IT- Project Manager |  |
| 198 | 01.2.2.2.1.1 | Preparation Stream Status Report |  | 1.01d | 2009-04-17 A | 2009-04-20 A |  | 100% | as late as possible | Trindler Markus [3.1%]; Lackmann Ralph [3.1%]; Telgheider Jörg [3.1%]; Lüthi Rico F. [3%] | 1h | 1h | 0.24 | 0.24 | (2) Initialization | Project Management | medium | (2) Normal | PO-00.0040 |  | Scheidegger Ruedi (KIRO 11) | Lüthi Rico F. (KIRO 12) |  | IT- Project Manager |  |
| 199 | 01.2.2.2.1.2 | Status Meeting |  | 1h | 2009-04-21 A | 2009-04-21 A | 198 | 100% | must start on 2009-04-21 | Zulliger Markus; Hess Andreas; Lackmann Ralph; Lüthi Rico F.; Polisano Riccardo; Scheidegger Ruedi; Telgheider Jörg; Trindler Markus | 8h | 8h | 1 | 1 | (2) Initialization | Project Management | medium | (2) Normal | PO-00.0050 |  | Scheidegger Ruedi (KIRO 11) | Lüthi Rico F. (KIRO 12) |  | IT- Project Manager | Lüthi Rico F. (KIRO 12) |
| 200 | 01.2.2.2.1.3 | Status Report |  | 0.5d? | 2009-04-21 A | 2009-04-21 A | 199 | 100% |  | Lüthi Rico F. | 4h | 4h | 4 | 4 | (2) Initialization | Project Management | medium | (2) Normal | PO-00.0060 |  | Scheidegger Ruedi (KIRO 11) | Lüthi Rico F. (KIRO 12) |  | IT- Project Manager |  |
| 201 | 01.2.2.2.1.4 | Preparation Stream Status Report |  | 1d | 2009-04-27 A | 2009-04-27 A |  | 100% | as late as possible | Lüthi Rico F. [3%]; Trindler Markus [3.1%]; Lackmann Ralph [3.1%]; Telgheider Jörg [3.1%] | 0.75h | 0.75h |  |  | (2) Initialization | Project Management | medium | (2) Normal | PO-00.0070 |  | Scheidegger Ruedi (KIRO 11) | Lüthi Rico F. (KIRO 12) |  | IT- Project Manager |  |
| 202 | 01.2.2.2.1.5 | Status Meeting |  | 1h | 2009-04-28 A | 2009-04-28 A | 201 | 100% | must start on 2009-04-28 | Hess Andreas; Zulliger Markus; Lackmann Ralph; Lüthi Rico F.; Polisano Riccardo; Scheidegger Ruedi; Telgheider Jörg; Trindler Markus | 8h | 8h | 1 | 1 | (2) Initialization | Project Management | medium | (2) Normal | PO-00.0080 |  | Scheidegger Ruedi (KIRO 11) | Lüthi Rico F. (KIRO 12) |  | IT- Project Manager | Lüthi Rico F. (KIRO 12) |
| 203 | 01.2.2.2.1.6 | Status Report |  | 0.5d? | 2009-04-28 A | 2009-04-28 A | 202 | 100% |  | Lüthi Rico F. | 4h | 4h | 4 | 4 | (2) Initialization | Project Management | medium | (2) Normal | PO-00.0090 |  | Scheidegger Ruedi (KIRO 11) | Lüthi Rico F. (KIRO 12) |  | IT- Project Manager |  |
| 204 | 01.2.2.2.1.7 | Preparation Stream Status Report |  | 1d | 2009-05-04 A | 2009-05-04 A |  | 100% | as late as possible | Lüthi Rico F. [3%]; Trindler Markus [3.1%]; Lackmann Ralph [3.1%]; Telgheider Jörg [3.1%] | 0.75h | 0.75h |  |  | (2) Initialization | Project Management | medium | (2) Normal | PO-00.0100 |  | Scheidegger Ruedi (KIRO 11) | Lüthi Rico F. (KIRO 12) |  | IT- Project Manager |  |
| 205 | 01.2.2.2.1.8 | Status Meeting |  | 1h | 2009-05-05 A | 2009-05-05 A | 204 | 100% | must start on 2009-05-05 | Hess Andreas; Zulliger Markus; Lackmann Ralph; Lüthi Rico F.; Polisano Riccardo; Scheidegger Ruedi; Telgheider Jörg; Trindler Markus | 8h | 8h | 1 | 1 | (2) Initialization | Project Management | medium | (2) Normal | PO-00.0110 |  | Scheidegger Ruedi (KIRO 11) | Lüthi Rico F. (KIRO 12) |  | IT- Project Manager | Lüthi Rico F. (KIRO 12) |
| 206 | 01.2.2.2.1.9 | Status Report |  | 0.5d? | 2009-05-05 A | 2009-05-05 A | 205 | 100% |  | Lüthi Rico F. | 4h | 4h | 4 | 4 | (2) Initialization | Project Management | medium | (2) Normal | PO-00.0120 |  | Scheidegger Ruedi (KIRO 11) | Lüthi Rico F. (KIRO 12) |  | IT- Project Manager |  |
| 207 | 01.2.2.2.1.10 | Preparation Stream Status Report |  | 1d | 2009-05-11 A | 2009-05-11 A |  | 100% | as late as possible | Lüthi Rico F. [3%]; Trindler Markus [3.1%]; Lackmann Ralph [3.1%]; Telgheider Jörg [3.1%] | 0.75h | 0.75h |  |  | (2) Initialization | Project Management | medium | (2) Normal | PO-00.0130 |  | Scheidegger Ruedi (KIRO 11) | Lüthi Rico F. (KIRO 12) |  | IT- Project Manager |  |
| 208 | 01.2.2.2.1.11 | Status Meeting |  | 1h | 2009-05-12 A | 2009-05-12 A | 207 | 100% | must start on 2009-05-12 | Hess Andreas; Zulliger Markus; Lackmann Ralph; Lüthi Rico F.; Polisano Riccardo; Scheidegger Ruedi; Telgheider Jörg; Trindler Markus | 8h | 8h | 1 | 1 | (2) Initialization | Project Management | medium | (2) Normal | PO-00.0140 |  | Scheidegger Ruedi (KIRO 11) | Lüthi Rico F. (KIRO 12) |  | IT- Project Manager | Lüthi Rico F. (KIRO 12) |
| 209 | 01.2.2.2.1.12 | Status Report |  | 0.5d? | 2009-05-12 A | 2009-05-12 A | 208 | 100% |  | Lüthi Rico F. | 4h | 4h | 4 | 4 | (2) Initialization | Project Management | medium | (2) Normal | PO-00.0150 |  | Scheidegger Ruedi (KIRO 11) | Lüthi Rico F. (KIRO 12) |  | IT- Project Manager |  |
| 210 | 01.2.2.2.1.13 | Preparation Stream Status Report |  | 1d | 2009-05-18 A | 2009-05-18 A |  | 100% | as late as possible | Lüthi Rico F. [3%]; Trindler Markus [3.1%]; Lackmann Ralph [3.1%]; Telgheider Jörg [3.1%] | 0.75h | 0.75h |  |  | (2) Initialization | Project Management | medium | (2) Normal | PO-00.0160 |  | Scheidegger Ruedi (KIRO 11) | Lüthi Rico F. (KIRO 12) |  | IT- Project Manager |  |
| 211 | 01.2.2.2.1.14 | Status Meeting |  | 1h | 2009-05-19 A | 2009-05-19 A | 210 | 100% | must start on 2009-05-19 | Hess Andreas; Zulliger Markus; Lackmann Ralph; Lüthi Rico F.; Polisano Riccardo; Scheidegger Ruedi; Telgheider Jörg; Trindler Markus | 8h | 8h | 1 | 1 | (2) Initialization | Project Management | medium | (2) Normal | PO-00.0170 |  | Scheidegger Ruedi (KIRO 11) | Lüthi Rico F. (KIRO 12) |  | IT- Project Manager | Lüthi Rico F. (KIRO 12) |
| 212 | 01.2.2.2.1.15 | Status Report |  | 0.5d? | 2009-05-19 A | 2009-05-19 A | 211 | 100% |  | Lüthi Rico F. | 4h | 4h | 4 | 4 | (2) Initialization | Project Management | medium | (2) Normal | PO-00.0180 |  | Scheidegger Ruedi (KIRO 11) | Lüthi Rico F. (KIRO 12) |  | IT- Project Manager |  |
| 213 | 01.2.2.2.1.16 | Preparation Stream Status Report |  | 1d | 2009-05-25 A | 2009-05-25 A |  | 100% | as late as possible | Lüthi Rico F. [3%]; Trindler Markus [3.1%]; Lackmann Ralph [3.1%]; Telgheider Jörg [3.1%] | 0.75h | 0.75h |  |  | (2) Initialization | Project Management | medium | (2) Normal | PO-00.0190 |  | Scheidegger Ruedi (KIRO 11) | Lüthi Rico F. (KIRO 12) |  | IT- Project Manager |  |
| 214 | 01.2.2.2.1.17 | Status Meeting |  | 1h | 2009-05-26 A | 2009-05-26 A | 213 | 100% | must start on 2009-05-26 | Hess Andreas; Zulliger Markus; Lackmann Ralph; Lüthi Rico F.; Polisano Riccardo; Scheidegger Ruedi; Telgheider Jörg; Trindler Markus | 8h | 8h | 1 | 1 | (2) Initialization | Project Management | medium | (2) Normal | PO-00.0200 |  | Scheidegger Ruedi (KIRO 11) | Lüthi Rico F. (KIRO 12) |  | IT- Project Manager | Lüthi Rico F. (KIRO 12) |
| 215 | 01.2.2.2.1.18 | Status Report |  | 0.5d? | 2009-05-26 A | 2009-05-26 A | 214 | 100% |  | Lüthi Rico F. | 4h | 4h | 4 | 4 | (2) Initialization | Project Management | medium | (2) Normal | PO-00.0210 |  | Scheidegger Ruedi (KIRO 11) | Lüthi Rico F. (KIRO 12) |  | IT- Project Manager |  |
| 216 | 01.2.2.2.1.19 | Preparation Stream Status Report |  | 1d | 2009-06-01 A | 2009-06-01 A |  | 100% | as late as possible | Lüthi Rico F. [3%]; Trindler Markus [3.1%]; Lackmann Ralph [3.1%]; Telgheider Jörg [3.1%] | 0.75h | 0.75h |  |  | (2) Initialization | Project Management | medium | (2) Normal | PO-00.0220 |  | Scheidegger Ruedi (KIRO 11) | Lüthi Rico F. (KIRO 12) |  | IT- Project Manager |  |
| 217 | 01.2.2.2.1.20 | Status Meeting |  | 1h | 2009-06-02 A | 2009-06-02 A | 216 | 100% | must start on 2009-06-02 | Hess Andreas; Zulliger Markus; Lackmann Ralph; Lüthi Rico F.; Polisano Riccardo; Scheidegger Ruedi; Telgheider Jörg; Trindler Markus | 8h | 8h | 1 | 1 | (2) Initialization | Project Management | medium | (2) Normal | PO-00.0230 |  | Scheidegger Ruedi (KIRO 11) | Lüthi Rico F. (KIRO 12) |  | IT- Project Manager | Lüthi Rico F. (KIRO 12) |
| 218 | 01.2.2.2.1.21 | Status Report |  | 0.5d? | 2009-06-02 A | 2009-06-02 A | 217 | 100% |  | Lüthi Rico F. | 4h | 4h | 4 | 4 | (2) Initialization | Project Management | medium | (2) Normal | PO-00.0240 |  | Scheidegger Ruedi (KIRO 11) | Lüthi Rico F. (KIRO 12) |  | IT- Project Manager |  |
| 219 | 01.2.2.2.1.19 | Preparation Stream Status Report |  | 1d | 2009-06-08 A | 2009-06-08 A |  | 100% | as late as possible | Lüthi Rico F. [3%]; Trindler Markus [3.1%]; Lackmann Ralph [3.1%]; Telgheider Jörg [3.1%] | 0.75h | 0.75h |  |  | (2) Initialization | Project Management | medium | (2) Normal | PO-00.0250 |  | Scheidegger Ruedi (KIRO 11) | Lüthi Rico F. (KIRO 12) |  | IT- Project Manager |  |
| 220 | 01.2.2.2.1.20 | Status Meeting |  | 1h | 2009-06-09 A | 2009-06-09 A | 219 | 100% | must start on 2009-06-09 | Hess Andreas; Zulliger Markus; Lackmann Ralph; Lüthi Rico F.; Polisano Riccardo; Scheidegger Ruedi; Telgheider Jörg; Trindler Markus | 8h | 8h | 1 | 1 | (2) Initialization | Project Management | medium | (2) Normal | PO-00.0260 |  | Scheidegger Ruedi (KIRO 11) | Lüthi Rico F. (KIRO 12) |  | IT- Project Manager | Lüthi Rico F. (KIRO 12) |
| 221 | 01.2.2.2.1.21 | Status Report |  | 0.5d? | 2009-06-09 A | 2009-06-09 A | 220 | 100% |  | Lüthi Rico F. | 4h | 4h | 4 | 4 | (2) Initialization | Project Management | medium | (2) Normal | PO-00.0270 |  | Scheidegger Ruedi (KIRO 11) | Lüthi Rico F. (KIRO 12) |  | IT- Project Manager |  |
| 222 | 01.2.2.2.1.19 | Preparation Stream Status Report |  | 1d | 2009-06-15 A | 2009-06-15 A |  | 100% | as late as possible | Lüthi Rico F. [3%]; Trindler Markus [3.1%]; Lackmann Ralph [3.1%]; Telgheider Jörg [3.1%] | 0.75h | 0.75h |  |  | (2) Initialization | Project Management | medium | (2) Normal | PO-00.0280 |  | Scheidegger Ruedi (KIRO 11) | Lüthi Rico F. (KIRO 12) |  | IT- Project Manager |  |
| 223 | 01.2.2.2.1.20 | Status Meeting |  | 1h | 2009-06-16 A | 2009-06-16 A | 222 | 100% | must start on 2009-06-16 | Hess Andreas; Zulliger Markus; Lackmann Ralph; Lüthi Rico F.; Polisano Riccardo; Scheidegger Ruedi; Telgheider Jörg; Trindler Markus | 8h | 8h | 1 | 1 | (2) Initialization | Project Management | medium | (2) Normal | PO-00.0290 |  | Scheidegger Ruedi (KIRO 11) | Lüthi Rico F. (KIRO 12) |  | IT- Project Manager | Lüthi Rico F. (KIRO 12) |
| 224 | 01.2.2.2.1.21 | Status Report |  | 0.5d? | 2009-06-16 A | 2009-06-16 A | 223 | 100% |  | Lüthi Rico F. | 4h | 4h | 4 | 4 | (2) Initialization | Project Management | medium | (2) Normal | PO-00.0300 |  | Scheidegger Ruedi (KIRO 11) | Lüthi Rico F. (KIRO 12) |  | IT- Project Manager |  |
| 225 | 01.2.2.2.1.19 | Preparation Stream Status Report |  | 1d | 2009-06-22 A | 2009-06-22 A |  | 100% | as late as possible | Lüthi Rico F. [3%]; Trindler Markus [3.1%]; Lackmann Ralph [3.1%]; Telgheider Jörg [3.1%] | 0.75h | 0.75h |  |  | (2) Initialization | Project Management | medium | (2) Normal | PO-00.0310 |  | Scheidegger Ruedi (KIRO 11) | Lüthi Rico F. (KIRO 12) |  | IT- Project Manager |  |
| 226 | 01.2.2.2.1.20 | Status Meeting |  | 1h | 2009-06-23 A | 2009-06-23 A | 225 | 100% | must start on 2009-06-23 | Hess Andreas; Zulliger Markus; Lackmann Ralph; Lüthi Rico F.; Polisano Riccardo; Scheidegger Ruedi; Telgheider Jörg; Trindler Markus | 8h | 8h | 1 | 1 | (2) Initialization | Project Management | medium | (2) Normal | PO-00.0320 |  | Scheidegger Ruedi (KIRO 11) | Lüthi Rico F. (KIRO 12) |  | IT- Project Manager | Lüthi Rico F. (KIRO 12) |
| 227 | 01.2.2.2.1.21 | Status Report |  | 0.5d? | 2009-06-23 A | 2009-06-23 A | 226 | 100% |  | Lüthi Rico F. | 4h | 4h | 4 | 4 | (2) Initialization | Project Management | medium | (2) Normal | PO-00.0330 |  | Scheidegger Ruedi (KIRO 11) | Lüthi Rico F. (KIRO 12) |  | IT- Project Manager |  |
| 228 | 01.2.2.2.1.19 | Preparation Stream Status Report |  | 1d | 2009-06-29 A | 2009-06-29 A |  | 100% | as late as possible | Lüthi Rico F. [3%]; Trindler Markus [3.1%]; Lackmann Ralph [3.1%]; Telgheider Jörg [3.1%] | 0.75h | 0.75h |  |  | (2) Initialization | Project Management | medium | (2) Normal | PO-00.0340 |  | Scheidegger Ruedi (KIRO 11) | Lüthi Rico F. (KIRO 12) |  | IT- Project Manager |  |
| 229 | 01.2.2.2.1.20 | Status Meeting |  | 1h | 2009-06-30 A | 2009-06-30 A | 228 | 100% | must start on 2009-06-30 | Hess Andreas; Zulliger Markus; Lackmann Ralph; Lüthi Rico F.; Polisano Riccardo; Scheidegger Ruedi; Telgheider Jörg; Trindler Markus | 8h | 8h | 1 | 1 | (2) Initialization | Project Management | medium | (2) Normal | PO-00.0350 |  | Scheidegger Ruedi (KIRO 11) | Lüthi Rico F. (KIRO 12) |  | IT- Project Manager | Lüthi Rico F. (KIRO 12) |
| 230 | 01.2.2.2.1.21 | Status Report |  | 0.5d? | 2009-06-30 A | 2009-06-30 A | 229 | 100% |  | Lüthi Rico F. | 4h | 4h | 4 | 4 | (2) Initialization | Project Management | medium | (2) Normal | PO-00.0360 |  | Scheidegger Ruedi (KIRO 11) | Lüthi Rico F. (KIRO 12) |  | IT- Project Manager |  |

Notes:
- 226: held

| ID | WBS | Task | Type | Duration | Start | Finish | Predecessors | Complete | Constraint | Resources | Work | Actual work | Cost | Actual cost | Text11 | Text12 | Text13 | Text21 | Text23 | Text30 | Text25 | Text20 | Text19 |
| --- | --- | --- | --- | --- | --- | --- | --- | --- | --- | --- | --- | --- | --- | --- | --- | --- | --- | --- | --- | --- | --- | --- | --- |
| 231 | 01.2.2.2.2 | **STC** |  | 49.5d? | 2009-04-21 A | 2009-06-30 A |  | 100% |  |  | 36h | 36h | 18 | 18 | (2) Initialization | PO-00.0370 | Project Management | IT- Project Manager | medium | (2) Normal |  |  |  |
| 232 | 01.2.2.2.2.1 | Preparation for STC |  | 1.5d? | 2009-04-21 A | 2009-04-22 A |  | 100% | as late as possible | Lüthi Rico F. [50%]; Scheidegger Ruedi [50%] | 12h | 12h | 6 | 6 | (2) Initialization | PO-00.0380 | Project Management | IT- Project Manager | medium | (2) Normal | Scheidegger Ruedi (KIRO 11) |  |  |
| 233 | 01.2.2.2.2.2 | STC Meeting | milestone | 0d | 2009-04-28 A | 2009-04-28 A | 232FS+3d | 100% | must start on 2009-04-28 | Scheidegger Ruedi |  |  |  |  | (2) Initialization | PO-00.0390 | Project Management | IT- Project Manager | medium | (2) Normal | Scheidegger Ruedi (KIRO 11) | Trindler Markus (KIRO 12) |  |
| 234 | 01.2.2.2.2.3 | Preparation for STC |  | 1.5d? | 2009-05-19 A | 2009-05-20 A |  | 100% | as late as possible | Lüthi Rico F. [50%]; Scheidegger Ruedi [50%] | 12h | 12h | 6 | 6 | (2) Initialization | PO-00.0400 | Project Management | IT- Project Manager | medium | (2) Normal | Scheidegger Ruedi (KIRO 11) |  |  |
| 235 | 01.2.2.2.2.4 | STC Meeting | milestone | 0d | 2009-05-26 A | 2009-05-26 A | 234FS+3d | 100% | must start on 2009-05-26 | Scheidegger Ruedi |  |  |  |  | (2) Initialization | PO-00.0410 | Project Management | IT- Project Manager | medium | (2) Normal | Scheidegger Ruedi (KIRO 11) | Trindler Markus (KIRO 12) |  |
| 236 | 01.2.2.2.2.5 | Preparation for STC |  | 1.5d? | 2009-06-23 A | 2009-06-24 A |  | 100% | as late as possible | Lüthi Rico F. [50%]; Scheidegger Ruedi [50%] | 12h | 12h | 6 | 6 | (2) Initialization | PO-00.0420 | Project Management | IT- Project Manager | medium | (2) Normal | Scheidegger Ruedi (KIRO 11) |  |  |
| 237 | 01.2.2.2.2.6 | STC Meeting | milestone | 0d | 2009-06-30 A | 2009-06-30 A | 236FS+3d | 100% | must start on 2009-06-30 | Scheidegger Ruedi |  |  |  |  | (2) Initialization | PO-00.0430 | Project Management | IT- Project Manager | medium | (2) Normal | Scheidegger Ruedi (KIRO 11) | Trindler Markus (KIRO 12) |  |
| 238 | 01.2.2.3 | **Stream Project Management** |  | 69.5d? | 2009-04-08 A | 2009-07-14 A | 195 | 100% |  |  | 5252.78h | 5252.78h | 210.86 | 210.86 | (2) Initialization | PO-01.0000 | Project Management |  | medium | (2) Normal |  |  |  |
| 239 | 01.2.2.3.1 | In-depth clarification of the KIRO 1 reorganization impact of AR6 Initialization Phase |  | 3d | 2009-04-08 A | 2009-04-10 A |  | 100% |  | Scheidegger Ruedi | 24h | 24h |  |  | (2) Initialization | PO-01.0010 | Project Management |  | medium | (2) Normal | Scheidegger Ruedi (KIRO 11) |  |  |
| 240 | 01.2.2.3.2 | **Planning of Initialization phase** |  | 47.25d | 2009-04-13 A | 2009-06-17 A | 239 | 100% |  |  | 170h | 170h |  |  | (2) Initialization | PO-01.0020 | Project Management |  | medium | (2) Normal |  |  |  |
| 241 | 01.2.2.3.2.1 | Initialization of phase detail Planning |  | 10d | 2009-04-13 A | 2009-04-24 A |  | 100% |  | Scheidegger Ruedi | 80h | 80h |  |  | (2) Initialization | PO-01.0030 | Project Management |  | medium | (2) Normal | Scheidegger Ruedi (KIRO 11) |  |  |
| 242 | 01.2.2.3.2.2 | Create a first version of Work packages for all project roles |  | 10d | 2009-04-27 A | 2009-05-08 A | 241 | 100% |  | Scheidegger Ruedi | 80h | 80h |  |  | (2) Initialization | PO-01.0040 | Project Management |  | medium | (2) Normal | Scheidegger Ruedi (KIRO 11) |  |  |
| 243 | 01.2.2.3.2.3 | Workshop Detail Planning for Initialization Phase |  | 2h | 2009-06-17 A | 2009-06-17 A | 242, 498, 541, 548, 376 | 100% |  | Scheidegger Ruedi; Trindler Markus; Lackmann Ralph; Telgheider Jörg; Zulliger Markus | 10h | 10h |  |  | (2) Initialization | PO-01.0050 | Project Management |  | medium | (2) Normal |  |  |  |
| 244 | 01.2.2.3.3 | **PRB Documents** |  | 30.02d? | 2009-06-02 A | 2009-07-14 A |  | 100% |  |  | 5058.78h | 5058.78h | 210.86 | 210.86 | (2) Initialization | PO-01.0060 | Project Management | IT-PV Phase Documents | medium | (2) Normal |  |  |  |
| 245 | 01.2.2.3.3.1 | **Documents** |  | 30.02d? | 2009-06-02 A | 2009-07-14 A |  | 100% |  |  | 5058.78h | 5058.78h | 210.86 | 210.86 | (2) Initialization | PO-01.0070 | Project Management | IT-PV Phase Documents | medium | (2) Normal |  |  |  |
| 246 | 01.2.2.3.3.1.1 | Start of Document preparation | milestone | 0d | 2009-06-02 A | 2009-06-02 A |  | 100% | as late as possible | Scheidegger Ruedi |  |  |  |  | (2) Initialization | PO-01.0080 | Project Management | IT-PV Phase Documents | medium | (2) Normal | Trindler Markus (KIRO 12) | Trindler Markus (KIRO 12) |  |
| 247 | 01.2.2.3.3.1.2 | Planning of the document preparation |  | 1d | 2009-06-02 A | 2009-06-03 A | 246 | 100% | as late as possible | Lüthi Rico F. | 8h | 8h | 8 | 8 | (2) Initialization | PO-01.0090 | Project Management | IT-PV Phase Documents | medium | (2) Normal | Lüthi Rico F. (KIRO 12) | Lüthi Rico F. (KIRO 12) |  |
| 248 | 01.2.2.3.3.1.3 | Preparation of Documents |  | 2d | 2009-06-03 A | 2009-06-05 A | 247 | 100% | as late as possible | Lüthi Rico F. | 16h | 16h | 16 | 16 | (2) Initialization | PO-01.0100 | Project Management | IT-PV Phase Documents | medium | (2) Normal | Lüthi Rico F. (KIRO 12) | Lüthi Rico F. (KIRO 12) |  |
| 249 | 01.2.2.3.3.1.4 | Meeting with Project management about the document organization |  | 0.06d | 2009-06-05 A | 2009-06-05 A | 248 | 100% | as late as possible | Lüthi Rico F.; Scheidegger Ruedi | 1h | 1h | 0.5 | 0.5 | (2) Initialization | PO-01.0110 | Project Management | IT-PV Phase Documents | medium | (2) Normal | Lüthi Rico F. (KIRO 12) | Trindler Markus (KIRO 12) | Trindler Markus (KIRO 12) |
| 250 | 01.2.2.3.3.1.5 | Updating Document Organization |  | 1d? | 2009-06-05 A | 2009-06-08 A | 249 | 100% | as late as possible | Lüthi Rico F. [50%] | 4h | 4h | 4 | 4 | (2) Initialization | PO-01.0120 | Project Management | IT-PV Phase Documents | medium | (2) Normal | Lüthi Rico F. (KIRO 12) | Lüthi Rico F. (KIRO 12) |  |
| 251 | 01.2.2.3.3.1.6 | Send invitation to all document authors |  | 1d? | 2009-06-08 A | 2009-06-09 A | 250 | 100% | as late as possible | Lüthi Rico F. [13%] | 1.04h | 1.04h | 1.04 | 1.04 | (2) Initialization | PO-01.0130 | Project Management | IT-PV Phase Documents | medium | (2) Normal | Lüthi Rico F. (KIRO 12) | Lüthi Rico F. (KIRO 12) |  |
| 252 | 01.2.2.3.3.1.7 | Kick off Meeting with all document authors |  | 2.21h | 2009-06-12 A | 2009-06-12 A | 251FS+3d | 100% | as late as possible | Koch Thomas; Matthes Andreas; Bennek Robert; Zulliger Markus; Lackmann Ralph; Lüthi Rico F.; Polisano Riccardo; Scheidegger Ruedi; Telgheider Jörg; Trindler Markus | 22.1h | 22.1h | 2.21 | 2.21 | (2) Initialization | PO-01.0140 | Project Management | IT-PV Phase Documents | medium | (2) Normal |  | Trindler Markus (KIRO 12) | Trindler Markus (KIRO 12) |
| 253 | 01.2.2.3.3.1.8 | Start of document preparation | milestone | 0d | 2009-06-15 A | 2009-06-15 A | 252FS+1d | 100% | as late as possible | Trindler Markus |  |  |  |  | (2) Initialization | PO-01.0150 | Project Management | IT-PV Phase Documents | medium | (2) Normal | Trindler Markus (KIRO 12) | Trindler Markus (KIRO 12) |  |
| 254 | 01.2.2.3.3.1.9 | **PRB General Documents** |  | 10d | 2009-06-22 A | 2009-07-06 A | 253 | 100% |  |  | 368h | 368h |  |  | (2) Initialization | PO-01.0160 | Project Management | IT-PV Phase Documents | medium | (2) Normal |  |  |  |
| 255 | 01.2.2.3.3.1.9.1 | Archiving and Output Management |  | 2w | 2009-06-22 A | 2009-07-06 A |  | 100% | as late as possible | Scheidegger Ruedi [20%] | 16h | 16h |  |  | (2) Initialization | PO-01.0170 | Project Management | IT-PV Phase Documents | medium | (2) Normal | Scheidegger Ruedi (KIRO 11) |  |  |
| 256 | 01.2.2.3.3.1.9.2 | Checklist Records Management |  | 2w | 2009-06-22 A | 2009-07-06 A |  | 100% | as late as possible | Scheidegger Ruedi [20%] | 16h | 16h |  |  | (2) Initialization | PO-01.0180 | Project Management |  | medium | (2) Normal | Scheidegger Ruedi (KIRO 11) |  |  |
| 257 | 01.2.2.3.3.1.9.3 | DAR Evaluation Record |  | 2w | 2009-06-22 A | 2009-07-06 A |  | 100% | as late as possible | Scheidegger Ruedi [20%] | 16h | 16h |  |  | (2) Initialization | PO-01.0190 | Project Management |  | medium | (2) Normal | Scheidegger Ruedi (KIRO 11) |  |  |
| 258 | 01.2.2.3.3.1.9.4 | DAR Decision Record Log |  | 2w | 2009-06-22 A | 2009-07-06 A |  | 100% | as late as possible | Scheidegger Ruedi [20%] | 16h | 16h |  |  | (2) Initialization | PO-01.0200 | Project Management |  | medium | (2) Normal | Scheidegger Ruedi (KIRO 11) |  |  |
| 259 | 01.2.2.3.3.1.9.5 | Deviation Register (P) |  | 2w | 2009-06-22 A | 2009-07-06 A |  | 100% | as late as possible | Scheidegger Ruedi [20%] | 16h | 16h |  |  | (2) Initialization | PO-01.0210 | Project Management | IT-PV Phase Documents | medium | (2) Normal | Scheidegger Ruedi (KIRO 11) |  |  |
| 260 | 01.2.2.3.3.1.9.6 | Distributed Work Management Plan |  | 2w | 2009-06-22 A | 2009-07-06 A |  | 100% | as late as possible | Scheidegger Ruedi [20%] | 16h | 16h |  |  | (2) Initialization | PO-01.0220 | Project Management |  | medium | (2) Normal | Scheidegger Ruedi (KIRO 11) |  |  |
| 261 | 01.2.2.3.3.1.9.7 | Erfassung von neuen Online-Transaktionen |  | 2w | 2009-06-22 A | 2009-07-06 A |  | 100% | as late as possible | Scheidegger Ruedi [20%] | 16h | 16h |  |  | (2) Initialization | PO-01.0230 | Project Management |  | medium | (2) Normal | Scheidegger Ruedi (KIRO 11) |  |  |
| 262 | 01.2.2.3.3.1.9.8 | Full Value Case (FVC) Template |  | 2w | 2009-06-22 A | 2009-07-06 A |  | 100% | as late as possible | Scheidegger Ruedi [20%] | 16h | 16h |  |  | (2) Initialization | PO-01.0240 | Project Management |  | medium | (2) Normal | Scheidegger Ruedi (KIRO 11) |  |  |
| 263 | 01.2.2.3.3.1.9.9 | Guideline Runtime Platform Management |  | 2w | 2009-06-22 A | 2009-07-06 A |  | 100% | as late as possible | Scheidegger Ruedi [20%] | 16h | 16h |  |  | (2) Initialization | PO-01.0250 | Project Management | IT-PV Phase Documents | medium | (2) Normal | Scheidegger Ruedi (KIRO 11) |  |  |
| 264 | 01.2.2.3.3.1.9.10 | MA Checklist for PM |  | 2w | 2009-06-22 A | 2009-07-06 A |  | 100% | as late as possible | Scheidegger Ruedi [20%] | 16h | 16h |  |  | (2) Initialization | PO-01.0260 | Project Management |  | medium | (2) Normal | Scheidegger Ruedi (KIRO 11) |  |  |
| 265 | 01.2.2.3.3.1.9.11 | Measurement Report for Standard Project |  | 2w | 2009-06-22 A | 2009-07-06 A |  | 100% | as late as possible | Scheidegger Ruedi [20%] | 16h | 16h |  |  | (2) Initialization | PO-01.0270 | Project Management | IT-PV Phase Documents | medium | (2) Normal | Scheidegger Ruedi (KIRO 11) |  |  |
| 266 | 01.2.2.3.3.1.9.12 | High Level Value Case (HVC) |  | 2w | 2009-06-22 A | 2009-07-06 A |  | 100% | as late as possible | Scheidegger Ruedi [20%] | 16h | 16h |  |  | (2) Initialization | PO-01.0280 | Project Management |  | medium | (2) Normal | Scheidegger Ruedi (KIRO 11) |  |  |
| 267 | 01.2.2.3.3.1.9.13 | IT-Plan Kostensicht Phasenpapiere (automatische Datenübernahme aus IT-Plan) |  | 2w | 2009-06-22 A | 2009-07-06 A |  | 100% | as late as possible | Scheidegger Ruedi [20%] | 16h | 16h |  |  | (2) Initialization | PO-01.0290 | Project Management |  | medium | (2) Normal | Scheidegger Ruedi (KIRO 11) |  |  |
| 268 | 01.2.2.3.3.1.9.14 | Project Specific Performance Indicators Definition |  | 2w | 2009-06-22 A | 2009-07-06 A |  | 100% | as late as possible | Scheidegger Ruedi [20%] | 16h | 16h |  |  | (2) Initialization | PO-01.0300 | Project Management |  | medium | (2) Normal | Scheidegger Ruedi (KIRO 11) |  |  |
| 269 | 01.2.2.3.3.1.9.15 | Process Tailoring Record Template |  | 2w | 2009-06-22 A | 2009-07-06 A |  | 100% | as late as possible | Scheidegger Ruedi [20%] | 16h | 16h |  |  | (2) Initialization | PO-01.0310 | Project Management |  | medium | (2) Normal | Scheidegger Ruedi (KIRO 11) |  |  |
| 270 | 01.2.2.3.3.1.9.16 | Project Charter |  | 2w | 2009-06-22 A | 2009-07-06 A |  | 100% | as late as possible | Scheidegger Ruedi [20%] | 16h | 16h |  |  | (2) Initialization | PO-01.0320 | Project Management | IT-PV Phase Documents | medium | (2) Normal | Scheidegger Ruedi (KIRO 11) |  |  |
| 271 | 01.2.2.3.3.1.9.17 | Project Management Plan |  | 2w | 2009-06-22 A | 2009-07-06 A |  | 100% | as late as possible | Scheidegger Ruedi [20%] | 16h | 16h |  |  | (2) Initialization | PO-01.0330 | Project Management | IT-PV Phase Documents | medium | (2) Normal | Scheidegger Ruedi (KIRO 11) |  |  |
| 272 | 01.2.2.3.3.1.9.18 | Risk Management Plan |  | 2w | 2009-06-22 A | 2009-07-06 A |  | 100% | as late as possible | Scheidegger Ruedi [20%] | 16h | 16h |  |  | (2) Initialization | PO-01.0340 | Project Management | IT-PV Phase Documents | medium | (2) Normal | Scheidegger Ruedi (KIRO 11) |  |  |
| 273 | 01.2.2.3.3.1.9.19 | Rollout Concept |  | 2w | 2009-06-22 A | 2009-07-06 A |  | 100% | as late as possible | Scheidegger Ruedi [20%] | 16h | 16h |  |  | (2) Initialization | PO-01.0350 | Project Management |  | medium | (2) Normal | Scheidegger Ruedi (KIRO 11) |  |  |
| 274 | 01.2.2.3.3.1.9.20 | Transition Points |  | 2w | 2009-06-22 A | 2009-07-06 A |  | 100% | as late as possible | Scheidegger Ruedi [20%] | 16h | 16h |  |  | (2) Initialization | PO-01.0360 | Project Management |  | medium | (2) Normal | Scheidegger Ruedi (KIRO 11) |  |  |
| 275 | 01.2.2.3.3.1.9.21 | Training Concept Template |  | 2w | 2009-06-22 A | 2009-07-06 A |  | 100% | as late as possible | Scheidegger Ruedi [20%] | 16h | 16h |  |  | (2) Initialization | PO-01.0370 | Project Management |  | medium | (2) Normal | Scheidegger Ruedi (KIRO 11) |  |  |
| 276 | 01.2.2.3.3.1.9.22 | Weitere Templates zu TOP30, Sitescope und Tivoli Events |  | 2w | 2009-06-22 A | 2009-07-06 A |  | 100% | as late as possible | Scheidegger Ruedi [20%] | 16h | 16h |  |  | (2) Initialization | PO-01.0380 | Project Management |  | medium | (2) Normal | Scheidegger Ruedi (KIRO 11) |  |  |
| 277 | 01.2.2.3.3.1.9.23 | Work Breakdown Structure |  | 2w | 2009-06-22 A | 2009-07-06 A |  | 100% | as late as possible | Scheidegger Ruedi [20%] | 16h | 16h |  |  | (2) Initialization | PO-01.0390 | Project Management | IT-PV Phase Documents | medium | (2) Normal | Scheidegger Ruedi (KIRO 11) |  |  |

| ID | WBS | Task | Duration | Start | Finish | Predecessors | Complete | Constraint | Resources | Work | Actual work | Cost | Actual cost | Text11 | Text12 | Text13 | Text21 | Text23 | Text30 | Text25 |
| --- | --- | --- | --- | --- | --- | --- | --- | --- | --- | --- | --- | --- | --- | --- | --- | --- | --- | --- | --- | --- |
| 278 | 01.2.2.3.3.1.10 | **PO (Planning Offer)** | 14.93d | 2009-06-15 A | 2009-07-06 A | 253 | 100% |  |  | 4476.64h | 4476.64h | 160 | 160 | (2) Initialization | PO-01.0400 | Project Management | IT-PV Phase Documents | medium | (2) Normal |  |
| 279 | 01.2.2.3.3.1.10.1 | **Writing first version of PO** | 14.93d | 2009-06-15 A | 2009-07-06 A |  | 100% |  |  | 4476.64h | 4476.64h | 160 | 160 | (2) Initialization | PO-01.0410 | Project Management | IT-PV Phase Documents | medium | (2) Normal |  |
| 280 | 01.2.2.3.3.1.10.1.1 | 1. Project Objectives | 14.93d | 2009-06-15 A | 2009-07-06 A |  | 100% | as late as possible | Zulliger Markus [67%] | 80h | 80h |  |  | (2) Initialization | PO-01.0420 | Project Management |  | medium | (2) Normal | Zulliger Markus (KSLB 3) |
| 281 | 01.2.2.3.3.1.10.1.2 | 2. Starting Situation | 14.93d | 2009-06-15 A | 2009-07-06 A |  | 100% | as late as possible | Zulliger Markus [67%] | 80h | 80h |  |  | (2) Initialization | PO-01.0430 | Project Management |  | medium | (2) Normal | Zulliger Markus (KSLB 3) |
| 282 | 01.2.2.3.3.1.10.1.3 | **3. Scope Summary** | 14.93d | 2009-06-15 A | 2009-07-06 A |  | 100% |  | Zulliger Markus | 439.44h | 439.44h |  |  | (2) Initialization | PO-01.0440 | Project Management |  | medium | (2) Normal |  |
| 283 | 01.2.2.3.3.1.10.1.3.1 | 3.1 Scope of Project | 14.93d | 2009-06-15 A | 2009-07-06 A |  | 100% | as late as possible | Zulliger Markus [67%] | 80h | 80h |  |  | (2) Initialization | PO-01.0450 | Project Management |  | medium | (2) Normal | Zulliger Markus (KSLB 3) |
| 284 | 01.2.2.3.3.1.10.1.3.2 | 3.2 Out of Scope | 14.93d | 2009-06-15 A | 2009-07-06 A |  | 100% | as late as possible | Zulliger Markus [67%] | 80h | 80h |  |  | (2) Initialization | PO-01.0460 | Project Management |  | medium | (2) Normal | Zulliger Markus (KSLB 3) |
| 285 | 01.2.2.3.3.1.10.1.3.3 | 3.3 Dependencies | 14.93d | 2009-06-15 A | 2009-07-06 A |  | 100% | as late as possible | Zulliger Markus [67%] | 80h | 80h |  |  | (2) Initialization | PO-01.0470 | Project Management |  | medium | (2) Normal | Zulliger Markus (KSLB 3) |
| 286 | 01.2.2.3.3.1.10.1.3.4 | 3.4 Assumptions and Constraints | 14.93d | 2009-06-15 A | 2009-07-06 A |  | 100% | as late as possible | Zulliger Markus [67%] | 80h | 80h |  |  | (2) Initialization | PO-01.0480 | Project Management |  | medium | (2) Normal | Zulliger Markus (KSLB 3) |
| 287 | 01.2.2.3.3.1.10.1.4 | **4. Solution Concept/ Solution Variants** | 14.93d | 2009-06-15 A | 2009-07-06 A |  | 100% |  | Scheidegger Ruedi | 2279.44h | 2279.44h |  |  | (2) Initialization | PO-01.0490 | Project Management |  | medium | (2) Normal |  |
| 288 | 01.2.2.3.3.1.10.1.4.1 | 4.1.1 Business Aspect (BPL) | 14.93d | 2009-06-15 A | 2009-07-06 A |  | 100% | as late as possible | Zulliger Markus [67%] | 80h | 80h |  |  | (2) Initialization | PO-01.0500 | Project Management |  | medium | (2) Normal | Zulliger Markus (KSLB 3) |
| 289 | 01.2.2.3.3.1.10.1.4.2 | 4.1.1.1 Solution Overview | 14.93d | 2009-06-15 A | 2009-07-06 A |  | 100% | as late as possible | Scheidegger Ruedi [67%] | 80h | 80h |  |  | (2) Initialization | PO-01.0510 | Project Management |  | medium | (2) Normal | Scheidegger Ruedi (KIRO 11) |
| 290 | 01.2.2.3.3.1.10.1.4.3 | 4.1.1.2 Lifecycle | 14.93d | 2009-06-15 A | 2009-07-06 A |  | 100% | as late as possible | Scheidegger Ruedi [67%] | 80h | 80h |  |  | (2) Initialization | PO-01.0520 | Project Management |  | medium | (2) Normal | Scheidegger Ruedi (KIRO 11) |
| 291 | 01.2.2.3.3.1.10.1.4.4 | 4.2 Recommendation of a Solution Variant | 14.93d | 2009-06-15 A | 2009-07-06 A |  | 100% |  | Scheidegger Ruedi [67%] | 80h | 80h |  |  | (2) Initialization | PO-01.0530 | Project Management |  | medium | (2) Normal | Scheidegger Ruedi (KIRO 11) |
| 292 | 01.2.2.3.3.1.10.1.4.5 | 4.3 Business Requests overview | 14.93d | 2009-06-15 A | 2009-07-06 A |  | 100% |  | Trindler Markus [67%] | 80h | 80h |  |  | (2) Initialization | PO-01.0540 | Project Management |  | medium | (2) Normal | Trindler Markus (KIRO 12) |
| 293 | 01.2.2.3.3.1.10.1.4.6 | **4.3.1 Functional Requests** | 14.93d | 2009-06-15 A | 2009-07-06 A |  | 100% |  |  | 1280h | 1280h |  |  | (2) Initialization | PO-01.0550 | Project Management |  | medium | (2) Normal |  |
| 294 | 01.2.2.3.3.1.10.1.4.6.1 | 4.3.1.1 Transaction Platform | 14.93d | 2009-06-15 A | 2009-07-06 A |  | 100% |  | Trindler Markus [67%] | 80h | 80h |  |  | (2) Initialization | PO-01.0560 | Project Management |  | medium | (2) Normal | Trindler Markus (KIRO 12) |
| 295 | 01.2.2.3.3.1.10.1.4.6.2 | 4.3.1.2 SOA | 14.93d | 2009-06-15 A | 2009-07-06 A |  | 100% |  | Bennek Robert [67%] | 80h | 80h |  |  | (2) Initialization | PO-01.0570 | Project Management |  | medium | (2) Normal | Bennek Robert (KIRO 14) |
| 296 | 01.2.2.3.3.1.10.1.4.6.3 | 4.3.1.3 Portal Enhancement | 14.93d | 2009-06-15 A | 2009-07-06 A |  | 100% |  | Neumann Gabriele [67%] | 80h | 80h |  |  | (2) Initialization | PO-01.0580 | Project Management |  | medium | (2) Normal | Neumann Gabriele (KIRO 14) |
| 297 | 01.2.2.3.3.1.10.1.4.6.4 | 4.3.1.4 International Enhancements | 14.93d | 2009-06-15 A | 2009-07-06 A |  | 100% |  | Bennek Robert [67%] | 80h | 80h |  |  | (2) Initialization | PO-01.0590 | Project Management |  | medium | (2) Normal | Bennek Robert (KIRO 14) |
| 298 | 01.2.2.3.3.1.10.1.4.6.5 | 4.3.1.5 Development Environment | 14.93d | 2009-06-15 A | 2009-07-06 A |  | 100% |  | Bennek Robert [67%] | 80h | 80h |  |  | (2) Initialization | PO-01.0600 | Project Management |  | medium | (2) Normal | Bennek Robert (KIRO 14) |
| 299 | 01.2.2.3.3.1.10.1.4.6.6 | 4.3.1.6 Deployment Environment Enhancement | 14.93d | 2009-06-15 A | 2009-07-06 A |  | 100% |  | Bennek Robert [67%] | 80h | 80h |  |  | (2) Initialization | PO-01.0610 | Project Management |  | medium | (2) Normal | Bennek Robert (KIRO 14) |
| 300 | 01.2.2.3.3.1.10.1.4.6.7 | 4.3.1.7 Deployment Environment Maintenance | 14.93d | 2009-06-15 A | 2009-07-06 A |  | 100% |  | Bennek Robert [67%] | 80h | 80h |  |  | (2) Initialization | PO-01.0620 | Project Management |  | medium | (2) Normal | Bennek Robert (KIRO 14) |
| 301 | 01.2.2.3.3.1.10.1.4.6.8 | 4.3.1.8 Worflow Integration | 14.93d | 2009-06-15 A | 2009-07-06 A |  | 100% | as late as possible | Trindler Markus [67%] | 80h | 80h |  |  | (2) Initialization | PO-01.0630 | Project Management |  | medium | (2) Normal | Trindler Markus (KIRO 12) |
| 302 | 01.2.2.3.3.1.10.1.4.6.9 | 4.3.1.9 Bulk Services Enhancement | 14.93d | 2009-06-15 A | 2009-07-06 A |  | 100% |  | Neumann Gabriele [67%] | 80h | 80h |  |  | (2) Initialization | PO-01.0640 | Project Management |  | medium | (2) Normal | Neumann Gabriele (KIRO 14) |
| 303 | 01.2.2.3.3.1.10.1.4.6.10 | 4.3.1.10 Asynchronous Services Enhancement | 14.93d | 2009-06-15 A | 2009-07-06 A |  | 100% |  | Bennek Robert [67%] | 80h | 80h |  |  | (2) Initialization | PO-01.0650 | Project Management |  | medium | (2) Normal | Bennek Robert (KIRO 14) |
| 304 | 01.2.2.3.3.1.10.1.4.6.11 | 4.3.1.11 Synchronous Services Enhancement | 14.93d | 2009-06-15 A | 2009-07-06 A |  | 100% |  | Bennek Robert [67%] | 80h | 80h |  |  | (2) Initialization | PO-01.0660 | Project Management |  | medium | (2) Normal | Bennek Robert (KIRO 14) |
| 305 | 01.2.2.3.3.1.10.1.4.6.12 | 4.3.1.12 Batch Enhancement | 14.93d | 2009-06-15 A | 2009-07-06 A |  | 100% |  | Neumann Gabriele [67%] | 80h | 80h |  |  | (2) Initialization | PO-01.0670 | Project Management |  | medium | (2) Normal | Neumann Gabriele (KIRO 14) |
| 306 | 01.2.2.3.3.1.10.1.4.6.13 | 4.3.1.13 Monitoring Enhancement | 14.93d | 2009-06-15 A | 2009-07-06 A |  | 100% |  | Trindler Markus [67%] | 80h | 80h |  |  | (2) Initialization | PO-01.0680 | Project Management |  | medium | (2) Normal | Trindler Markus (KIRO 12) |
| 307 | 01.2.2.3.3.1.10.1.4.6.14 | 4.3.1.14 RTP & ECO System Enhancement | 14.93d | 2009-06-15 A | 2009-07-06 A |  | 100% |  | Trindler Markus [67%] | 80h | 80h |  |  | (2) Initialization | PO-01.0690 | Project Management |  | medium | (2) Normal | Trindler Markus (KIRO 12) |
| 308 | 01.2.2.3.3.1.10.1.4.6.15 | 4.3.1.15 Persistency Enhancement | 14.93d | 2009-06-15 A | 2009-07-06 A |  | 100% |  | Neumann Gabriele [67%] | 80h | 80h |  |  | (2) Initialization | PO-01.0700 | Project Management |  | medium | (2) Normal | Neumann Gabriele (KIRO 14) |
| 309 | 01.2.2.3.3.1.10.1.4.6.16 | 4.3.1.16 Security Enhancement | 14.93d | 2009-06-15 A | 2009-07-06 A |  | 100% |  | Hermann René [67%] | 80h | 80h |  |  | (2) Initialization | PO-01.0710 | Project Management |  | medium | (2) Normal | Herrmann René (KIRO 12) |

| ID | WBS | Task | Duration | Start | Finish | Complete | Constraint | Resources | Work | Actual work | Cost | Actual cost | Text11 | Text12 | Text13 | Text23 | Text30 | Text25 |
| --- | --- | --- | --- | --- | --- | --- | --- | --- | --- | --- | --- | --- | --- | --- | --- | --- | --- | --- |
| 310 | 01.2.2.3.3.1.10.1.4.7 | **4.3.2 Non Functional Requests** | 14.93d | 2009-06-15 A | 2009-07-06 A | 100% |  |  | 400h | 400h |  |  | (2) Initialization | PO-01.0720 | Project Management | medium | (2) Normal |  |
| 311 | 01.2.2.3.3.1.10.1.4.7.1 | 4.3.2.1 Platform Maintenance | 14.93d | 2009-06-15 A | 2009-07-06 A | 100% |  | Lackmann Ralph [67%] | 80h | 80h |  |  | (2) Initialization | PO-01.0730 | Project Management | medium | (2) Normal | Lackmann Ralph (KIRO 12) |
| 312 | 01.2.2.3.3.1.10.1.4.7.2 | 4.3.2.2 Platform Process Enhancement | 14.93d | 2009-06-15 A | 2009-07-06 A | 100% |  | Polisano Riccardo [67%] | 80h | 80h |  |  | (2) Initialization | PO-01.0740 | Project Management | medium | (2) Normal | Polisano Riccardo (KIRO 11) |
| 313 | 01.2.2.3.3.1.10.1.4.7.3 | 4.3.2.3 Product & Services | 14.93d | 2009-06-15 A | 2009-07-06 A | 100% |  | Schelling Adrian [67%] | 80h | 80h |  |  | (2) Initialization | PO-01.0750 | Project Management | medium | (2) Normal | Schelling Adrian (KIRO 11) |
| 314 | 01.2.2.3.3.1.10.1.4.7.4 | 4.3.2.4 Lifecycle Enhancement | 14.93d | 2009-06-15 A | 2009-07-06 A | 100% |  | Scheidegger Ruedi [67%] | 80h | 80h |  |  | (2) Initialization | PO-01.0760 | Project Management | medium | (2) Normal | Scheidegger Ruedi (KIRO 11) |
| 315 | 01.2.2.3.3.1.10.1.4.7.5 | 4.3.2.5 Platform Provisioning | 14.93d | 2009-06-15 A | 2009-07-06 A | 100% |  | Scheidegger Ruedi [67%] | 80h | 80h |  |  | (2) Initialization | PO-01.0770 | Project Management | medium | (2) Normal | Scheidegger Ruedi (KIRO 11) |
| 316 | 01.2.2.3.3.1.10.1.4.8 | 4.3.3 List ofchanged application and / or products (ITPL) | 14.93d | 2009-06-15 A | 2009-07-06 A | 100% |  | Scheidegger Ruedi [67%] | 80h | 80h |  |  | (2) Initialization | PO-01.0780 | Project Management | medium | (2) Normal | Scheidegger Ruedi (KIRO 11) |
| 317 | 01.2.2.3.3.1.10.1.5 | **5 Benefits** | 14.93d | 2009-06-15 A | 2009-07-06 A | 100% |  | Zulliger Markus | 558.88h | 558.88h |  |  | (2) Initialization | PO-01.0790 | Project Management | medium | (2) Normal |  |
| 318 | 01.2.2.3.3.1.10.1.5.1 | **5.1 Quantitative Benefits** | 14.93d | 2009-06-15 A | 2009-07-06 A | 100% |  | Zulliger Markus | 279.44h | 279.44h |  |  | (2) Initialization | PO-01.0800 | Project Management | medium | (2) Normal |  |
| 319 | 01.2.2.3.3.1.10.1.5.1.1 | 5.1.1 Type of Benefits | 14.93d | 2009-06-15 A | 2009-07-06 A | 100% | as late as possible | Zulliger Markus [67%] | 80h | 80h |  |  | (2) Initialization | PO-01.0810 | Project Management | medium | (2) Normal | Zulliger Markus (KSLB 3) |
| 320 | 01.2.2.3.3.1.10.1.5.1.2 | 5.1.2 Classification of Benefits | 14.93d | 2009-06-15 A | 2009-07-06 A | 100% | as late as possible | Zulliger Markus [67%] | 80h | 80h |  |  | (2) Initialization | PO-01.0820 | Project Management | medium | (2) Normal | Zulliger Markus (KSLB 3) |
| 321 | 01.2.2.3.3.1.10.1.5.2 | 5.2 Qualitative Benefits | 14.93d | 2009-06-15 A | 2009-07-06 A | 100% | as late as possible | Scheidegger Ruedi [67%] | 80h | 80h |  |  | (2) Initialization | PO-01.0830 | Project Management | medium | (2) Normal | Scheidegger Ruedi (KIRO 11) |
| 322 | 01.2.2.3.3.1.10.1.5.3 | 5.3 Value Case / Business Case | 14.93d | 2009-06-15 A | 2009-07-06 A | 100% | as late as possible | Schelling Adrian [67%] | 80h | 80h |  |  | (2) Initialization | PO-01.0840 | Project Management | medium | (2) Normal | Schelling Adrian (KIRO 11) |
| 323 | 01.2.2.3.3.1.10.1.6 | **6. Request for Approval** | 14.93d | 2009-06-15 A | 2009-07-06 A | 100% |  | Scheidegger Ruedi | 478.88h | 478.88h |  |  | (2) Initialization | PO-01.0850 | Project Management | medium | (2) Normal |  |
| 324 | 01.2.2.3.3.1.10.1.6.1 | 6.1 Deviations from IT-PV | 14.93d | 2009-06-15 A | 2009-07-06 A | 100% | as late as possible | Scheidegger Ruedi [67%] | 80h | 80h |  |  | (2) Initialization | PO-01.0860 | Project Management | medium | (2) Normal | Scheidegger Ruedi (KIRO 11) |
| 325 | 01.2.2.3.3.1.10.1.6.2 | **6.2 Requested Budget and Milestones** | 14.93d | 2009-06-15 A | 2009-07-06 A | 100% |  | Scheidegger Ruedi | 279.44h | 279.44h |  |  | (2) Initialization | PO-01.0870 | Project Management | medium | (2) Normal |  |
| 326 | 01.2.2.3.3.1.10.1.6.2.1 | 6.2.1 Requested Budget | 14.93d | 2009-06-15 A | 2009-07-06 A | 100% | as late as possible | Scheidegger Ruedi [67%] | 80h | 80h |  |  | (2) Initialization | PO-01.0880 | Project Management | medium | (2) Normal | Scheidegger Ruedi (KIRO 11) |
| 327 | 01.2.2.3.3.1.10.1.6.2.2 | 6.2.2 Milestones | 14.93d | 2009-06-15 A | 2009-07-06 A | 100% | as late as possible | Scheidegger Ruedi [67%] | 80h | 80h |  |  | (2) Initialization | PO-01.0890 | Project Management | medium | (2) Normal | Scheidegger Ruedi (KIRO 11) |
| 328 | 01.2.2.3.3.1.10.1.7 | A JAP AR6 (Business-) Request overview | 14.93d | 2009-06-15 A | 2009-07-06 A | 100% | as late as possible | Hess Andreas [67%] | 80h | 80h |  |  | (2) Initialization | PO-01.0900 | Project Management | medium | (2) Normal | Hess Andreas (KIRO 11) |
| 329 | 01.2.2.3.3.1.10.1.8 | B JAP AR6 Feature overview (by Business Request) | 14.93d | 2009-06-15 A | 2009-07-06 A | 100% |  | Hess Andreas [67%] | 80h | 80h |  |  | (2) Initialization | PO-01.0910 | Project Management | medium | (2) Normal | Hess Andreas (KIRO 11) |
| 330 | 01.2.2.3.3.1.10.1.9 | C Open Requirements for CSS | 14.93d | 2009-06-15 A | 2009-07-06 A | 100% |  | Hess Andreas [67%] | 80h | 80h |  |  | (2) Initialization | PO-01.0920 | Project Management | medium | (2) Normal | Hess Andreas (KIRO 11) |
| 331 | 01.2.2.3.3.1.10.1.10 | D Open Requirements for Oracle | 14.93d | 2009-06-15 A | 2009-07-06 A | 100% |  | Hess Andreas [67%] | 80h | 80h |  |  | (2) Initialization | PO-01.0930 | Project Management | medium | (2) Normal | Hess Andreas (KIRO 11) |
| 332 | 01.2.2.3.3.1.10.1.11 | E Reference Documents | 14.93d | 2009-06-15 A | 2009-07-06 A | 100% |  | Participans [67%] | 80h | 80h |  |  | (2) Initialization | PO-01.0940 | Project Management | medium | (2) Normal |  |
| 333 | 01.2.2.3.3.1.10.1.12 | F Glossary | 14.93d | 2009-06-15 A | 2009-07-06 A | 100% |  | Lüthi Rico F. [67%] | 80h | 80h | 80 | 80 | (2) Initialization | PO-01.0950 | Project Management | medium | (2) Normal | Lüthi Rico F. (KIRO 12) |
| 334 | 01.2.2.3.3.1.10.1.13 | G Abbreviations | 14.93d | 2009-06-15 A | 2009-07-06 A | 100% |  | Lüthi Rico F. [67%] | 80h | 80h | 80 | 80 | (2) Initialization | PO-01.0960 | Project Management | medium | (2) Normal | Lüthi Rico F. (KIRO 12) |

| ID | WBS | Task | Type | Duration | Start | Finish | Predecessors | Complete | Constraint | Resources | Work | Actual work | Cost | Actual cost | Text11 | Text12 | Text13 | Text23 | Text30 | Text25 | Text20 | Text21 |
| --- | --- | --- | --- | --- | --- | --- | --- | --- | --- | --- | --- | --- | --- | --- | --- | --- | --- | --- | --- | --- | --- | --- |
| 335 | 01.2.2.3.3.1.11 | **STC Presentation** |  | 5d? | 2009-06-24 A | 2009-06-30 A |  | 100% |  |  | 16h | 16h |  |  | (2) Initialization | PO-01.0970 | Project Management | medium | (2) Normal |  |  |  |
| 336 | 01.2.2.3.3.1.11.1 | preparation of the slides |  | 5d? | 2009-06-24 A | 2009-06-30 A |  | 100% | as late as possible | Scheidegger Ruedi [20%]; Trindler Markus [20%] | 16h | 16h |  |  | (2) Initialization | PO-01.0980 | Project Management | medium | (2) Normal | Scheidegger Ruedi (KIRO 11) |  |  |
| 337 | 01.2.2.3.3.1.11.2 | STC Meeting | milestone | 0d | 2009-06-30 A | 2009-06-30 A | 336, 338FS+1d | 100% | as late as possible |  |  |  |  |  | (2) Initialization | PO-01.0990 | Project Management | medium | (2) Normal | Scheidegger Ruedi (KIRO 11) |  |  |
| 338 | 01.2.2.3.3.1.12 | Status Meeting |  | 1h | 2009-06-29 A | 2009-06-29 A |  | 100% | as late as possible | Zulliger Markus [110.8%]; Scheidegger Ruedi [110.8%]; Trindler Markus [110.8%]; Bennek Robert [110.8%]; Neumann Gabriele [110.8%]; Hess Andreas [110.8%]; Lackmann Ralph [110.8%]; Polisano Riccardo [110.8%]; Schelling Adrian [110.8%]; Lüthi Rico F. [110.8%]; Hermann René | 12h | 12h | 1.11 | 1.11 | (2) Initialization | PO-01.1000 | Project Management | medium | (2) Normal | Scheidegger Ruedi (KIRO 11) |  |  |
| 339 | 01.2.2.3.3.1.13 | Final version checked in | milestone | 0d | 2009-07-06 A | 2009-07-06 A | 254, 278, 363, 436, 447, 338 | 100% | as late as possible | Trindler Markus |  |  |  |  | (2) Initialization | PO-01.1010 | Project Management | medium | (2) Normal | Trindler Markus (KIRO 12) | Trindler Markus (KIRO 12) | IT-PV Phase Documents |
| 340 | 01.2.2.3.3.1.14 | Sending PO for Review |  | 2h | 2009-07-06 A | 2009-07-06 A | 339 | 100% | as late as possible | Lüthi Rico F. | 2h | 2h | 2 | 2 | (2) Initialization | PO-01.1020 | Project Management | medium | (2) Normal | Lüthi Rico F. (KIRO 12) |  |  |
| 341 | 01.2.2.3.3.1.15 | Review from experts |  | 3d | 2009-07-07 A | 2009-07-09 A | 340 | 100% | as late as possible |  |  |  |  |  | (2) Initialization | PO-01.1030 | Project Management | medium | (2) Normal | Scheidegger Ruedi (KIRO 11) | Trindler Markus (KIRO 12) | IT-PV Phase Documents |
| 342 | 01.2.2.3.3.1.16 | Review from QAS |  | 3d | 2009-07-07 A | 2009-07-09 A | 340 | 100% | as late as possible | Koch Thomas | 24h | 24h |  |  | (2) Initialization | PO-01.1040 | Project Management | medium | (2) Normal | Koch Thomas (KIRO 1) | Polisano Riccardo (KIRO 11) | IT-PV Phase Documents |
| 343 | 01.2.2.3.3.1.17 | Feedback to authors |  | 2h | 2009-07-10 A | 2009-07-10 A | 341, 342 | 100% | as late as possible | Scheidegger Ruedi | 2h | 2h |  |  | (2) Initialization | PO-01.1050 | Project Management | medium | (2) Normal | Scheidegger Ruedi (KIRO 11) | Trindler Markus (KIRO 12) | IT-PV Phase Documents |
| 344 | 01.2.2.3.3.1.18 | Last review finished | milestone | 0d | 2009-07-10 A | 2009-07-10 A | 343 | 100% | as late as possible | Trindler Markus |  |  |  |  | (2) Initialization | PO-01.1060 | Project Management | medium | (2) Normal | Trindler Markus (KIRO 12) | Trindler Markus (KIRO 12) | IT-PV Phase Documents |
| 345 | 01.2.2.3.3.1.19 | Reworking of documents |  | 1d | 2009-07-10 A | 2009-07-13 A | 344 | 100% | as late as possible | Hess Andreas; Neumann Gabriele; Zulliger Markus; Bennek Robert; Lackmann Ralph; Lüthi Rico F.; Polisano Riccardo; Scheidegger Ruedi; Telgheider Jörg; Trindler Markus | 80h | 80h | 8 | 8 | (2) Initialization | PO-01.1070 | Project Management | medium | (2) Normal | Scheidegger Ruedi (KIRO 11) | Trindler Markus (KIRO 12) | IT-PV Phase Documents |
| 346 | 01.2.2.3.3.1.20 | Document Adjustment |  | 1d | 2009-07-13 A | 2009-07-14 A | 345 | 100% | as late as possible | Trindler Markus; Lüthi Rico F.; Scheidegger Ruedi | 24h | 24h | 8 | 8 | (2) Initialization | PO-01.1080 | Project Management | medium | (2) Normal | Scheidegger Ruedi (KIRO 11) | Trindler Markus (KIRO 12) | IT-PV Phase Documents |
| 347 | 01.2.2.3.3.1.21 | Upload Documents to IT-PV |  | 2h | 2009-07-14 A | 2009-07-14 A | 346 | 100% | as late as possible | Scheidegger Ruedi | 2h | 2h |  |  | (2) Initialization | PO-01.1090 | Project Management | medium | (2) Normal | Scheidegger Ruedi (KIRO 11) | Lüthi Rico F. (KIRO 12) | IT-PV Phase Documents |
| 348 | 01.2.2.3.3.1.22 | Document finished an checked in in ITPV | milestone | 0d | 2009-07-14 A | 2009-07-14 A | 347 | 100% | as late as possible | Trindler Markus |  |  |  |  | (2) Initialization | PO-01.1100 | Project Management | medium | (2) Normal | Trindler Markus (KIRO 12) | Trindler Markus (KIRO 12) | IT-PV Phase Documents |
| 349 | 01.2.2.4 | **Stream PMO** |  | 66d? | 2009-04-08 A | 2009-07-08 A | 195 | 100% |  |  | 846h | 846h | 846 | 846 | (2) Initialization | PO-02.0000 | PMO | medium | (2) Normal |  |  |  |
| 350 | 01.2.2.4.1 | **Preparation for Initialization Phase** |  | 66d? | 2009-04-08 A | 2009-07-08 A |  | 100% |  |  | 494h | 494h | 494 | 494 | (2) Initialization | PO-02.0010 | PMO | medium | (2) Normal |  |  | PMO |
| 351 | 01.2.2.4.1.1 | **Initial preparation of SharePoint** |  | 57.5d? | 2009-04-08 A | 2009-06-26 A |  | 100% |  |  | 368h | 368h | 368 | 368 | (2) Initialization | PO-02.0020 | PMO | medium | (2) Normal |  |  |  |
| 352 | 01.2.2.4.1.1.1 | SharePoint Update of Risk List |  | 6.25d? | 2009-04-08 A | 2009-04-16 A |  | 100% |  | Lüthi Rico F. [80%] | 40h | 40h | 40 | 40 | (2) Initialization | PO-02.0030 | PMO | medium | (2) Normal | Lüthi Rico F. (KIRO 12) |  | PMO |
| 353 | 01.2.2.4.1.1.2 | SharePoint Update of Activities List |  | 2.5d? | 2009-04-16 A | 2009-04-20 A | 352 | 100% |  | Lüthi Rico F. [80%] | 16h | 16h | 16 | 16 | (2) Initialization | PO-02.0040 | PMO | medium | (2) Normal | Lüthi Rico F. (KIRO 12) |  |  |
| 354 | 01.2.2.4.1.1.3 | SharePoint preparation of Reports Library |  | 12.5d? | 2009-04-20 A | 2009-05-07 A | 353 | 100% |  | Lüthi Rico F. [80%] | 80h | 80h | 80 | 80 | (2) Initialization | PO-02.0050 | PMO | medium | (2) Normal | Lüthi Rico F. (KIRO 12) |  |  |
| 355 | 01.2.2.4.1.1.4 | SharePoint preparation of Minutes Library |  | 2.5d? | 2009-05-07 A | 2009-05-11 A | 354 | 100% |  | Lüthi Rico F. [80%] | 16h | 16h | 16 | 16 | (2) Initialization | PO-02.0060 | PMO | medium | (2) Normal | Lüthi Rico F. (KIRO 12) |  |  |
| 356 | 01.2.2.4.1.1.5 | SharePoint preparation of Decision & Escalation List |  | 3.75d? | 2009-05-11 A | 2009-05-15 A | 355 | 100% |  | Lüthi Rico F. [80%] | 24h | 24h | 24 | 24 | (2) Initialization | PO-02.0070 | PMO | medium | (2) Normal | Lüthi Rico F. (KIRO 12) |  |  |
| 357 | 01.2.2.4.1.1.6 | SharePoint preparation of Stream and Role Pages |  | 3.75d? | 2009-05-15 A | 2009-05-21 A | 356 | 100% |  | Lüthi Rico F. [80%] | 24h | 24h | 24 | 24 | (2) Initialization | PO-02.0080 | PMO | medium | (2) Normal | Lüthi Rico F. (KIRO 12) |  | PMO |
| 358 | 01.2.2.4.1.1.7 | SharePoint Update of Work Packages |  | 26.25d? | 2009-05-21 A | 2009-06-26 A | 357 | 100% |  | Lüthi Rico F. [80%] | 168h | 168h | 168 | 168 | (2) Initialization | PO-02.0090 | PMO | medium | (2) Normal | Lüthi Rico F. (KIRO 12) |  |  |

Notes:
- 345: Text19: Trindler Markus (KIRO 12)
- 346: Text19: Trindler Markus (KIRO 12)
- 349: Das ist ein Test zur übernahme eines texte das ist ein nächste zeitel / Das ist eine èberschrift / listeinterag 1listeintrag 2test / beispiel text / ~ / Text19: Das ist ein Test zur übernahme eines texte das ist ein nächste zeitel

| ID | WBS | Task | Type | Duration | Start | Finish | Predecessors | Complete | Constraint | Resources | Work | Actual work | Cost | Actual cost | Text11 | Text12 | Text13 | Text23 | Text30 | Text25 | Text21 | Text20 | Text19 |
| --- | --- | --- | --- | --- | --- | --- | --- | --- | --- | --- | --- | --- | --- | --- | --- | --- | --- | --- | --- | --- | --- | --- | --- |
| 359 | 01.2.2.4.1.2 | **Planning of Initialization Phase** |  | 15.75d? | 2009-06-17 A | 2009-07-08 A |  | 100% |  |  | 126h | 126h | 126 | 126 | (2) Initialization | PO-02.0110 | PMO | medium | (2) Normal |  |  |  |  |
| 360 | 01.2.2.4.1.2.1 | Update Work Packages on SharePoint |  | 3d? | 2009-06-17 A | 2009-06-22 A | 243 | 100% |  | Lüthi Rico F. | 24h | 24h | 24 | 24 | (2) Initialization | PO-02.0120 | PMO | medium | (2) Normal | Lüthi Rico F. (KIRO 12) |  |  |  |
| 361 | 01.2.2.4.1.2.2 | MS Project Plan Update |  | 12.75d | 2009-06-22 A | 2009-07-08 A | 360 | 100% | finish no earlier than 2009-07-08 | Lüthi Rico F. | 102h | 102h | 102 | 102 | (2) Initialization | PO-02.0130 | PMO | medium | (2) Normal | Lüthi Rico F. (KIRO 12) | PMO |  |  |
| 362 | 01.2.2.4.1.3 | Preparation of Initialization Phase finished | milestone | 0d | 2009-07-08 A | 2009-07-08 A | 351, 359 | 100% | start no earlier than 2009-07-02 |  |  |  |  |  | (2) Initialization | PO-02.0150 | PMO | medium | (2) Normal | Lüthi Rico F. (KIRO 12) |  |  |  |
| 363 | 01.2.2.4.2 | **PRB General Documents** |  | 10d | 2009-06-22 A | 2009-07-06 A | 253 | 100% |  |  | 352h | 352h | 352 | 352 | (2) Initialization | PO-02.0190 | PMO | medium | (2) Normal |  | IT-PV Phase Documents |  |  |
| 364 | 01.2.2.4.2.1 | Action items, Issues and Escalation Tracker |  | 2w | 2009-06-22 A | 2009-07-06 A |  | 100% | as late as possible | Lüthi Rico F. [40%] | 32h | 32h | 32 | 32 | (2) Initialization | PO-02.0200 | PMO | medium | (2) Normal | Lüthi Rico F. (KIRO 12) | IT-PV Phase Documents |  |  |
| 365 | 01.2.2.4.2.2 | Agreement Monitoring Plan and Report (P) |  | 2w | 2009-06-22 A | 2009-07-06 A |  | 100% | as late as possible | Lüthi Rico F. [40%] | 32h | 32h | 32 | 32 | (2) Initialization | PO-02.0210 | PMO | medium | (2) Normal | Lüthi Rico F. (KIRO 12) |  |  |  |
| 366 | 01.2.2.4.2.3 | Baseline Record (A/P) |  | 2w | 2009-06-22 A | 2009-07-06 A |  | 100% | as late as possible | Lüthi Rico F. [40%] | 32h | 32h | 32 | 32 | (2) Initialization | PO-02.0220 | PMO | medium | (2) Normal | Lüthi Rico F. (KIRO 12) | IT-PV Phase Documents |  |  |
| 367 | 01.2.2.4.2.4 | Configuration Items List (A/P) |  | 2w | 2009-06-22 A | 2009-07-06 A |  | 100% | as late as possible | Lüthi Rico F. [40%] | 32h | 32h | 32 | 32 | (2) Initialization | PO-02.0230 | PMO | medium | (2) Normal | Lüthi Rico F. (KIRO 12) | IT-PV Phase Documents |  |  |
| 368 | 01.2.2.4.2.5 | Configuration Management Plan (A/P) |  | 2w | 2009-06-22 A | 2009-07-06 A |  | 100% | as late as possible | Lüthi Rico F. [40%] | 32h | 32h | 32 | 32 | (2) Initialization | PO-02.0240 | PMO | medium | (2) Normal | Lüthi Rico F. (KIRO 12) | IT-PV Phase Documents |  |  |
| 369 | 01.2.2.4.2.6 | Documentation Concept |  | 2w | 2009-06-22 A | 2009-07-06 A |  | 100% | as late as possible | Lüthi Rico F. [40%] | 32h | 32h | 32 | 32 | (2) Initialization | PO-02.0250 | PMO | medium | (2) Normal | Lüthi Rico F. (KIRO 12) | IT-PV Phase Documents |  |  |
| 370 | 01.2.2.4.2.7 | MS Project Schedule (P) |  | 2w | 2009-06-22 A | 2009-07-06 A |  | 100% | as late as possible | Lüthi Rico F. [40%] | 32h | 32h | 32 | 32 | (2) Initialization | PO-02.0260 | PMO | medium | (2) Normal | Lüthi Rico F. (KIRO 12) | IT-PV Phase Documents |  |  |
| 371 | 01.2.2.4.2.8 | Project Change Request (A/P) |  | 2w | 2009-06-22 A | 2009-07-06 A |  | 100% | as late as possible | Lüthi Rico F. [40%] | 32h | 32h | 32 | 32 | (2) Initialization | PO-02.0270 | PMO | medium | (2) Normal | Lüthi Rico F. (KIRO 12) | IT-PV Phase Documents |  |  |
| 372 | 01.2.2.4.2.9 | Project CR List (A/P) |  | 2w | 2009-06-22 A | 2009-07-06 A |  | 100% | as late as possible | Lüthi Rico F. [40%] | 32h | 32h | 32 | 32 | (2) Initialization | PO-02.0280 | PMO | medium | (2) Normal | Lüthi Rico F. (KIRO 12) | IT-PV Phase Documents |  |  |
| 373 | 01.2.2.4.2.10 | Project Organization |  | 2w | 2009-06-22 A | 2009-07-06 A |  | 100% | as late as possible | Lüthi Rico F. [40%] | 32h | 32h | 32 | 32 | (2) Initialization | PO-02.0290 | PMO | medium | (2) Normal | Lüthi Rico F. (KIRO 12) | IT-PV Phase Documents |  |  |
| 374 | 01.2.2.4.2.11 | Project Progress Review Report (P) |  | 2w | 2009-06-22 A | 2009-07-06 A |  | 100% | as late as possible | Lüthi Rico F. [40%] | 32h | 32h | 32 | 32 | (2) Initialization | PO-02.0300 | PMO | medium | (2) Normal | Lüthi Rico F. (KIRO 12) | IT-PV Phase Documents |  |  |
| 375 | 01.2.2.5 | **Stream Requirement Management** |  | 63.75d? | 2009-04-08 A | 2009-07-06 A | 195 | 100% |  |  | 1066h | 1066h | 56.25 | 56.25 | (2) Initialization | PO-03.0000 | Requirements Management | medium | (2) Normal |  | Requirement Management |  |  |
| 376 | 01.2.2.5.1 | **Requirement Management Planning** |  | 20.25d | 2009-04-08 A | 2009-05-06 A |  | 100% |  |  | 192h | 192h | 46 | 46 | (2) Initialization | PO-03.0010 | Requirements Management | medium | (2) Normal |  | Requirement Management |  |  |
| 377 | 01.2.2.5.1.1 | Creat a first draft of the Requirement Managemnt Process for the Initalisation Phase |  | 5d | 2009-04-08 A | 2009-04-14 A |  | 100% |  | Hess Andreas; Lüthi Rico F. | 80h | 80h | 40 | 40 | (2) Initialization | PO-03.0020 | Requirements Management | medium | (2) Normal | Hess Andreas (KIRO 11) | Requirement Management | Scheidegger Ruedi (KIRO 11) |  |
| 378 | 01.2.2.5.1.2 | Review the Process |  | 1w | 2009-04-15 A | 2009-04-21 A | 377 | 100% |  | Lackmann Ralph [10%]; Telgheider Jörg [10%]; Lüthi Rico F. [10%]; Scheidegger Ruedi [10%]; Trindler Markus [10%] | 20h | 20h | 4 | 4 | (2) Initialization | PO-03.0030 | Requirements Management | medium | (2) Normal | Hess Andreas (KIRO 11) | Requirement Management | Scheidegger Ruedi (KIRO 11) | Scheidegger Ruedi (KIRO 11) |
| 379 | 01.2.2.5.1.3 | Workshop Meeting for review Process |  | 2h | 2009-04-22 A | 2009-04-22 A | 378 | 100% |  | Lackmann Ralph; Telgheider Jörg; Hess Andreas; Lüthi Rico F.; Scheidegger Ruedi; Trindler Markus | 12h | 12h | 2 | 2 | (2) Initialization | PO-03.0040 | Requirements Management | medium | (2) Normal | Hess Andreas (KIRO 11) | Requirement Management | Scheidegger Ruedi (KIRO 11) | Scheidegger Ruedi (KIRO 11) |
| 380 | 01.2.2.5.1.4 | Update Processes |  | 2w | 2009-04-22 A | 2009-05-06 A | 379 | 100% |  | Hess Andreas | 80h | 80h |  |  | (2) Initialization | PO-03.0050 | Requirements Management | medium | (2) Normal | Hess Andreas (KIRO 11) | Requirement Management | Scheidegger Ruedi (KIRO 11) |  |
| 381 | 01.2.2.5.1.5 | Prequirement Management Proccess finalized | milestone | 0d | 2009-05-06 A | 2009-05-06 A | 380 | 100% |  | Scheidegger Ruedi |  |  |  |  | (2) Initialization | PO-03.0060 | Requirements Management | medium | (2) Normal | Hess Andreas (KIRO 11) | Requirement Management | Scheidegger Ruedi (KIRO 11) | Scheidegger Ruedi (KIRO 11) |
| 382 | 01.2.2.5.2 | **Clean up Requirement** |  | 19.28d? | 2009-04-08 A | 2009-05-05 A |  | 100% |  |  | 306h | 306h | 10.25 | 10.25 | (2) Initialization | PO-03.0070 | Requirements Management | medium | (2) Normal |  |  |  |  |
| 383 | 01.2.2.5.2.1 | Workshop to define status of Requirements and Next Steps |  | 2.25h | 2009-04-08 A | 2009-04-08 A |  | 100% |  | Hess Andreas; Trindler Markus; Neumann Gabriele; Piol Domenico; Scheidegger Ruedi; Lüthi Rico F.; Bennek Robert; Lackmann Ralph | 18h | 18h | 2.25 | 2.25 | (2) Initialization | PO-03.0080 | Requirements Management | medium | (2) Normal | Hess Andreas (KIRO 11) |  |  |  |
| 384 | 01.2.2.5.2.2 | Define Requirements clean up process |  | 3d | 2009-04-08 A | 2009-04-13 A | 383 | 100% |  | Hess Andreas | 24h | 24h |  |  | (2) Initialization | PO-03.0090 | Requirements Management | medium | (2) Normal | Hess Andreas (KIRO 11) |  |  |  |
| 385 | 01.2.2.5.2.3 | Review Requirement clean up process |  | 1d? | 2009-04-13 A | 2009-04-14 A | 384 | 100% |  | Trindler Markus; Scheidegger Ruedi; Lüthi Rico F. | 24h | 24h | 8 | 8 | (2) Initialization | PO-03.0100 | Requirements Management | medium | (2) Normal | Hess Andreas (KIRO 11) |  |  |  |
| 386 | 01.2.2.5.2.4 | Clean up Requirements |  | 3w | 2009-04-14 A | 2009-05-05 A | 385 | 100% |  | Hess Andreas; Trindler Markus [50%]; Neumann Gabriele [50%]; Scheidegger Ruedi [50%] | 240h | 240h |  |  | (2) Initialization | PO-03.0110 | Requirements Management | medium | (2) Normal | Hess Andreas (KIRO 11) |  |  |  |

| ID | WBS | Task | Duration | Start | Finish | Complete | Resources | Work | Actual work | Text11 | Text12 | Text13 | Text23 | Text30 | Text25 |
| --- | --- | --- | --- | --- | --- | --- | --- | --- | --- | --- | --- | --- | --- | --- | --- |
| 387 | 01.2.2.5.3 | **Coordination of External Requirements** | 49d? | 2009-04-08 A | 2009-06-15 A | 100% |  | 48h | 48h | (2) Initialization | PO-03.0120 | Requirements Management | medium | (2) Normal |  |
| 388 | 01.2.2.5.3.1 | **RTP - CSS and ORACLE Requirements** | 1d? | 2009-04-08 A | 2009-04-08 A | 100% |  | 16h | 16h | (2) Initialization | PO-03.0130 | Requirements Management | medium | (2) Normal |  |
| 389 | 01.2.2.5.3.1.1 | Update External Requirements | 1d? | 2009-04-08 A | 2009-04-08 A | 100% | Hess Andreas | 8h | 8h | (2) Initialization | PO-03.0140 | Requirements Management | medium | (2) Normal | Hess Andreas (KIRO 11) |
| 390 | 01.2.2.5.3.1.2 | Bi-Weekly RTP Requirements Meeting | 1d? | 2009-04-08 A | 2009-04-08 A | 100% | Hess Andreas | 8h | 8h | (2) Initialization | PO-03.0150 | Requirements Management | medium | (2) Normal | Hess Andreas (KIRO 11) |
| 391 | 01.2.2.5.3.2 | **SOA Initiatives for Web Services - AR 3** | 49d? | 2009-04-08 A | 2009-06-15 A | 100% |  | 16h | 16h | (2) Initialization | PO-03.0160 | Requirements Management | medium | (2) Normal |  |
| 392 | 01.2.2.5.3.2.1 | Import Requirements into JIRA | 1d? | 2009-06-15 A | 2009-06-15 A | 100% | Hess Andreas | 8h | 8h | (2) Initialization | PO-03.0170 | Requirements Management | medium | (2) Normal | Hess Andreas (KIRO 11) |
| 393 | 01.2.2.5.3.2.2 | Maintain and Coordinate Requirements | 1d? | 2009-04-08 A | 2009-04-08 A | 100% | Hess Andreas | 8h | 8h | (2) Initialization | PO-03.0180 | Requirements Management | medium | (2) Normal | Hess Andreas (KIRO 11) |
| 394 | 01.2.2.5.3.3 | **WLS One Bank 2.0 Requirements** | 49d? | 2009-04-08 A | 2009-06-15 A | 100% |  | 16h | 16h | (2) Initialization | PO-03.0190 | Requirements Management | medium | (2) Normal |  |
| 395 | 01.2.2.5.3.3.1 | Import Requirements into JIRA | 1d? | 2009-06-15 A | 2009-06-15 A | 100% | Hess Andreas | 8h | 8h | (2) Initialization | PO-03.0200 | Requirements Management | medium | (2) Normal | Hess Andreas (KIRO 11) |
| 396 | 01.2.2.5.3.3.2 | Maintain and Coordinate Requirements | 1d? | 2009-04-08 A | 2009-04-08 A | 100% | Hess Andreas | 8h | 8h | (2) Initialization | PO-03.0210 | Requirements Management | medium | (2) Normal | Hess Andreas (KIRO 11) |
| 397 | 01.2.2.5.4 | **Project Change Request Board (Process)** | 1d? | 2009-04-08 A | 2009-04-08 A | 100% |  | 32h | 32h | (2) Initialization | PO-03.0220 | Requirements Management | medium | (2) Normal |  |
| 398 | 01.2.2.5.4.1 | Weekly Meeting | 1d? | 2009-04-08 A | 2009-04-08 A | 100% | Hess Andreas | 8h | 8h | (2) Initialization | PO-03.0230 | Requirements Management | medium | (2) Normal | Hess Andreas (KIRO 11) |
| 399 | 01.2.2.5.4.2 | Prepare List and Report | 1d? | 2009-04-08 A | 2009-04-08 A | 100% | Hess Andreas | 8h | 8h | (2) Initialization | PO-03.0240 | Requirements Management | medium | (2) Normal | Hess Andreas (KIRO 11) |
| 400 | 01.2.2.5.4.3 | Update Features & Requirements | 1d? | 2009-04-08 A | 2009-04-08 A | 100% | Hess Andreas | 8h | 8h | (2) Initialization | PO-03.0250 | Requirements Management | medium | (2) Normal | Hess Andreas (KIRO 11) |
| 401 | 01.2.2.5.4.4 | Stakeholder Communication | 1d? | 2009-04-08 A | 2009-04-08 A | 100% | Hess Andreas | 8h | 8h | (2) Initialization | PO-03.0260 | Requirements Management | medium | (2) Normal | Hess Andreas (KIRO 11) |
| 402 | 01.2.2.5.5 | **Features & Requirements Closing Process** | 1d? | 2009-04-08 A | 2009-04-08 A | 100% |  | 32h | 32h | (2) Initialization | PO-03.0270 | Requirements Management | medium | (2) Normal |  |
| 403 | 01.2.2.5.5.1 | Weekly Meeting | 1d? | 2009-04-08 A | 2009-04-08 A | 100% | Hess Andreas | 8h | 8h | (2) Initialization | PO-03.0280 | Requirements Management | medium | (2) Normal | Hess Andreas (KIRO 11) |
| 404 | 01.2.2.5.5.2 | Prepare List and Report | 1d? | 2009-04-08 A | 2009-04-08 A | 100% | Hess Andreas | 8h | 8h | (2) Initialization | PO-03.0290 | Requirements Management | medium | (2) Normal | Hess Andreas (KIRO 11) |
| 405 | 01.2.2.5.5.3 | Update Features & Requirements | 1d? | 2009-04-08 A | 2009-04-08 A | 100% | Hess Andreas | 8h | 8h | (2) Initialization | PO-03.0300 | Requirements Management | medium | (2) Normal | Hess Andreas (KIRO 11) |
| 406 | 01.2.2.5.5.4 | Stakeholder Communication | 1d? | 2009-04-08 A | 2009-04-08 A | 100% | Hess Andreas | 8h | 8h | (2) Initialization | PO-03.0310 | Requirements Management | medium | (2) Normal | Hess Andreas (KIRO 11) |
| 407 | 01.2.2.5.6 | **Coordination and Support of Requirements Engineering** | 1d? | 2009-04-08 A | 2009-04-08 A | 100% |  | 48h | 48h | (2) Initialization | PO-03.0320 | Requirements Management | medium | (2) Normal |  |
| 408 | 01.2.2.5.6.1 | Product & Services | 1d? | 2009-04-08 A | 2009-04-08 A | 100% | Hess Andreas | 8h | 8h | (2) Initialization | PO-03.0330 | Requirements Management | medium | (2) Normal | Hess Andreas (KIRO 11) |
| 409 | 01.2.2.5.6.2 | Platform Process Enhancement | 1d? | 2009-04-08 A | 2009-04-08 A | 100% | Hess Andreas | 8h | 8h | (2) Initialization | PO-03.0340 | Requirements Management | medium | (2) Normal | Hess Andreas (KIRO 11) |
| 410 | 01.2.2.5.6.3 | Platform Maintenance | 1d? | 2009-04-08 A | 2009-04-08 A | 100% | Hess Andreas | 8h | 8h | (2) Initialization | PO-03.0350 | Requirements Management | medium | (2) Normal | Hess Andreas (KIRO 11) |
| 411 | 01.2.2.5.6.4 | ToolChain | 1d? | 2009-04-08 A | 2009-04-08 A | 100% | Hess Andreas | 8h | 8h | (2) Initialization | PO-03.0360 | Requirements Management | medium | (2) Normal | Hess Andreas (KIRO 11) |
| 412 | 01.2.2.5.6.5 | Platform Provisioning | 1d? | 2009-04-08 A | 2009-04-08 A | 100% | Hess Andreas | 8h | 8h | (2) Initialization | PO-03.0370 | Requirements Management | medium | (2) Normal | Hess Andreas (KIRO 11) |
| 413 | 01.2.2.5.6.6 | Lifecycle Enhancement | 1d? | 2009-04-08 A | 2009-04-08 A | 100% | Hess Andreas | 8h | 8h | (2) Initialization | PO-03.0380 | Requirements Management | medium | (2) Normal | Hess Andreas (KIRO 11) |

| ID | WBS | Task | Duration | Start | Finish | Predecessors | Complete | Constraint | Resources | Work | Actual work | Text11 | Text12 | Text13 | Text23 | Text30 | Text25 | Text21 |
| --- | --- | --- | --- | --- | --- | --- | --- | --- | --- | --- | --- | --- | --- | --- | --- | --- | --- | --- |
| 414 | 01.2.2.5.7 | **Training** | 1d? | 2009-04-08 A | 2009-04-08 A |  | 100% |  |  | 16h | 16h | (2) Initialization | PO-03.0390 | Requirements Management | medium | (2) Normal |  |  |
| 415 | 01.2.2.5.7.1 | JIRA Brush Up - Training | 1d? | 2009-04-08 A | 2009-04-08 A |  | 100% |  | Hess Andreas | 8h | 8h | (2) Initialization | PO-03.0400 | Requirements Management | medium | (2) Normal | Hess Andreas (KIRO 11) |  |
| 416 | 01.2.2.5.7.2 | Supplier JIRA Training | 1d? | 2009-04-08 A | 2009-04-08 A |  | 100% |  | Hess Andreas | 8h | 8h | (2) Initialization | PO-03.0410 | Requirements Management | medium | (2) Normal | Hess Andreas (KIRO 11) |  |
| 417 | 01.2.2.5.8 | **QA** | 1d? | 2009-04-08 A | 2009-04-08 A |  | 100% |  |  | 32h | 32h | (2) Initialization | PO-03.0420 | Requirements Management | medium | (2) Normal |  |  |
| 418 | 01.2.2.5.8.1 | Walktrough Requirements Specification | 1d? | 2009-04-08 A | 2009-04-08 A |  | 100% |  | Hess Andreas | 8h | 8h | (2) Initialization | PO-03.0430 | Requirements Management | medium | (2) Normal | Hess Andreas (KIRO 11) |  |
| 419 | 01.2.2.5.8.2 | Validate Feature & Requirements Linking | 1d? | 2009-04-08 A | 2009-04-08 A |  | 100% |  | Hess Andreas | 8h | 8h | (2) Initialization | PO-03.0440 | Requirements Management | medium | (2) Normal | Hess Andreas (KIRO 11) |  |
| 420 | 01.2.2.5.8.3 | Alignment of Requirements | 1d? | 2009-04-08 A | 2009-04-08 A |  | 100% |  | Hess Andreas | 8h | 8h | (2) Initialization | PO-03.0450 | Requirements Management | medium | (2) Normal | Hess Andreas (KIRO 11) |  |
| 421 | 01.2.2.5.8.4 | Handle of erroneous Requirements | 1d? | 2009-04-08 A | 2009-04-08 A |  | 100% |  | Hess Andreas | 8h | 8h | (2) Initialization | PO-03.0460 | Requirements Management | medium | (2) Normal | Hess Andreas (KIRO 11) |  |
| 422 | 01.2.2.5.9 | **Project Stream Support** | 1d? | 2009-04-08 A | 2009-04-08 A |  | 100% |  |  | 32h | 32h | (2) Initialization | PO-03.0470 | Requirements Management | medium | (2) Normal |  |  |
| 423 | 01.2.2.5.9.1 | Test Management Support - Acceptance Criteria | 1d? | 2009-04-08 A | 2009-04-08 A |  | 100% |  | Hess Andreas | 8h | 8h | (2) Initialization | PO-03.0480 | Requirements Management | medium | (2) Normal | Hess Andreas (KIRO 11) |  |
| 424 | 01.2.2.5.9.2 | Release Management Support - Release Planning | 1d? | 2009-04-08 A | 2009-04-08 A |  | 100% |  | Hess Andreas | 8h | 8h | (2) Initialization | PO-03.0490 | Requirements Management | medium | (2) Normal | Hess Andreas (KIRO 11) |  |
| 425 | 01.2.2.5.9.3 | Supplier Management Support | 1d? | 2009-04-08 A | 2009-04-08 A |  | 100% |  | Hess Andreas | 8h | 8h | (2) Initialization | PO-03.0500 | Requirements Management | medium | (2) Normal | Hess Andreas (KIRO 11) |  |
| 426 | 01.2.2.5.9.4 | Risk Management Support | 1d? | 2009-04-08 A | 2009-04-08 A |  | 100% |  | Hess Andreas | 8h | 8h | (2) Initialization | PO-03.0510 | Requirements Management | medium | (2) Normal | Hess Andreas (KIRO 11) |  |
| 427 | 01.2.2.5.10 | **Lifecycle Support & Maintenance** | 1d? | 2009-04-08 A | 2009-04-08 A |  | 100% |  |  | 40h | 40h | (2) Initialization | PO-03.0520 | Requirements Management | medium | (2) Normal |  |  |
| 428 | 01.2.2.5.10.1 | Maintain Project Filter & Linklist | 1d? | 2009-04-08 A | 2009-04-08 A |  | 100% |  | Hess Andreas | 8h | 8h | (2) Initialization | PO-03.0530 | Requirements Management | medium | (2) Normal | Hess Andreas (KIRO 11) |  |
| 429 | 01.2.2.5.10.2 | User Support | 1d? | 2009-04-08 A | 2009-04-08 A |  | 100% |  | Hess Andreas | 8h | 8h | (2) Initialization | PO-03.0540 | Requirements Management | medium | (2) Normal | Hess Andreas (KIRO 11) |  |
| 430 | 01.2.2.5.10.3 | User & Access Management | 1d? | 2009-04-08 A | 2009-04-08 A |  | 100% |  | Hess Andreas | 8h | 8h | (2) Initialization | PO-03.0550 | Requirements Management | medium | (2) Normal | Hess Andreas (KIRO 11) |  |
| 431 | 01.2.2.5.10.4 | JAP LifeCycle Issues & Defects | 1d? | 2009-04-08 A | 2009-04-08 A |  | 100% |  | Hess Andreas | 8h | 8h | (2) Initialization | PO-03.0560 | Requirements Management | medium | (2) Normal | Hess Andreas (KIRO 11) |  |
| 432 | 01.2.2.5.10.5 | Enhance JIRA with supplier delivery version number | 1d? | 2009-04-08 A | 2009-04-08 A |  | 100% |  | Hess Andreas | 8h | 8h | (2) Initialization | PO-03.0570 | Requirements Management | medium | (2) Normal | Hess Andreas (KIRO 11) |  |
| 433 | 01.2.2.5.11 | **Features and Requirements** | 15d | 2009-05-05 A | 2009-05-26 A |  | 100% |  |  | 240h | 240h | (2) Initialization | PO-03.0580 | Requirements Management | medium | (2) Normal |  |  |
| 434 | 01.2.2.5.11.1 | Define Features and Request | 0.75mo | 2009-05-05 A | 2009-05-26 A | 382 | 100% |  | Hess Andreas | 120h | 120h | (2) Initialization | PO-03.0590 | Requirements Management | medium | (2) Normal | Hess Andreas (KIRO 11) |  |
| 435 | 01.2.2.5.11.2 | Coordinate Features and Request definition | 0.75mo | 2009-05-05 A | 2009-05-26 A | 434SS | 100% |  | Hess Andreas | 120h | 120h | (2) Initialization | PO-03.0600 | Requirements Management | medium | (2) Normal | Hess Andreas (KIRO 11) |  |
| 436 | 01.2.2.5.12 | **PRB General Documents** | 14.93d? | 2009-06-15 A | 2009-07-06 A | 253 | 100% |  |  | 48h | 48h | (2) Initialization | PO-03.0610 | Requirements Management | medium | (2) Normal |  |  |
| 437 | 01.2.2.5.12.1 | Features and Requirements List (A) | 2w | 2009-06-22 A | 2009-07-06 A |  | 100% | as late as possible | Hess Andreas [10%] | 8h | 8h | (2) Initialization | PO-03.0620 | Requirements Management | medium | (2) Normal | Hess Andreas (KIRO 11) | IT-PV Phase Documents |
| 438 | 01.2.2.5.12.2 | Project Requirements List Template | 2w | 2009-06-22 A | 2009-07-06 A |  | 100% | as late as possible | Hess Andreas [10%] | 8h | 8h | (2) Initialization | PO-03.0630 | Requirements Management | medium | (2) Normal | Hess Andreas (KIRO 11) |  |

| ID | WBS | Task | Type | Duration | Start | Finish | Predecessors | Complete | Constraint | Resources | Work | Actual work | Cost | Actual cost | Text11 | Text12 | Text13 | Text23 | Text30 | Text25 | Text21 | Text19 |
| --- | --- | --- | --- | --- | --- | --- | --- | --- | --- | --- | --- | --- | --- | --- | --- | --- | --- | --- | --- | --- | --- | --- |
| 439 | 01.2.2.5.12.3 | **Reporting** |  | 1d? | 2009-06-15 A | 2009-06-16 A |  | 100% |  |  | 16h | 16h |  |  | (2) Initialization | PO-03.0640 | Requirements Management | medium | (2) Normal |  |  |  |
| 440 | 01.2.2.5.12.3.1 | Status Reporting |  | 1d? | 2009-06-15 A | 2009-06-16 A |  | 100% |  | Hess Andreas | 8h | 8h |  |  | (2) Initialization | PO-03.0650 | Requirements Management | medium | (2) Normal | Hess Andreas (KIRO 11) |  |  |
| 441 | 01.2.2.5.12.3.2 | Reporting Enhancements |  | 1d? | 2009-06-15 A | 2009-06-16 A |  | 100% |  | Hess Andreas | 8h | 8h |  |  | (2) Initialization | PO-03.0660 | Requirements Management | medium | (2) Normal | Hess Andreas (KIRO 11) |  |  |
| 442 | 01.2.2.5.12.4 | **PO Chapters** |  | 1d? | 2009-06-15 A | 2009-06-16 A |  | 100% |  |  | 16h | 16h |  |  | (2) Initialization | PO-03.0670 | Requirements Management | medium | (2) Normal |  |  |  |
| 443 | 01.2.2.5.12.4.1 | Platform Provisioning??? |  | 1d? | 2009-06-15 A | 2009-06-16 A |  | 100% |  | Hess Andreas | 8h | 8h |  |  | (2) Initialization | PO-03.0680 | Requirements Management | medium | (2) Normal | Hess Andreas (KIRO 11) |  |  |
| 444 | 01.2.2.5.12.4.2 | Lifecycle Enhancement??? |  | 1d? | 2009-06-15 A | 2009-06-16 A |  | 100% |  | Hess Andreas | 8h | 8h |  |  | (2) Initialization | PO-03.0690 | Requirements Management | medium | (2) Normal | Hess Andreas (KIRO 11) |  |  |
| 445 | 01.2.2.6 | **Stream Test Manager** |  | 69.5d? | 2009-04-08 A | 2009-07-14 A | 195 | 100% |  |  | 344h | 344h |  |  | (2) Initialization | PO-04.0000 | Test Management | medium | (2) Normal |  |  |  |
| 446 | 01.2.2.6.1 | Preparing of features acceptance criteria |  | 5.71w | 2009-04-08 A | 2009-05-18 A |  | 100% |  | Lackmann Ralph [70%] | 160h | 160h |  |  | (2) Initialization | PO-04.0010 | Test Management | medium | (2) Normal | Lackmann Ralph (KIRO 12) |  |  |
| 447 | 01.2.2.6.2 | **PRB Documents** |  | 5.97d? | 2009-06-26 A | 2009-07-06 A | 446 | 100% |  |  | 64h | 64h |  |  | (2) Initialization | PO-04.0020 | Test Management | medium | (2) Normal |  |  |  |
| 448 | 01.2.2.6.2.1 | Preparation of Test Quality Gate Checklist |  | 5.97d? | 2009-06-26 A | 2009-07-06 A |  | 100% | as late as possible | Lackmann Ralph [67%] | 32h | 32h |  |  | (2) Initialization | PO-04.0030 | Test Management | medium | (2) Normal | Lackmann Ralph (KIRO 12) |  |  |
| 449 | 01.2.2.6.2.2 | Test Service Request Template |  | 5.97d? | 2009-06-26 A | 2009-07-06 A |  | 100% | as late as possible | Lackmann Ralph [67%] | 32h | 32h |  |  | (2) Initialization | PO-04.0040 | Test Management | medium | (2) Normal | Lackmann Ralph (KIRO 12) |  |  |
| 450 | 1.2.2.6.3 | **Plan Testing** |  | 17d? | 2009-06-19 A | 2009-07-14 A |  | 100% |  |  | 120h | 120h |  |  | (2) Initialization | PO-04.0050 | Test Management | medium | (2) Normal |  |  |  |
| 451 | 1.2.2.6.3.1 | Define Test Requirements & Infrastructure needs |  | 5d? | 2009-07-07 A | 2009-07-14 A |  | 100% | as late as possible | Matthes Andreas | 40h | 40h |  |  | (2) Initialization | PO-04.0060 | Test Management | medium | (2) Normal | Matthes Andreas (KIRO 12) |  |  |
| 452 | 1.2.2.6.3.2 | Create Test Plan |  | 4d? | 2009-06-19 A | 2009-06-25 A |  | 100% | as late as possible | Matthes Andreas | 32h | 32h |  |  | (2) Initialization | PO-04.0070 | Test Management | medium | (2) Normal | Matthes Andreas (KIRO 12) |  |  |
| 453 | 1.2.2.6.3.3 | Create Test Schedule |  | 1d? | 2009-06-25 A | 2009-06-26 A | 452 | 100% | as late as possible | Matthes Andreas | 8h | 8h |  |  | (2) Initialization | PO-04.0080 | Test Management | medium | (2) Normal | Matthes Andreas (KIRO 12) |  |  |
| 454 | 1.2.2.6.3.4 | Execute Project review of test Plan & Schedule |  | 5d? | 2009-07-07 A | 2009-07-14 A | 453FS+7d | 100% | as late as possible | Matthes Andreas | 40h | 40h |  |  | (2) Initialization | PO-04.0090 | Test Management | medium | (2) Normal | Matthes Andreas (KIRO 12) |  |  |
| 455 | 1.2.2.6.4 | QGT_1 Test Scope (PO) | milestone | 0d | 2009-07-14 A | 2009-07-14 A | 454, 451 | 100% | as late as possible |  |  |  |  |  | (2) Initialization | PO-04.0100 | Test Management | medium | (2) Normal | Matthes Andreas (KIRO 12) |  |  |
| 456 | 01.2.2.7 | **Stream QMP** |  | 16.5d? | 2009-06-22 A | 2009-07-14 A |  | 100% |  |  | 686h | 686h | 56 | 56 | (2) Initialization | PO-05.0000 | Quality Management | medium | (2) Normal |  | PMO |  |
| 457 | 01.2.2.7.1 | **Clarify of Transparency List for the whole project** |  | 2.38d? | 2009-07-09 A | 2009-07-13 A | 361 | 100% |  | Koch Thomas; Dörsam Holger; Matthes Andreas; Participans; Zulliger Markus; Lackmann Ralph; Trindler Markus | 168h | 168h | 8 | 8 | (2) Initialization | PO-05.0010 | Quality Management | medium | (2) Normal |  | IT- Project Manager | Trindler Markus (KIRO 12) |
| 458 | 01.2.2.7.1.1 | Preparation of Transparency List for the whole project |  | 1d? | 2009-07-09 A | 2009-07-09 A |  | 100% |  | Polisano Riccardo | 8h | 8h |  |  | (2) Initialization | PO-05.0020 | Quality Management | medium | (2) Normal | Polisano Riccardo (KIRO 11) |  |  |
| 459 | 01.2.2.7.1.2 | Review Transparency List with Project Management |  | 8h | 2009-07-10 A | 2009-07-10 A | 458 | 100% | start no earlier than 2009-07-01 | Polisano Riccardo; Scheidegger Ruedi; Lüthi Rico F. | 24h | 24h | 8 | 8 | (2) Initialization | PO-05.0030 | Quality Management | medium | (2) Normal | Polisano Riccardo (KIRO 11) |  |  |
| 460 | 01.2.2.7.1.3 | Update Transparency List |  | 3h | 2009-07-13 A | 2009-07-13 A | 459 | 100% |  | Polisano Riccardo | 3h | 3h |  |  | (2) Initialization | PO-05.0040 | Quality Management | medium | (2) Normal | Polisano Riccardo (KIRO 11) |  |  |
| 461 | 01.2.2.7.2 | **Requirement Management** |  | 1d | 2009-07-06 A | 2009-07-07 A | 433, 436 | 100% |  |  | 24h | 24h |  |  | (2) Initialization | PO-05.0050 | Quality Management | medium | (2) Normal |  |  |  |
| 462 | 01.2.2.7.2.1 | Walk-through Feature and Requirements Acceptance Checklist |  | 2h | 2009-07-06 A | 2009-07-06 A |  | 100% |  | Polisano Riccardo; Hess Andreas; Scheidegger Ruedi | 6h | 6h |  |  | (2) Initialization | PO-05.0060 | Quality Management | medium | (2) Normal | Polisano Riccardo (KIRO 11) |  |  |
| 463 | 01.2.2.7.2.2 | Walk-through Features and Requirements List |  | 2h | 2009-07-07 A | 2009-07-07 A | 462 | 100% |  | Polisano Riccardo; Hess Andreas; Scheidegger Ruedi | 6h | 6h |  |  | (2) Initialization | PO-05.0070 | Quality Management | medium | (2) Normal | Polisano Riccardo (KIRO 11) |  |  |
| 464 | 01.2.2.7.2.3 | Walk-through Checklist of Requirement Traceability |  | 2h | 2009-07-07 A | 2009-07-07 A | 463 | 100% |  | Polisano Riccardo; Hess Andreas; Scheidegger Ruedi | 6h | 6h |  |  | (2) Initialization | PO-05.0080 | Quality Management | medium | (2) Normal | Polisano Riccardo (KIRO 11) |  |  |
| 465 | 01.2.2.7.2.4 | Walk-through Requirements Specification |  | 2h | 2009-07-07 A | 2009-07-07 A | 464 | 100% |  | Polisano Riccardo; Hess Andreas; Scheidegger Ruedi | 6h | 6h |  |  | (2) Initialization | PO-05.0090 | Quality Management | medium | (2) Normal | Polisano Riccardo (KIRO 11) |  |  |

Notes:
- 448: A. Matthes authored it to be ready for the PO.
- 449: Andreas Matthes edited it to be ready for the Milestone PO.
- 451: Workproduct: Test Environment Plan
- 452: Workproduct: Test Plan
- 453: Workproduct: Test Schedule
- 454: Workproduct: Review Report

| ID | WBS | Task | Duration | Start | Finish | Predecessors | Complete | Constraint | Resources | Work | Actual work | Cost | Actual cost | Text11 | Text12 | Text13 | Text23 | Text30 | Text21 | Text25 | Text27 | Text29 |
| --- | --- | --- | --- | --- | --- | --- | --- | --- | --- | --- | --- | --- | --- | --- | --- | --- | --- | --- | --- | --- | --- | --- |
| 466 | 01.2.2.7.3 | **PRB General Documents** | 10.25d | 2009-06-22 A | 2009-07-06 A | 253 | 100% |  |  | 80h | 80h |  |  | (2) Initialization | PO-05.0100 | Quality Management | medium | (2) Normal |  |  |  |  |
| 467 | 01.2.2.7.3.1 | Project Quality Assurance Evaluation Report | 0.6w | 2009-06-22 A | 2009-06-24 A |  | 100% | start no earlier than 2009-06-22 | Polisano Riccardo | 24h | 24h |  |  | (2) Initialization | PO-05.0110 | Quality Management | medium | (2) Normal | IT-PV Phase Documents | Polisano Riccardo (KIRO 11) |  |  |
| 468 | 01.2.2.7.3.2 | QMP Status Report | 0.6w | 2009-06-25 A | 2009-06-29 A | 467 | 100% | finish no earlier than 2009-06-29 | Polisano Riccardo | 24h | 24h |  |  | (2) Initialization | PO-05.0120 | Quality Management | medium | (2) Normal | IT-PV Phase Documents | Polisano Riccardo (KIRO 11) |  |  |
| 469 | 01.2.2.7.3.3 | Quality Assurance Plan | 0.6w | 2009-07-01 A | 2009-07-06 A | 468 | 100% | as late as possible | Polisano Riccardo | 24h | 24h |  |  | (2) Initialization | PO-05.0130 | Quality Management | medium | (2) Normal | IT-PV Phase Documents | Polisano Riccardo (KIRO 11) |  |  |
| 470 | 01.2.2.7.3.4 | Lessons Learned Report | 1d | 2009-07-03 A | 2009-07-03 A | 469 | 100% |  | Polisano Riccardo | 8h | 8h |  |  | (2) Initialization | PO-05.0140 | Quality Management | medium | (2) Normal |  | Polisano Riccardo (KIRO 11) |  |  |
| 471 | 01.2.2.7.4 | **Project Quality Management** | 3.25d | 2009-07-06 A | 2009-07-09 A | 466 | 100% |  |  | 388h | 388h | 48 | 48 | (2) Initialization | PO-05.0150 | Quality Management | medium | (2) Normal |  |  |  |  |
| 472 | 01.2.2.7.4.1 | Walk-through Project Charter | 2h | 2009-07-06 A | 2009-07-06 A |  | 100% | as late as possible | Polisano Riccardo; Scheidegger Ruedi | 4h | 4h |  |  | (2) Initialization | PO-05.0160 | Quality Management | medium | (2) Normal |  | Polisano Riccardo (KIRO 11) |  |  |
| 473 | 01.2.2.7.4.2 | Walk-through Project Organization | 2d | 2009-07-07 A | 2009-07-09 A |  | 100% | as late as possible | Polisano Riccardo; Scheidegger Ruedi | 32h | 32h |  |  | (2) Initialization | PO-05.0170 | Quality Management | medium | (2) Normal |  | Polisano Riccardo (KIRO 11) |  |  |
| 474 | 01.2.2.7.4.3 | Milestone Review Project Management Plan | 2d | 2009-07-07 A | 2009-07-09 A |  | 100% | as late as possible | Polisano Riccardo; Scheidegger Ruedi | 32h | 32h |  |  | (2) Initialization | PO-05.0180 | Quality Management | medium | (2) Normal |  | Polisano Riccardo (KIRO 11) |  |  |
| 475 | 01.2.2.7.4.4 | Walktrough Communication Plan | 2d | 2009-07-07 A | 2009-07-09 A |  | 100% | as late as possible | Polisano Riccardo; Scheidegger Ruedi | 32h | 32h |  |  | (2) Initialization | PO-05.0190 | Quality Management | medium | (2) Normal |  | Polisano Riccardo (KIRO 11) |  |  |
| 476 | 01.2.2.7.4.5 | Milestone Review MS Project Schedule | 2d | 2009-07-07 A | 2009-07-09 A |  | 100% | as late as possible | Polisano Riccardo; Scheidegger Ruedi | 32h | 32h |  |  | (2) Initialization | PO-05.0200 | Quality Management | medium | (2) Normal |  | Polisano Riccardo (KIRO 11) |  |  |
| 477 | 01.2.2.7.4.6 | Milestone Review Risk Management Plan | 2d | 2009-07-07 A | 2009-07-09 A |  | 100% | as late as possible | Polisano Riccardo; Scheidegger Ruedi | 32h | 32h |  |  | (2) Initialization | PO-05.0210 | Quality Management | medium | (2) Normal |  | Polisano Riccardo (KIRO 11) |  |  |
| 478 | 01.2.2.7.4.7 | Walk-through Quality Assurance Plan | 2d | 2009-07-07 A | 2009-07-09 A |  | 100% | as late as possible | Polisano Riccardo; Scheidegger Ruedi | 32h | 32h |  |  | (2) Initialization | PO-05.0220 | Quality Management | medium | (2) Normal |  | Polisano Riccardo (KIRO 11) |  |  |
| 479 | 01.2.2.7.4.8 | Walk-through Action Item Issue Escalation Tracker | 2d | 2009-07-07 A | 2009-07-09 A |  | 100% | as late as possible | Polisano Riccardo; Scheidegger Ruedi | 32h | 32h |  |  | (2) Initialization | PO-05.0230 | Quality Management | medium | (2) Normal |  | Polisano Riccardo (KIRO 11) |  |  |
| 480 | 01.2.2.7.4.9 | Walk-through Measurement Report | 2d | 2009-07-07 A | 2009-07-09 A |  | 100% | as late as possible | Polisano Riccardo; Scheidegger Ruedi | 32h | 32h |  |  | (2) Initialization | PO-05.0240 | Quality Management | medium | (2) Normal |  | Polisano Riccardo (KIRO 11) |  |  |
| 481 | 01.2.2.7.4.10 | Walk-through Deviation Register | 2d | 2009-07-07 A | 2009-07-09 A |  | 100% | as late as possible | Polisano Riccardo; Scheidegger Ruedi | 32h | 32h |  |  | (2) Initialization | PO-05.0250 | Quality Management | medium | (2) Normal |  | Polisano Riccardo (KIRO 11) |  |  |
| 482 | 01.2.2.7.4.11 | Configuration Audit Configuration Mgmt Plan | 2d | 2009-07-07 A | 2009-07-09 A |  | 100% | as late as possible | Polisano Riccardo; Lüthi Rico F. | 32h | 32h | 16 | 16 | (2) Initialization | PO-05.0260 | Quality Management | medium | (2) Normal |  | Polisano Riccardo (KIRO 11) |  |  |
| 483 | 01.2.2.7.4.12 | Configuration Audit Configuration Items List | 2d | 2009-07-07 A | 2009-07-09 A |  | 100% | as late as possible | Polisano Riccardo; Lüthi Rico F. | 32h | 32h | 16 | 16 | (2) Initialization | PO-05.0270 | Quality Management | medium | (2) Normal |  | Polisano Riccardo (KIRO 11) |  |  |
| 484 | 01.2.2.7.4.13 | Configuration Audit Baseline Records | 2d | 2009-07-06 A | 2009-07-08 A |  | 100% |  | Polisano Riccardo; Lüthi Rico F. | 32h | 32h | 16 | 16 | (2) Initialization | PO-05.0280 | Quality Management | medium | (2) Normal |  | Polisano Riccardo (KIRO 11) |  |  |
| 485 | 01.2.2.7.5 | **PRB General Document's checklists** | 3.25d? | 2009-07-09 A | 2009-07-14 A | 253, 471 | 100% |  |  | 26h | 26h |  |  | (2) Initialization | PO-05.0290 | Quality Management | medium | (2) Normal | IT-PV Phase Documents |  |  |  |
| 486 | 01.2.2.7.5.1 | Checklist for Acquisition | 2h | 2009-07-09 A | 2009-07-09 A |  | 100% |  |  | 2h | 2h |  |  | (2) Initialization | PO-05.0300 | Quality Management | medium | (2) Normal |  |  |  |  |
| 487 | 01.2.2.7.5.2 | Configuration Audit Report (A/P) | 2h | 2009-07-09 A | 2009-07-09 A | 486 | 100% | as late as possible | Polisano Riccardo | 2h | 2h |  |  | (2) Initialization | PO-05.0310 | Quality Management | medium | (2) Normal | IT-PV Phase Documents | Polisano Riccardo (KIRO 11) | QAP | ITPL |
| 488 | 01.2.2.7.5.3 | Milestone Review Checklist (P) | 2h | 2009-07-09 A | 2009-07-09 A | 487 | 100% | as late as possible | Polisano Riccardo | 2h | 2h |  |  | (2) Initialization | PO-05.0320 | Quality Management | medium | (2) Normal | IT-PV Phase Documents | Polisano Riccardo (KIRO 11) | QAP | ITPL |
| 489 | 01.2.2.7.5.4 | Walkthrough Change Request & Change Request List | 2h | 2009-07-10 A | 2009-07-10 A | 488 | 100% |  | Polisano Riccardo | 2h | 2h |  |  | (2) Initialization | PO-05.0330 | Quality Management | medium | (2) Normal |  | Polisano Riccardo (KIRO 11) |  |  |
| 490 | 01.2.2.7.5.5 | Test Quality Gate Checklist | 1d? | 2009-07-10 A | 2009-07-13 A | 489 | 100% |  | Polisano Riccardo | 8h | 8h |  |  | (2) Initialization | PO-05.0340 | Quality Management | medium | (2) Normal |  | Polisano Riccardo (KIRO 11) |  |  |
| 491 | 01.2.2.7.5.6 | PMC Plan and Tracker (P) | 2h | 2009-07-13 A | 2009-07-13 A | 490 | 100% | as late as possible | Polisano Riccardo | 2h | 2h |  |  | (2) Initialization | PO-05.0350 | Quality Management | medium | (2) Normal | IT-PV Phase Documents | Polisano Riccardo (KIRO 11) |  |  |
| 492 | 01.2.2.7.5.7 | Project Management Plan Review Checklist (P) | 2h | 2009-07-13 A | 2009-07-13 A | 491 | 100% | as late as possible | Polisano Riccardo | 2h | 2h |  |  | (2) Initialization | PO-05.0360 | Quality Management | medium | (2) Normal | IT-PV Phase Documents | Polisano Riccardo (KIRO 11) | QAP | ITPL |
| 493 | 01.2.2.7.5.8 | Project Quality Check Template | 2h | 2009-07-13 A | 2009-07-13 A | 492 | 100% |  | Polisano Riccardo | 2h | 2h |  |  | (2) Initialization | PO-05.0370 | Quality Management | medium | (2) Normal |  | Polisano Riccardo (KIRO 11) |  |  |
| 494 | 01.2.2.7.5.9 | QAS Review-Checklist/-Report (P) | 2h | 2009-07-14 A | 2009-07-14 A | 493 | 100% | as late as possible | Polisano Riccardo | 2h | 2h |  |  | (2) Initialization | PO-05.0380 | Quality Management | medium | (2) Normal | IT-PV Phase Documents | Polisano Riccardo (KIRO 11) | QAP | ITPL |
| 495 | 01.2.2.7.5.10 | PRB Readiness Checklist | 2h | 2009-07-14 A | 2009-07-14 A | 494 | 100% |  | Polisano Riccardo | 2h | 2h |  |  | (2) Initialization | PO-05.0390 | Quality Management | medium | (2) Normal |  | Polisano Riccardo (KIRO 11) |  |  |

Notes:
- 471: We didn't perform any Lessons Learned Session.

| ID | WBS | Task | Duration | Start | Finish | Predecessors | Complete | Resources | Work | Actual work | Text11 | Text12 | Text13 | Text23 | Text30 | Text21 | Text25 |
| --- | --- | --- | --- | --- | --- | --- | --- | --- | --- | --- | --- | --- | --- | --- | --- | --- | --- |
| 496 | 01.2.2.8 | **Project Architecture & Concepts** | 65.49d? | 2009-04-08 A | 2009-07-08 A | 195 | 100% |  | 424h | 424h | (2) Initialization | PO-06.0000 | Stream Lead Architecture | medium | (2) Normal |  |  |
| 497 | 01.2.2.8.1 | **Planning of Initialization Phase** | 52.25d? | 2009-04-08 A | 2009-06-19 A |  | 100% |  | 96h | 96h | (2) Initialization | PO-06.0010 | Stream Lead Architecture | medium | (2) Normal | PMO |  |
| 498 | 01.2.2.8.1.1 | Create first version of Work Packages for Architecture | 50d | 2009-04-08 A | 2009-06-16 A |  | 100% | Trindler Markus [20%] | 80h | 80h | (2) Initialization | PO-06.0020 | Stream Lead Architecture | medium | (2) Normal |  | Trindler Markus (KIRO 12) |
| 499 | 01.2.2.8.1.2 | Update Stream Planning an prepare tracking and reporting | 2d? | 2009-06-17 A | 2009-06-19 A | 243 | 100% | Trindler Markus | 16h | 16h | (2) Initialization | PO-06.0030 | Stream Lead Architecture | medium | (2) Normal |  | Trindler Markus (KIRO 12) |
| 500 | 01.2.2.8.2 | **Features and Requirements** | 2d? | 2009-06-19 A | 2009-06-23 A | 497 | 100% |  | 248h | 248h | (2) Initialization | PO-06.0040 | Stream Lead Architecture | medium | (2) Normal |  |  |
| 501 | 01.2.2.8.2.1 | **for all Business request assigned to AO** | 2d? | 2009-06-19 A | 2009-06-23 A |  | 100% |  | 112h | 112h | (2) Initialization | PO-06.0050 | Stream Lead Architecture | medium | (2) Normal |  |  |
| 502 | 01.2.2.8.2.1.1 | **Define Scope** | 1d? | 2009-06-19 A | 2009-06-22 A |  | 100% |  | 32h | 32h | (2) Initialization | PO-06.0060 | Stream Lead Architecture | medium | (2) Normal |  |  |
| 503 | 01.2.2.8.2.1.1.1 | prepare list with open issues and required decisions | 1d? | 2009-06-19 A | 2009-06-22 A |  | 100% | Trindler Markus | 8h | 8h | (2) Initialization | PO-06.0070 | Stream Lead Architecture | medium | (2) Normal |  | Trindler Markus (KIRO 12) |
| 504 | 01.2.2.8.2.1.1.2 | get outstanding decisions | 1d? | 2009-06-19 A | 2009-06-22 A |  | 100% | Trindler Markus | 8h | 8h | (2) Initialization | PO-06.0080 | Stream Lead Architecture | medium | (2) Normal |  | Trindler Markus (KIRO 12) |
| 505 | 01.2.2.8.2.1.1.3 | prepare scope changes for STC | 1d? | 2009-06-19 A | 2009-06-22 A |  | 100% | Trindler Markus | 8h | 8h | (2) Initialization | PO-06.0090 | Stream Lead Architecture | medium | (2) Normal |  | Trindler Markus (KIRO 12) |
| 506 | 01.2.2.8.2.1.1.4 | describe scope changes for PRB (Project offer) | 1d? | 2009-06-19 A | 2009-06-22 A |  | 100% | Trindler Markus | 8h | 8h | (2) Initialization | PO-06.0100 | Stream Lead Architecture | medium | (2) Normal |  | Trindler Markus (KIRO 12) |
| 507 | 01.2.2.8.2.1.2 | **Analyze Features** | 1d? | 2009-06-19 A | 2009-06-22 A |  | 100% |  | 48h | 48h | (2) Initialization | PO-06.0110 | Stream Lead Architecture | medium | (2) Normal |  |  |
| 508 | 01.2.2.8.2.1.2.1 | reduce feature to minimum required | 1d? | 2009-06-19 A | 2009-06-22 A |  | 100% | Trindler Markus | 8h | 8h | (2) Initialization | PO-06.0120 | Stream Lead Architecture | medium | (2) Normal |  | Trindler Markus (KIRO 12) |
| 509 | 01.2.2.8.2.1.2.2 | estimate analysis effort required for this phase | 1d? | 2009-06-19 A | 2009-06-22 A |  | 100% | Trindler Markus | 8h | 8h | (2) Initialization | PO-06.0130 | Stream Lead Architecture | medium | (2) Normal |  | Trindler Markus (KIRO 12) |
| 510 | 01.2.2.8.2.1.2.3 | document remaining feature | 1d? | 2009-06-19 A | 2009-06-22 A |  | 100% | Trindler Markus | 8h | 8h | (2) Initialization | PO-06.0140 | Stream Lead Architecture | medium | (2) Normal |  | Trindler Markus (KIRO 12) |
| 511 | 01.2.2.8.2.1.2.4 | link feature to business request | 1d? | 2009-06-19 A | 2009-06-22 A |  | 100% | Trindler Markus | 8h | 8h | (2) Initialization | PO-06.0150 | Stream Lead Architecture | medium | (2) Normal |  | Trindler Markus (KIRO 12) |
| 512 | 01.2.2.8.2.1.2.5 | derive requirements required to implement feature functionality documented | 1d? | 2009-06-19 A | 2009-06-22 A |  | 100% | Trindler Markus | 8h | 8h | (2) Initialization | PO-06.0160 | Stream Lead Architecture | medium | (2) Normal |  | Trindler Markus (KIRO 12) |
| 513 | 01.2.2.8.2.1.2.6 | estimate AO effort for design phase | 1d? | 2009-06-19 A | 2009-06-22 A |  | 100% | Trindler Markus | 8h | 8h | (2) Initialization | PO-06.0170 | Stream Lead Architecture | medium | (2) Normal |  | Trindler Markus (KIRO 12) |
| 514 | 01.2.2.8.2.1.3 | **Alignment of Requirements** | 1d? | 2009-06-22 A | 2009-06-23 A | 502 | 100% |  | 32h | 32h | (2) Initialization | PO-06.0180 | Stream Lead Architecture | medium | (2) Normal |  |  |
| 515 | 01.2.2.8.2.1.3.1 | clean up existing requirements | 1d? | 2009-06-22 A | 2009-06-23 A |  | 100% | Trindler Markus | 8h | 8h | (2) Initialization | PO-06.0190 | Stream Lead Architecture | medium | (2) Normal |  | Trindler Markus (KIRO 12) |
| 516 | 01.2.2.8.2.1.3.2 | analyze remaining requirements | 1d? | 2009-06-22 A | 2009-06-23 A |  | 100% | Trindler Markus | 8h | 8h | (2) Initialization | PO-06.0200 | Stream Lead Architecture | medium | (2) Normal |  | Trindler Markus (KIRO 12) |
| 517 | 01.2.2.8.2.1.3.3 | link requirements to feature | 1d? | 2009-06-22 A | 2009-06-23 A |  | 100% | Trindler Markus | 8h | 8h | (2) Initialization | PO-06.0210 | Stream Lead Architecture | medium | (2) Normal |  | Trindler Markus (KIRO 12) |
| 518 | 01.2.2.8.2.1.3.4 | assign requirements to supplier for impact analysis | 1d? | 2009-06-22 A | 2009-06-23 A |  | 100% | Trindler Markus | 8h | 8h | (2) Initialization | PO-06.0220 | Stream Lead Architecture | medium | (2) Normal |  | Trindler Markus (KIRO 12) |
| 519 | 01.2.2.8.2.2 | **BR assigned to AO** | 1d? | 2009-06-19 A | 2009-06-22 A |  | 100% |  | 136h | 136h | (2) Initialization | PO-06.0230 | Stream Lead Architecture | medium | (2) Normal |  |  |
| 520 | 01.2.2.8.2.2.1 | JAPREQM-2260 Business Rule Management System | 1d? | 2009-06-19 A | 2009-06-22 A |  | 100% | Trindler Markus | 8h | 8h | (2) Initialization | PO-06.0240 | Stream Lead Architecture | medium | (2) Normal |  | Trindler Markus (KIRO 12) |
| 521 | 01.2.2.8.2.2.2 | JAPREQM-2194 Deployment Environment Maintenance | 1d? | 2009-06-19 A | 2009-06-22 A |  | 100% | Bennek Robert | 8h | 8h | (2) Initialization | PO-06.0250 | Stream Lead Architecture | medium | (2) Normal |  | Bennek Robert (KIRO 14) |
| 522 | 01.2.2.8.2.2.3 | JAPREQM-2171 Security Enhancement | 1d? | 2009-06-19 A | 2009-06-22 A |  | 100% | Hermann René | 8h | 8h | (2) Initialization | PO-06.0260 | Stream Lead Architecture | medium | (2) Normal |  | Herrmann René (KIRO 12) |
| 523 | 01.2.2.8.2.2.4 | JAPREQM-2132 Persistency Enhancement | 1d? | 2009-06-19 A | 2009-06-22 A |  | 100% | Neumann Gabriele | 8h | 8h | (2) Initialization | PO-06.0270 | Stream Lead Architecture | medium | (2) Normal |  | Neumann Gabriele (KIRO 14) |
| 524 | 01.2.2.8.2.2.5 | JAPREQM-2115 RTP & ECO System Enhancement | 1d? | 2009-06-19 A | 2009-06-22 A |  | 100% | Trindler Markus | 8h | 8h | (2) Initialization | PO-06.0280 | Stream Lead Architecture | medium | (2) Normal |  | Trindler Markus (KIRO 12) |
| 525 | 01.2.2.8.2.2.6 | JAPREQM-2016 Workflow Integration | 1d? | 2009-06-19 A | 2009-06-22 A |  | 100% | Trindler Markus | 8h | 8h | (2) Initialization | PO-06.0290 | Stream Lead Architecture | medium | (2) Normal |  | Trindler Markus (KIRO 12) |
| 526 | 01.2.2.8.2.2.7 | JAPREQM-2014 International Enhancement | 1d? | 2009-06-19 A | 2009-06-22 A |  | 100% | Bennek Robert | 8h | 8h | (2) Initialization | PO-06.0300 | Stream Lead Architecture | medium | (2) Normal |  | Bennek Robert (KIRO 14) |
| 527 | 01.2.2.8.2.2.8 | JAPREQM-2013 Monitoring Enhancement | 1d? | 2009-06-19 A | 2009-06-22 A |  | 100% | Trindler Markus | 8h | 8h | (2) Initialization | PO-06.0310 | Stream Lead Architecture | medium | (2) Normal |  | Trindler Markus (KIRO 12) |
| 528 | 01.2.2.8.2.2.9 | JAPREQM-2011 Development Environment | 1d? | 2009-06-19 A | 2009-06-22 A |  | 100% | Bennek Robert | 8h | 8h | (2) Initialization | PO-06.0320 | Stream Lead Architecture | medium | (2) Normal |  | Bennek Robert (KIRO 14) |
| 529 | 01.2.2.8.2.2.10 | JAPREQM-2010 Bulk Services Enhancement | 1d? | 2009-06-19 A | 2009-06-22 A |  | 100% | Neumann Gabriele | 8h | 8h | (2) Initialization | PO-06.0330 | Stream Lead Architecture | medium | (2) Normal |  | Neumann Gabriele (KIRO 14) |
| 530 | 01.2.2.8.2.2.11 | JAPREQM-2009 Batch Enhancement | 1d? | 2009-06-19 A | 2009-06-22 A |  | 100% | Neumann Gabriele | 8h | 8h | (2) Initialization | PO-06.0340 | Stream Lead Architecture | medium | (2) Normal |  | Neumann Gabriele (KIRO 14) |
| 531 | 01.2.2.8.2.2.12 | JAPREQM-2008 Asynchronous Services Enhancement | 1d? | 2009-06-19 A | 2009-06-22 A |  | 100% | Bennek Robert | 8h | 8h | (2) Initialization | PO-06.0350 | Stream Lead Architecture | medium | (2) Normal |  | Bennek Robert (KIRO 14) |
| 532 | 01.2.2.8.2.2.13 | JAPREQM-2006 Portal Enhancement | 1d? | 2009-06-19 A | 2009-06-22 A |  | 100% | Neumann Gabriele | 8h | 8h | (2) Initialization | PO-06.0360 | Stream Lead Architecture | medium | (2) Normal |  | Neumann Gabriele (KIRO 14) |
| 533 | 01.2.2.8.2.2.14 | JAPREQM-2005 SOA | 1d? | 2009-06-19 A | 2009-06-22 A |  | 100% | Bennek Robert | 8h | 8h | (2) Initialization | PO-06.0370 | Stream Lead Architecture | medium | (2) Normal |  | Bennek Robert (KIRO 14) |
| 534 | 01.2.2.8.2.2.15 | JAPREQM-2004 Synchronous Services Enhancement | 1d? | 2009-06-19 A | 2009-06-22 A |  | 100% | Bennek Robert | 8h | 8h | (2) Initialization | PO-06.0380 | Stream Lead Architecture | medium | (2) Normal |  | Bennek Robert (KIRO 14) |
| 535 | 01.2.2.8.2.2.16 | JAPREQM-2003 Deployment Environment Enhancement | 1d? | 2009-06-19 A | 2009-06-22 A |  | 100% | Bennek Robert | 8h | 8h | (2) Initialization | PO-06.0390 | Stream Lead Architecture | medium | (2) Normal |  | Bennek Robert (KIRO 14) |
| 536 | 01.2.2.8.2.2.17 | JAPREQM-2002 Transaction Platform | 1d? | 2009-06-19 A | 2009-06-22 A |  | 100% | Trindler Markus | 8h | 8h | (2) Initialization | PO-06.0400 | Stream Lead Architecture | medium | (2) Normal |  | Trindler Markus (KIRO 12) |

| ID | WBS | Task | Type | Duration | Start | Finish | Predecessors | Complete | Constraint | Resources | Work | Actual work | Text11 | Text12 | Text13 | Text23 | Text30 | Text25 | Text21 | Text20 |
| --- | --- | --- | --- | --- | --- | --- | --- | --- | --- | --- | --- | --- | --- | --- | --- | --- | --- | --- | --- | --- |
| 537 | 01.2.2.8.4 | **PO Chapters** |  | 16.67d | 2009-06-15 A | 2009-07-08 A |  | 100% |  |  | 80h | 80h | (2) Initialization | PO-06.0440 | Stream Lead Architecture | medium | (2) Normal |  |  |  |
| 538 | 01.2.2.8.4.1 | Several Chapters |  | 3.33w | 2009-06-15 A | 2009-07-08 A | 253 | 100% |  | Trindler Markus [60%] | 80h | 80h | (2) Initialization | PO-06.0450 | Stream Lead Architecture | medium | (2) Normal | Trindler Markus (KIRO 12) |  |  |
| 539 | 01.2.2.9 | **Project JAP Integration** |  | 58.82d? | 2009-04-08 A | 2009-06-29 A | 195 | 100% |  |  | 64h | 64h | (2) Initialization | PO-07.0000 | Stream Lead JAP Integration | medium | (2) Normal |  |  |  |
| 540 | 01.2.2.9.1 | **Planning of Initialization Phase** |  | 52.25d? | 2009-04-08 A | 2009-06-19 A |  | 100% |  |  | 32h | 32h | (2) Initialization | PO-07.0010 | Stream Lead JAP Integration | medium | (2) Normal |  | PMO |  |
| 541 | 01.2.2.9.1.1 | Create first version of Work Packages for Stream Project Support |  | 2d | 2009-04-08 A | 2009-04-09 A |  | 100% |  | Lackmann Ralph | 16h | 16h | (2) Initialization | PO-07.0020 | Stream Lead JAP Integration | medium | (2) Normal | Lackmann Ralph (KIRO 12) |  |  |
| 542 | 01.2.2.9.1.2 | Update Sream Planning an preare tracking and reporting |  | 2d? | 2009-06-17 A | 2009-06-19 A | 243 | 100% |  | Lackmann Ralph | 16h | 16h | (2) Initialization | PO-07.0030 | Stream Lead JAP Integration | medium | (2) Normal | Lackmann Ralph (KIRO 12) |  |  |
| 543 | 01.2.2.9.2 | **PRB General Documents** |  | 10d | 2009-06-15 A | 2009-06-29 A | 253 | 100% |  |  | 32h | 32h | (2) Initialization | PO-07.0040 | Stream Lead JAP Integration | medium | (2) Normal |  |  |  |
| 544 | 01.2.2.9.2.2 | Internal Agreement [Supplier Agreement Management] |  | 2w | 2009-06-15 A | 2009-06-29 A |  | 100% |  | Lackmann Ralph [20%] | 16h | 16h | (2) Initialization | PO-07.0060 | Stream Lead JAP Integration | medium | (2) Normal | Lackmann Ralph (KIRO 12) |  |  |
| 545 | 01.2.2.9.2.4 | Organizational Solution Concept |  | 2w | 2009-06-15 A | 2009-06-29 A |  | 100% |  | Lackmann Ralph [20%] | 16h | 16h | (2) Initialization | PO-07.0080 | Stream Lead JAP Integration | medium | (2) Normal | Lackmann Ralph (KIRO 12) | IT-PV Phase Documents |  |
| 546 | 01.2.2.10 | **Project JAP Engineering** |  | 81d? | 2009-04-08 A | 2009-07-29 A | 195 | 100% |  |  | 1752h | 1752h | (2) Initialization | PO-08.0000 | Stream Lead JAP Engineering | medium | (2) Normal |  |  |  |
| 547 | 01.2.2.10.1 | **Planning of Initialization Phase** |  | 52.25d? | 2009-04-08 A | 2009-06-19 A |  | 100% |  |  | 32h | 32h | (2) Initialization | PO-08.0010 | Stream Lead JAP Engineering | medium | (2) Normal |  | PMO |  |
| 548 | 01.2.2.10.1.1 | Create first version of Work Packages for Stream JAP Engineering |  | 2d | 2009-04-08 A | 2009-04-09 A |  | 100% |  | Telgheider Jörg | 16h | 16h | (2) Initialization | PO-08.0020 | Stream Lead JAP Engineering | medium | (2) Normal | Telgheider Jörg (KIRO 5) |  |  |
| 549 | 01.2.2.10.1.2 | Update Stream Planning an prepare tracking and reporting |  | 2d? | 2009-06-17 A | 2009-06-19 A | 243 | 100% |  | Telgheider Jörg | 16h | 16h | (2) Initialization | PO-08.0030 | Stream Lead JAP Engineering | medium | (2) Normal | Telgheider Jörg (KIRO 5) |  |  |
| 550 | 01.2.2.10.2 | **OT 4.0** |  | 54d? | 2009-05-15 A | 2009-07-29 A |  | 100% |  |  | 320h | 320h | (2) Initialization | PO-08.0040 | Stream Lead JAP Engineering | medium | (2) Normal |  |  |  |
| 551 | 01.2.2.10.2.1 | Analyze requirements |  | 54d? | 2009-05-15 A | 2009-07-29 A |  | 100% | finish no earlier than 2009-07-29 | Janosevic Dejan [55.6%] | 240h | 240h | (2) Initialization | PO-08.0050 | Stream Lead JAP Engineering | medium | (2) Normal | Janosevic Dejan (KIRO 52) |  | 20 |
| 552 | 01.2.2.10.2.2 | First implementations |  | 54d? | 2009-05-15 A | 2009-07-29 A |  | 100% | start no earlier than 2009-05-15 | Janosevic Dejan [18.5%] | 80h | 80h | (2) Initialization | PO-08.0060 | Stream Lead JAP Engineering | medium | (2) Normal | Janosevic Dejan (KIRO 52) |  |  |
| 553 | 01.2.2.10.2.3 | Requirements are analyzed | milestone | 0d | 2009-07-29 A | 2009-07-29 A |  | 100% | start no earlier than 2009-07-29 |  |  |  | (2) Initialization | PO-08.0070 | Stream Lead JAP Engineering | medium | (2) Normal |  |  |  |
| 554 | 01.2.2.10.3 | **VCoP 6.0** |  | 53d? | 2009-05-15 A | 2009-07-28 A |  | 100% |  |  | 200h | 200h | (2) Initialization | PO-08.0080 | Stream Lead JAP Engineering | medium | (2) Normal |  |  |  |
| 555 | 01.2.2.10.3.1 | Analyze requirements |  | 53d? | 2009-05-15 A | 2009-07-28 A |  | 100% | as late as possible | Thurner Rubert [28.3%] | 120h | 120h | (2) Initialization | PO-08.0090 | Stream Lead JAP Engineering | medium | (2) Normal | Thurner Rupert (KIRO 51) |  |  |
| 556 | 01.2.2.10.3.2 | First implementations |  | 53d? | 2009-05-15 A | 2009-07-28 A |  | 100% | finish no earlier than 2009-07-29 | Thurner Rubert [18.9%] | 80h | 80h | (2) Initialization | PO-08.0100 | Stream Lead JAP Engineering | medium | (2) Normal | Thurner Rupert (KIRO 51) |  |  |
| 557 | 01.2.2.10.4 | **Central Manager 6.0** |  | 53d? | 2009-05-15 A | 2009-07-29 A |  | 100% |  |  | 120h | 120h | (2) Initialization | PO-08.0110 | Stream Lead JAP Engineering | medium | (2) Normal |  |  |  |
| 558 | 01.2.2.10.4.1 | Analyze requirements |  | 53d? | 2009-05-15 A | 2009-07-28 A |  | 100% | finish no earlier than 2009-07-29 | Thurner Rubert [18.9%] | 80h | 80h | (2) Initialization | PO-08.0120 | Stream Lead JAP Engineering | medium | (2) Normal | Thurner Rupert (KIRO 51) |  |  |
| 559 | 01.2.2.10.4.2 | First implementations |  | 53d? | 2009-05-15 A | 2009-07-28 A |  | 100% | finish no earlier than 2009-07-29 | Thurner Rubert [9.4%] | 40h | 40h | (2) Initialization | PO-08.0130 | Stream Lead JAP Engineering | medium | (2) Normal | Thurner Rupert (KIRO 51) |  |  |
| 560 | 01.2.2.10.4.3 | Future approach of CM is agreed | milestone | 0d | 2009-07-29 A | 2009-07-29 A |  | 100% | start no earlier than 2009-07-29 |  |  |  | (2) Initialization | PO-08.0140 | Stream Lead JAP Engineering | medium | (2) Normal |  |  |  |

Notes:
- 544: Chapter 2 reworked / Chapter 8 started
- 545: As agreed with JAP Operations this document is not needed.

| ID | WBS | Task | Type | Duration | Start | Finish | Predecessors | Complete | Constraint | Resources | Work | Actual work | Cost | Actual cost | Text11 | Text12 | Text13 | Text23 | Text30 | Text25 | Text20 | Text21 | Text19 |
| --- | --- | --- | --- | --- | --- | --- | --- | --- | --- | --- | --- | --- | --- | --- | --- | --- | --- | --- | --- | --- | --- | --- | --- |
| 561 | 01.2.2.10.5 | **QMB 7.0** |  | 54d? | 2009-05-15 A | 2009-07-29 A |  | 100% |  |  | 320h | 320h |  |  | (2) Initialization | PO-08.0150 | Stream Lead JAP Engineering | medium | (2) Normal |  |  |  |  |
| 562 | 01.2.2.10.5.1 | Prototyping |  | 54d? | 2009-05-15 A | 2009-07-29 A |  | 100% | finish no earlier than 2009-07-29 | Paulicke Stephan [37%] | 160h | 160h |  |  | (2) Initialization | PO-08.0160 | Stream Lead JAP Engineering | medium | (2) Normal | Paulicke Stephan (KIRO 51) |  |  |  |
| 563 | 01.2.2.10.5.2 | First implementations |  | 54d? | 2009-05-15 A | 2009-07-29 A |  | 100% | finish no earlier than 2009-07-29 | Paulicke Stephan [27.8%] | 120h | 120h |  |  | (2) Initialization | PO-08.0170 | Stream Lead JAP Engineering | medium | (2) Normal | Paulicke Stephan (KIRO 51) |  |  |  |
| 564 | 01.2.2.10.5.3 | Prototype result supports solution & implementation efficiently | milestone | 0d | 2009-07-29 A | 2009-07-29 A |  | 100% | finish no earlier than 2009-07-29 |  |  |  |  |  | (2) Initialization | PO-08.0180 | Stream Lead JAP Engineering | medium | (2) Normal |  |  |  |  |
| 565 | 01.2.2.10.5.4 | First implementations |  | 54d? | 2009-05-15 A | 2009-07-29 A |  | 100% | finish no earlier than 2009-07-29 | Singh Kulbir [9.3%] | 40h | 40h |  |  | (2) Initialization | PO-08.0190 | Stream Lead JAP Engineering | medium | (2) Normal | Singh Kulbir (KIRY 22) |  |  |  |
| 566 | 01.2.2.10.6 | **Testapp 22 / Refapp 20** |  | 54d? | 2009-05-15 A | 2009-07-29 A |  | 100% |  |  | 120h | 120h |  |  | (2) Initialization | PO-08.0200 | Stream Lead JAP Engineering | medium | (2) Normal |  |  |  |  |
| 567 | 01.2.2.10.6.1 | Analyze requirements |  | 54d? | 2009-05-15 A | 2009-07-29 A |  | 100% | start no earlier than 2009-05-15 | Paulicke Stephan [18.5%] | 80h | 80h |  |  | (2) Initialization | PO-08.0210 | Stream Lead JAP Engineering | medium | (2) Normal | Paulicke Stephan (KIRO 51) |  |  |  |
| 568 | 01.2.2.10.6.2 | First implementations |  | 54d? | 2009-05-15 A | 2009-07-29 A |  | 100% | start no earlier than 2009-05-15 | Muthuirulappan Vijayalakshmi [9.3%] | 40h | 40h |  |  | (2) Initialization | PO-08.0220 | Stream Lead JAP Engineering | medium | (2) Normal | Muthuirulappan Vijayalakshmi (KIRO 51) |  |  |  |
| 569 | 01.2.2.10.7 | **Central Build Server 6.0** |  | 54d? | 2009-05-15 A | 2009-07-29 A |  | 100% |  |  | 120h | 120h |  |  | (2) Initialization | PO-08.0230 | Stream Lead JAP Engineering | medium | (2) Normal |  |  |  |  |
| 570 | 01.2.2.10.7.1 | First implementations |  | 54d? | 2009-05-15 A | 2009-07-29 A |  | 100% | start no earlier than 2009-05-15 | Piol Domenico [9.3%] | 40h | 40h |  |  | (2) Initialization | PO-08.0240 | Stream Lead JAP Engineering | medium | (2) Normal | Piol Domenico (KIRO 51) |  |  |  |
| 571 | 01.2.2.10.7.2 | First implementations |  | 52.63d? | 2009-05-15 A | 2009-07-28 A |  | 100% | start no earlier than 2009-05-15 | Rawal Dhirendra [19%] | 80h | 80h |  |  | (2) Initialization | PO-08.0250 | Stream Lead JAP Engineering | medium | (2) Normal | Rawal, Dhirendra |  |  |  |
| 572 | 01.2.2.10.8 | **TIP engineering** |  | 21d? | 2009-07-01 A | 2009-07-29 A |  | 100% |  |  | 160h | 160h |  |  | (2) Initialization | PO-08.0260 | Stream Lead JAP Engineering | medium | (2) Normal |  |  |  |  |
| 573 | 01.2.2.10.8.1 | Handover from Holger |  | 21d? | 2009-07-01 A | 2009-07-29 A |  | 100% | start no earlier than 2009-07-01 | Powischer Kolja [47.6%] | 80h | 80h |  |  | (2) Initialization | PO-08.0270 | Stream Lead JAP Engineering | medium | (2) Normal | Powischer Kolja (KSLA 54) |  |  |  |
| 574 | 01.2.2.10.8.2 | TIP preparation |  | 21d? | 2009-07-01 A | 2009-07-29 A |  | 100% | start no earlier than 2009-07-01 | Powischer Kolja [47.6%] | 80h | 80h |  |  | (2) Initialization | PO-08.0280 | Stream Lead JAP Engineering | medium | (2) Normal | Powischer Kolja (KSLA 54) |  |  |  |
| 575 | 01.2.2.10.9 | **TC management** |  | 64d? | 2009-05-01 A | 2009-07-29 A |  | 100% |  |  | 360h | 360h |  |  | (2) Initialization | PO-08.0290 | Stream Lead JAP Engineering | medium | (2) Normal |  |  |  |  |
| 576 | 01.2.2.10.9.1 | Stream leading |  | 64d? | 2009-05-01 A | 2009-07-29 A |  | 100% | start no earlier than 2009-05-01 | Telgheider Jörg [23.4%] | 120h | 120h |  |  | (2) Initialization | PO-08.0300 | Stream Lead JAP Engineering | medium | (2) Normal | Telgheider Jörg (KIRO 5) |  |  |  |
| 577 | 01.2.2.10.9.2 | QM |  | 64d? | 2009-05-01 A | 2009-07-29 A |  | 100% | start no earlier than 2009-05-01 | Telgheider Jörg [15.6%] | 80h | 80h |  |  | (2) Initialization | PO-08.0310 | Stream Lead JAP Engineering | medium | (2) Normal | Telgheider Jörg (KIRO 5) |  |  |  |
| 578 | 01.2.2.10.9.3 | TC JAP 6 planning is managed in phases | milestone | 0d | 2009-07-29 A | 2009-07-29 A |  | 100% | finish no earlier than 2009-07-29 |  |  |  |  |  | (2) Initialization | PO-08.0320 | Stream Lead JAP Engineering | medium | (2) Normal |  |  |  |  |
| 579 | 01.2.2.10.9.4 | RM |  | 64d? | 2009-05-01 A | 2009-07-29 A |  | 100% | start no earlier than 2009-05-01 | Piol Domenico [31.2%] | 160h | 160h |  |  | (2) Initialization | PO-08.0330 | Stream Lead JAP Engineering | medium | (2) Normal | Piol Domenico (KIRO 51) |  |  |  |
| 580 | 01.2.2.10.9.5 | All requirements are assigned, features are requested | milestone | 0d | 2009-07-29 A | 2009-07-29 A |  | 100% | finish no earlier than 2009-07-29 |  |  |  |  |  | (2) Initialization | PO-08.0340 | Stream Lead JAP Engineering | medium | (2) Normal |  |  |  |  |
| 581 | 01.2.2.11 | PO (Planning Offer) delivered | milestone | 0d | 2009-07-14 A | 2009-07-14 A | 348, 485 | 100% | as late as possible | Scheidegger Ruedi |  |  |  |  | (2) Initialization | PO-00.5000 | Project Management | medium | (2) Normal | Scheidegger Ruedi (KIRO 11) | Trindler Markus (KIRO 12) | IT- Project Manager |  |
| 582 | 01.2.2.12 | PRB | milestone | 0d | 2009-07-29 A | 2009-07-29 A | 581, 21 | 100% |  | Scheidegger Ruedi |  |  |  |  | (2) Initialization | PO-00.5010 | Project Management | medium | (2) Normal | Scheidegger Ruedi (KIRO 11) | Trindler Markus (KIRO 12) | IT- Project Manager |  |
| 583 | 1.2.3 | **Project System Design Phase** |  | 65.5d? | 2009-07-14 A | 2009-10-13 A | 24 | 100% |  |  | 7063.2h | 7063.2h | 492.84 | 492.84 | (3) System Design |  |  | medium | (2) Normal |  |  |  |  |
| 584 | 1.2.3.1 | **Reporting** |  | 50.12d | 2009-07-14 A | 2009-09-22 A |  | 100% |  |  | 88h | 88h | 11 | 11 | (3) System Design |  |  | medium | (2) Normal |  |  |  |  |
| 585 | 1.2.3.1.1 | Status Meeting |  | 1h | 2009-07-14 A | 2009-07-14 A | 781, 832, 658, 922, 896, 800, 974 | 100% | must start on 2009-07-14 | Hess Andreas; Zulliger Markus; Lackmann Ralph; Lüthi Rico F.; Polisano Riccardo; Scheidegger Ruedi; Telgheider Jörg; Trindler Markus | 8h | 8h | 1 | 1 | (3) System Design |  |  | medium | (2) Normal | Scheidegger Ruedi (KIRO 11) | Lüthi Rico F. (KIRO 12) | IT- Project Manager | Lüthi Rico F. (KIRO 12) |
| 586 | 1.2.3.1.2 | Status Meeting |  | 1h | 2009-07-21 A | 2009-07-21 A | 782, 833, 659, 923, 897, 801, 975 | 100% | must start on 2009-07-21 | Hess Andreas; Zulliger Markus; Lackmann Ralph; Lüthi Rico F.; Polisano Riccardo; Scheidegger Ruedi; Telgheider Jörg; Trindler Markus | 8h | 8h | 1 | 1 | (3) System Design |  |  | medium | (2) Normal | Scheidegger Ruedi (KIRO 11) | Lüthi Rico F. (KIRO 12) | IT- Project Manager | Lüthi Rico F. (KIRO 12) |
| 587 | 1.2.3.1.3 | Status Meeting |  | 1h | 2009-07-28 A | 2009-07-28 A | 783, 834, 660, 924, 898, 802, 976 | 100% | must start on 2009-07-28 | Hess Andreas; Zulliger Markus; Lackmann Ralph; Lüthi Rico F.; Polisano Riccardo; Scheidegger Ruedi; Telgheider Jörg; Trindler Markus | 8h | 8h | 1 | 1 | (3) System Design |  |  | medium | (2) Normal | Scheidegger Ruedi (KIRO 11) | Lüthi Rico F. (KIRO 12) | IT- Project Manager | Lüthi Rico F. (KIRO 12) |
| 588 | 1.2.3.1.4 | Status Meeting |  | 1h | 2009-08-04 A | 2009-08-04 A | 784, 835, 661, 925, 899, 803, 977 | 100% | must start on 2009-08-04 | Hess Andreas; Zulliger Markus; Lackmann Ralph; Lüthi Rico F.; Polisano Riccardo; Scheidegger Ruedi; Telgheider Jörg; Trindler Markus | 8h | 8h | 1 | 1 | (3) System Design |  |  | medium | (2) Normal | Scheidegger Ruedi (KIRO 11) | Lüthi Rico F. (KIRO 12) | IT- Project Manager | Lüthi Rico F. (KIRO 12) |
| 589 | 1.2.3.1.5 | Status Meeting |  | 1h | 2009-08-11 A | 2009-08-11 A | 785, 836, 662, 926, 900, 804, 978 | 100% | must start on 2009-08-11 | Hess Andreas; Zulliger Markus; Lackmann Ralph; Lüthi Rico F.; Polisano Riccardo; Scheidegger Ruedi; Telgheider Jörg; Trindler Markus | 8h | 8h | 1 | 1 | (3) System Design |  |  | medium | (2) Normal | Scheidegger Ruedi (KIRO 11) | Lüthi Rico F. (KIRO 12) | IT- Project Manager | Lüthi Rico F. (KIRO 12) |
| 590 | 1.2.3.1.6 | Status Meeting |  | 1h | 2009-08-18 A | 2009-08-18 A | 786, 837, 663, 927, 901, 805, 979 | 100% | must start on 2009-08-18 | Hess Andreas; Zulliger Markus; Lackmann Ralph; Lüthi Rico F.; Polisano Riccardo; Scheidegger Ruedi; Telgheider Jörg; Trindler Markus | 8h | 8h | 1 | 1 | (3) System Design |  |  | medium | (2) Normal | Scheidegger Ruedi (KIRO 11) | Lüthi Rico F. (KIRO 12) | IT- Project Manager | Lüthi Rico F. (KIRO 12) |
| 591 | 1.2.3.1.7 | Status Meeting |  | 1h | 2009-08-25 A | 2009-08-25 A | 787, 838, 664, 928, 902, 806, 980 | 100% | must start on 2009-08-25 | Hess Andreas; Zulliger Markus; Lackmann Ralph; Lüthi Rico F.; Polisano Riccardo; Scheidegger Ruedi; Telgheider Jörg; Trindler Markus | 8h | 8h | 1 | 1 | (3) System Design |  |  | medium | (2) Normal | Scheidegger Ruedi (KIRO 11) | Lüthi Rico F. (KIRO 12) | IT- Project Manager | Lüthi Rico F. (KIRO 12) |
| 592 | 1.2.3.1.8 | Status Meeting |  | 1h | 2009-09-01 A | 2009-09-01 A | 788, 839, 665, 929, 903, 807, 981 | 100% | must start on 2009-09-01 | Hess Andreas; Zulliger Markus; Lackmann Ralph; Lüthi Rico F.; Polisano Riccardo; Scheidegger Ruedi; Telgheider Jörg; Trindler Markus | 8h | 8h | 1 | 1 | (3) System Design |  |  | medium | (2) Normal | Scheidegger Ruedi (KIRO 11) | Lüthi Rico F. (KIRO 12) | IT- Project Manager | Lüthi Rico F. (KIRO 12) |
| 593 | 1.2.3.1.9 | Status Meeting |  | 1h | 2009-09-08 A | 2009-09-08 A | 789, 840, 666, 930, 904, 808, 982 | 100% | must start on 2009-09-08 | Hess Andreas; Zulliger Markus; Lackmann Ralph; Lüthi Rico F.; Polisano Riccardo; Scheidegger Ruedi; Telgheider Jörg; Trindler Markus | 8h | 8h | 1 | 1 | (3) System Design |  |  | medium | (2) Normal | Scheidegger Ruedi (KIRO 11) | Lüthi Rico F. (KIRO 12) | IT- Project Manager | Lüthi Rico F. (KIRO 12) |
| 594 | 1.2.3.1.10 | Status Meeting |  | 1h | 2009-09-15 A | 2009-09-15 A | 790, 841, 667, 931, 905, 809, 983 | 100% | must start on 2009-09-15 | Hess Andreas; Zulliger Markus; Lackmann Ralph; Lüthi Rico F.; Polisano Riccardo; Scheidegger Ruedi; Telgheider Jörg; Trindler Markus | 8h | 8h | 1 | 1 | (3) System Design |  |  | medium | (2) Normal | Scheidegger Ruedi (KIRO 11) | Lüthi Rico F. (KIRO 12) | IT- Project Manager | Lüthi Rico F. (KIRO 12) |
| 595 | 1.2.3.1.11 | Status Meeting |  | 1h | 2009-09-22 A | 2009-09-22 A | 791, 842, 668, 932, 906, 810, 984 | 100% | must start on 2009-09-22 | Hess Andreas; Zulliger Markus; Lackmann Ralph; Lüthi Rico F.; Polisano Riccardo; Scheidegger Ruedi; Telgheider Jörg; Trindler Markus | 8h | 8h | 1 | 1 | (3) System Design |  |  | medium | (2) Normal | Scheidegger Ruedi (KIRO 11) | Lüthi Rico F. (KIRO 12) | IT- Project Manager | Lüthi Rico F. (KIRO 12) |

| ID | WBS | Task | Type | Duration | Start | Finish | Predecessors | Complete | Resources | Work | Actual work | Cost | Actual cost | Text11 | Text23 | Text30 | Text13 | Text25 | Text1 |
| --- | --- | --- | --- | --- | --- | --- | --- | --- | --- | --- | --- | --- | --- | --- | --- | --- | --- | --- | --- |
| 596 | 1.2.3.2 | **Project Management** |  | 50.62d | 2009-07-14 A | 2009-09-23 A |  | 100% |  | 224h | 224h | 46 | 46 | (3) System Design | medium | (2) Normal |  |  |  |
| 597 | 1.2.3.2.1 | **Reporting** |  | 50.62d | 2009-07-14 A | 2009-09-23 A |  | 100% |  | 33h | 33h |  |  | (3) System Design | medium | (2) Normal |  |  |  |
| 598 | 1.2.3.2.1.1 | Create Status Report |  | 1d | 2009-07-14 A | 2009-07-15 A | 585 | 100% | Scheidegger Ruedi [37.5%] | 3h | 3h |  |  | (3) System Design | medium | (2) Normal | Project Management | Scheidegger Ruedi (KIRO 11) |  |
| 599 | 1.2.3.2.1.2 | Create Status Report |  | 1d | 2009-07-21 A | 2009-07-22 A | 586 | 100% | Scheidegger Ruedi [37.5%] | 3h | 3h |  |  | (3) System Design | medium | (2) Normal | Project Management | Scheidegger Ruedi (KIRO 11) |  |
| 600 | 1.2.3.2.1.3 | Create Status Report |  | 1d | 2009-07-28 A | 2009-07-29 A | 587 | 100% | Scheidegger Ruedi [37.5%] | 3h | 3h |  |  | (3) System Design | medium | (2) Normal | Project Management | Scheidegger Ruedi (KIRO 11) |  |
| 601 | 1.2.3.2.1.4 | Create Status Report |  | 1d | 2009-08-04 A | 2009-08-05 A | 588 | 100% | Scheidegger Ruedi [37.5%] | 3h | 3h |  |  | (3) System Design | medium | (2) Normal | Project Management | Scheidegger Ruedi (KIRO 11) |  |
| 602 | 1.2.3.2.1.5 | Create Status Report |  | 1d | 2009-08-11 A | 2009-08-12 A | 589 | 100% | Scheidegger Ruedi [37.5%] | 3h | 3h |  |  | (3) System Design | medium | (2) Normal | Project Management | Scheidegger Ruedi (KIRO 11) |  |
| 603 | 1.2.3.2.1.6 | Create Status Report |  | 1d | 2009-08-18 A | 2009-08-19 A | 590 | 100% | Scheidegger Ruedi [37.5%] | 3h | 3h |  |  | (3) System Design | medium | (2) Normal | Project Management | Scheidegger Ruedi (KIRO 11) |  |
| 604 | 1.2.3.2.1.7 | Create Status Report |  | 1d | 2009-08-25 A | 2009-08-26 A | 591 | 100% | Scheidegger Ruedi [37.5%] | 3h | 3h |  |  | (3) System Design | medium | (2) Normal | Project Management | Scheidegger Ruedi (KIRO 11) |  |
| 605 | 1.2.3.2.1.8 | Create Status Report |  | 1d | 2009-09-01 A | 2009-09-02 A | 592 | 100% | Scheidegger Ruedi [37.5%] | 3h | 3h |  |  | (3) System Design | medium | (2) Normal | Project Management | Scheidegger Ruedi (KIRO 11) |  |
| 606 | 1.2.3.2.1.9 | Create Status Report |  | 1d | 2009-09-08 A | 2009-09-09 A | 593 | 100% | Scheidegger Ruedi [37.5%] | 3h | 3h |  |  | (3) System Design | medium | (2) Normal | Project Management | Scheidegger Ruedi (KIRO 11) |  |
| 607 | 1.2.3.2.1.10 | Create Status Report |  | 1d | 2009-09-15 A | 2009-09-16 A | 594 | 100% | Scheidegger Ruedi [37.5%] | 3h | 3h |  |  | (3) System Design | medium | (2) Normal | Project Management | Scheidegger Ruedi (KIRO 11) |  |
| 608 | 1.2.3.2.1.11 | Create Status Report |  | 1d | 2009-09-22 A | 2009-09-23 A | 595 | 100% | Scheidegger Ruedi [37.5%] | 3h | 3h |  |  | (3) System Design | medium | (2) Normal |  |  |  |
| 609 | 1.2.3.2.2 | **Phase Planing** |  | 11.25d | 2009-08-11 A | 2009-08-26 A |  | 100% |  | 59h | 59h | 46 | 46 | (3) System Design | medium | (2) Normal |  |  |  |
| 610 | 1.2.3.2.2.1 | **Detailed planning of System Design Phase** |  | 11.25d | 2009-08-11 A | 2009-08-26 A | 669 | 100% |  | 59h | 59h | 46 | 46 | (3) System Design | medium | (2) Normal |  |  | Detailed planning of System Design Phase |
| 611 | 1.2.3.2.2.1.1 | Produce and sending raw project plans and mind maps |  | 3d | 2009-08-11 A | 2009-08-13 A |  | 100% | Lüthi Rico F. [33.3%] | 8h | 8h | 8 | 8 | (3) System Design | medium | (2) Normal | Project Management | Lüthi Rico F. (KIRO 12) |  |
| 612 | 1.2.3.2.2.1.2 | Detail planning of planning workshops |  | 3d | 2009-08-11 A | 2009-08-13 A |  | 100% | Lüthi Rico F. [33.3%] | 8h | 8h | 8 | 8 | (3) System Design | medium | (2) Normal | Project Management | Lüthi Rico F. (KIRO 12) |  |
| 613 | 1.2.3.2.2.1.3 | **Planning Workshops** |  | 3.25d | 2009-08-14 A | 2009-08-19 A | 612 | 100% |  | 19h | 19h | 6 | 6 | (3) System Design | medium | (2) Normal |  |  | Planning Workshops |
| 614 | 1.2.3.2.2.1.3.1 | Requirements Mgmt Workshop |  | 1h | 2009-08-14 A | 2009-08-14 A |  | 100% | Hess Andreas; Lüthi Rico F.; Scheidegger Ruedi; Lackmann Ralph | 4h | 4h | 1 | 1 | (3) System Design | medium | (2) Normal | Project Management | Lüthi Rico F. (KIRO 12) |  |
| 615 | 1.2.3.2.2.1.3.2 | Platform Design Workshop |  | 1h | 2009-08-14 A | 2009-08-14 A | 614FS+0.5d | 100% | Trindler Markus; Scheidegger Ruedi; Lüthi Rico F. | 3h | 3h | 1 | 1 | (3) System Design | medium | (2) Normal | Project Management | Lüthi Rico F. (KIRO 12) |  |
| 616 | 1.2.3.2.2.1.3.3 | JAP Integration Workshop |  | 1h | 2009-08-17 A | 2009-08-17 A | 615FS+0.5d | 100% | Lackmann Ralph; Scheidegger Ruedi; Lüthi Rico F. | 3h | 3h | 1 | 1 | (3) System Design | medium | (2) Normal | Project Management | Lüthi Rico F. (KIRO 12) |  |
| 617 | 1.2.3.2.2.1.3.4 | JAP Engeneering Workshop |  | 1h | 2009-08-17 A | 2009-08-17 A | 616FS+0.5d | 100% | Telgheider Jörg; Scheidegger Ruedi; Lüthi Rico F. | 3h | 3h | 1 | 1 | (3) System Design | medium | (2) Normal | Project Management | Lüthi Rico F. (KIRO 12) |  |
| 618 | 1.2.3.2.2.1.3.5 | Quality Assurance Workshop |  | 1h | 2009-08-18 A | 2009-08-18 A | 617FS+0.5d | 100% | Polisano Riccardo; Scheidegger Ruedi; Lüthi Rico F. | 3h | 3h | 1 | 1 | (3) System Design | medium | (2) Normal | Project Management | Lüthi Rico F. (KIRO 12) |  |
| 619 | 1.2.3.2.2.1.3.6 | Test Management Workshop |  | 1h | 2009-08-19 A | 2009-08-19 A | 618FS+0.5d | 100% | Matthes Andreas; Scheidegger Ruedi; Lüthi Rico F. | 3h | 3h | 1 | 1 | (3) System Design | medium | (2) Normal | Project Management | Lüthi Rico F. (KIRO 12) |  |
| 620 | 1.2.3.2.2.1.3.7 | Planning Workshops finished | milestone | 0d | 2009-08-19 A | 2009-08-19 A | 614, 615, 616, 617, 618, 619 | 100% |  |  |  |  |  | (3) System Design | medium | (2) Normal | Project Management | Lüthi Rico F. (KIRO 12) |  |
| 621 | 1.2.3.2.2.1.4 | Updating Projectplan and Work Packages |  | 5d | 2009-08-19 A | 2009-08-26 A | 620 | 100% | Lüthi Rico F. [60%] | 24h | 24h | 24 | 24 | (3) System Design | medium | (2) Normal | Project Management | Lüthi Rico F. (KIRO 12) |  |

| ID | WBS | Task | Duration | Start | Finish | Predecessors | Complete | Constraint | Resources | Work | Actual work | Cost | Actual cost | Text11 | Text23 | Text30 | Text13 | Text25 |
| --- | --- | --- | --- | --- | --- | --- | --- | --- | --- | --- | --- | --- | --- | --- | --- | --- | --- | --- |
| 622 | 1.2.3.2.3 | **PRB Artifacts (PL, BPL etc)** | 15d | 2009-08-25 A | 2009-09-15 A | 689 | 100% |  |  | 132h | 132h |  |  | (3) System Design | medium | (2) Normal |  |  |
| 623 | 1.2.3.2.3.1 | Records Management Checklist | 15d | 2009-08-25 A | 2009-09-15 A |  | 100% | as late as possible | Scheidegger Ruedi [5%] | 6h | 6h |  |  | (3) System Design | medium | (2) Normal | Project Management | Scheidegger Ruedi (KIRO 11) |
| 624 | 1.2.3.2.3.2 | Archiving- and Output Management Template | 15d | 2009-08-25 A | 2009-09-15 A |  | 100% | as late as possible | Scheidegger Ruedi [5%] | 6h | 6h |  |  | (3) System Design | medium | (2) Normal | Project Management | Scheidegger Ruedi (KIRO 11) |
| 625 | 1.2.3.2.3.3 | DAR Decision Record Log Template | 15d | 2009-08-25 A | 2009-09-15 A |  | 100% | as late as possible | Scheidegger Ruedi [5%] | 6h | 6h |  |  | (3) System Design | medium | (2) Normal | Project Management | Scheidegger Ruedi (KIRO 11) |
| 626 | 1.2.3.2.3.4 | DAR Evaluation Record Template | 15d | 2009-08-25 A | 2009-09-15 A |  | 100% | as late as possible | Scheidegger Ruedi [5%] | 6h | 6h |  |  | (3) System Design | medium | (2) Normal | Project Management | Scheidegger Ruedi (KIRO 11) |
| 627 | 1.2.3.2.3.5 | Deviation Register Template | 15d | 2009-08-25 A | 2009-09-15 A |  | 100% | as late as possible | Scheidegger Ruedi [5%] | 6h | 6h |  |  | (3) System Design | medium | (2) Normal | Project Management | Scheidegger Ruedi (KIRO 11) |
| 628 | 1.2.3.2.3.6 | Distributed Work Management Plan Template | 15d | 2009-08-25 A | 2009-09-15 A |  | 100% | as late as possible | Scheidegger Ruedi [5%] | 6h | 6h |  |  | (3) System Design | medium | (2) Normal | Project Management | Scheidegger Ruedi (KIRO 11) |
| 629 | 1.2.3.2.3.7 | Register New Online Transactions Tool (deutsch) | 15d | 2009-08-25 A | 2009-09-15 A |  | 100% | as late as possible | Scheidegger Ruedi [5%] | 6h | 6h |  |  | (3) System Design | medium | (2) Normal | Project Management | Scheidegger Ruedi (KIRO 11) |
| 630 | 1.2.3.2.3.8 | Full Value Case (FVC) Template | 15d | 2009-08-25 A | 2009-09-15 A |  | 100% | as late as possible | Scheidegger Ruedi [5%] | 6h | 6h |  |  | (3) System Design | medium | (2) Normal | Project Management | Scheidegger Ruedi (KIRO 11) |
| 631 | 1.2.3.2.3.9 | High Level Value Case (HVC) Template | 15d | 2009-08-25 A | 2009-09-15 A |  | 100% | as late as possible | Scheidegger Ruedi [5%] | 6h | 6h |  |  | (3) System Design | medium | (2) Normal | Project Management | Scheidegger Ruedi (KIRO 11) |
| 632 | 1.2.3.2.3.10 | IT Operations Template | 15d | 2009-08-25 A | 2009-09-15 A |  | 100% | as late as possible | Scheidegger Ruedi [5%] | 6h | 6h |  |  | (3) System Design | medium | (2) Normal | Project Management | Scheidegger Ruedi (KIRO 11) |
| 633 | 1.2.3.2.3.11 | IT-Plan - Automatic Cost Transfer Template | 15d | 2009-08-25 A | 2009-09-15 A |  | 100% | as late as possible | Scheidegger Ruedi [5%] | 6h | 6h |  |  | (3) System Design | medium | (2) Normal | Project Management | Scheidegger Ruedi (KIRO 11) |
| 634 | 1.2.3.2.3.12 | Measurement Analysis PM Checklist | 15d | 2009-08-25 A | 2009-09-15 A |  | 100% | as late as possible | Scheidegger Ruedi [5%] | 6h | 6h |  |  | (3) System Design | medium | (2) Normal | Project Management | Scheidegger Ruedi (KIRO 11) |
| 635 | 1.2.3.2.3.13 | N+ Measurement Report Template | 15d | 2009-08-25 A | 2009-09-15 A |  | 100% | as late as possible | Scheidegger Ruedi [5%] | 6h | 6h |  |  | (3) System Design | medium | (2) Normal | Project Management | Scheidegger Ruedi (KIRO 11) |
| 636 | 1.2.3.2.3.14 | Performance Agreement for Project Staff Template | 15d | 2009-08-25 A | 2009-09-15 A |  | 100% | as late as possible | Scheidegger Ruedi [5%] | 6h | 6h |  |  | (3) System Design | medium | (2) Normal | Project Management | Scheidegger Ruedi (KIRO 11) |
| 637 | 1.2.3.2.3.15 | Process Tailoring Record Template | 15d | 2009-08-25 A | 2009-09-15 A |  | 100% | as late as possible | Scheidegger Ruedi [5%] | 6h | 6h |  |  | (3) System Design | medium | (2) Normal | Project Management | Scheidegger Ruedi (KIRO 11) |
| 638 | 1.2.3.2.3.16 | Project Charter Template | 15d | 2009-08-25 A | 2009-09-15 A |  | 100% | as late as possible | Scheidegger Ruedi [5%] | 6h | 6h |  |  | (3) System Design | medium | (2) Normal | Project Management | Scheidegger Ruedi (KIRO 11) |
| 639 | 1.2.3.2.3.17 | N+ Project Management Plan Template | 15d | 2009-08-25 A | 2009-09-15 A |  | 100% | as late as possible | Scheidegger Ruedi [5%] | 6h | 6h |  |  | (3) System Design | medium | (2) Normal | Project Management | Scheidegger Ruedi (KIRO 11) |
| 640 | 1.2.3.2.3.18 | Project Specific Performance Indicators Definition Template | 15d | 2009-08-25 A | 2009-09-15 A |  | 100% | as late as possible | Scheidegger Ruedi [5%] | 6h | 6h |  |  | (3) System Design | medium | (2) Normal | Project Management | Scheidegger Ruedi (KIRO 11) |
| 641 | 1.2.3.2.3.19 | Test Effort Estimation Template | 15d | 2009-08-25 A | 2009-09-15 A |  | 100% | as late as possible | Scheidegger Ruedi [5%] | 6h | 6h |  |  | (3) System Design | medium | (2) Normal | Project Management | Scheidegger Ruedi (KIRO 11) |
| 642 | 1.2.3.2.3.20 | Rollout Concept Template | 15d | 2009-08-25 A | 2009-09-15 A |  | 100% | as late as possible | Scheidegger Ruedi [5%] | 6h | 6h |  |  | (3) System Design | medium | (2) Normal | Project Management | Scheidegger Ruedi (KIRO 11) |
| 643 | 1.2.3.2.3.21 | Transition Points Template | 15d | 2009-08-25 A | 2009-09-15 A |  | 100% | as late as possible | Scheidegger Ruedi [5%] | 6h | 6h |  |  | (3) System Design | medium | (2) Normal | Project Management | Scheidegger Ruedi (KIRO 11) |
| 644 | 1.2.3.2.3.22 | Monitoring and Infrastructure Request Management Tool | 15d | 2009-08-25 A | 2009-09-15 A |  | 100% | as late as possible | Scheidegger Ruedi [5%] | 6h | 6h |  |  | (3) System Design | medium | (2) Normal | Project Management | Scheidegger Ruedi (KIRO 11) |
| 645 | 1.2.3.3 | **Risk Management** | 27.5d? | 2009-08-07 A | 2009-09-15 A |  | 100% |  |  | 33.92h | 33.92h | 11.88 | 11.88 | (3) System Design | medium | (2) Normal |  |  |
| 646 | 1.2.3.3.1 | **Risk Mgmt Meeting** | 23.12d? | 2009-08-07 A | 2009-09-09 A |  | 100% |  |  | 27.92h | 27.92h | 11.88 | 11.88 | (3) System Design | medium | (2) Normal |  |  |
| 647 | 1.2.3.3.1.1 | preparation of Risk Meeting | 1d? | 2009-08-07 A | 2009-08-07 A |  | 100% | as late as possible | Lüthi Rico F. [10%] | 0.8h | 0.8h | 0.8 | 0.8 | (3) System Design | medium | (2) Normal | Project Management | Lüthi Rico F. (KIRO 12) |
| 648 | 1.2.3.3.1.2 | Risk Mgmt Meeting August | 0.13d | 2009-08-10 A | 2009-08-10 A | 647 | 100% | must start on 2009-08-10 | Lüthi Rico F.; Telgheider Jörg; Hess Andreas; Trindler Markus; Lackmann Ralph; Scheidegger Ruedi; Polisano Riccardo; Zulliger Markus; Matthes Andreas | 9.04h | 9.04h | 1 | 1 | (3) System Design | medium | (2) Normal | Project Management | Lüthi Rico F. (KIRO 12) |
| 649 | 1.2.3.3.1.3 | Update Risk Mgmt Plan | 1d? | 2009-08-10 A | 2009-08-11 A | 648 | 100% |  | Lüthi Rico F. [38%] | 3.04h | 3.04h | 3.04 | 3.04 | (3) System Design | medium | (2) Normal | Project Management | Lüthi Rico F. (KIRO 12) |
| 650 | 1.2.3.3.1.4 | preparation of Risk Meeting | 1d? | 2009-09-07 A | 2009-09-07 A |  | 100% | as late as possible | Lüthi Rico F. [37.5%] | 3h | 3h | 3 | 3 | (3) System Design | medium | (2) Normal | Project Management | Lüthi Rico F. (KIRO 12) |
| 651 | 1.2.3.3.1.5 | Risk Mgmt Meeting September | 0.12d | 2009-09-08 A | 2009-09-08 A | 650 | 100% | must start on 2009-09-08 | Lüthi Rico F.; Telgheider Jörg; Hess Andreas; Trindler Markus; Lackmann Ralph; Scheidegger Ruedi; Polisano Riccardo; Zulliger Markus; Matthes Andreas | 9h | 9h | 1 | 1 | (3) System Design | medium | (2) Normal | Project Management | Lüthi Rico F. (KIRO 12) |
| 652 | 1.2.3.3.1.6 | Update Risk Mgmt Plan | 1d? | 2009-09-08 A | 2009-09-09 A | 651 | 100% |  | Lüthi Rico F. [38%] | 3.04h | 3.04h | 3.04 | 3.04 | (3) System Design | medium | (2) Normal | Project Management | Lüthi Rico F. (KIRO 12) |

| ID | WBS | Task | Duration | Start | Finish | Predecessors | Complete | Constraint | Resources | Work | Actual work | Cost | Actual cost | Text11 | Text23 | Text30 | Text13 | Text25 | Text20 | Text21 |
| --- | --- | --- | --- | --- | --- | --- | --- | --- | --- | --- | --- | --- | --- | --- | --- | --- | --- | --- | --- | --- |
| 653 | 1.2.3.3.2 | **PRB Artifacts Risk Mgmt** | 15d | 2009-08-25 A | 2009-09-15 A | 689 | 100% |  |  | 6h | 6h |  |  | (3) System Design | medium | (2) Normal |  |  |  |  |
| 654 | 1.2.3.3.2.1 | IT Risk Project Classification Checklist | 15d | 2009-08-25 A | 2009-09-15 A |  | 100% | as late as possible | Scheidegger Ruedi [5%] | 6h | 6h |  |  | (3) System Design | medium | (2) Normal | Risk Management | Scheidegger Ruedi (KIRO 11) |  |  |
| 655 | 1.2.3.4 | **Project Support** | 51.12d? | 2009-07-14 A | 2009-09-23 A |  | 100% |  |  | 1924.28h | 1924.28h | 416.76 | 416.76 | (3) System Design | medium | (2) Normal |  |  |  |  |
| 656 | 1.2.3.4.1 | **Stream Management** | 49.5d? | 2009-07-14 A | 2009-09-21 A |  | 100% |  |  | 48.8h | 48.8h | 48.8 | 48.8 | (3) System Design | medium | (2) Normal |  |  |  |  |
| 657 | 1.2.3.4.1.1 | **Reporting** | 49.5d | 2009-07-14 A | 2009-09-21 A |  | 100% |  |  | 8.8h | 8.8h | 8.8 | 8.8 | (3) System Design | medium | (2) Normal |  |  |  |  |
| 658 | 1.2.3.4.1.1.1 | Preparation Stream Status Report | 1d | 2009-07-14 A | 2009-07-15 A |  | 100% | as late as possible | Lüthi Rico F. [10%] | 0.8h | 0.8h | 0.8 | 0.8 | (3) System Design | medium | (2) Normal | Stream Lead Project Support | Lüthi Rico F. (KIRO 12) |  |  |
| 659 | 1.2.3.4.1.1.2 | Preparation Stream Status Report | 1d | 2009-07-20 A | 2009-07-20 A |  | 100% | as late as possible | Lüthi Rico F. [10%] | 0.8h | 0.8h | 0.8 | 0.8 | (3) System Design | medium | (2) Normal | Stream Lead Project Support | Lüthi Rico F. (KIRO 12) |  |  |
| 660 | 1.2.3.4.1.1.3 | Preparation Stream Status Report | 1d | 2009-07-27 A | 2009-07-27 A |  | 100% | as late as possible | Lüthi Rico F. [10%] | 0.8h | 0.8h | 0.8 | 0.8 | (3) System Design | medium | (2) Normal | Stream Lead Project Support | Lüthi Rico F. (KIRO 12) |  |  |
| 661 | 1.2.3.4.1.1.4 | Preparation Stream Status Report | 1d | 2009-08-03 A | 2009-08-03 A |  | 100% | as late as possible | Lüthi Rico F. [10%] | 0.8h | 0.8h | 0.8 | 0.8 | (3) System Design | medium | (2) Normal | Stream Lead Project Support | Lüthi Rico F. (KIRO 12) |  |  |
| 662 | 1.2.3.4.1.1.5 | Preparation Stream Status Report | 1d | 2009-08-10 A | 2009-08-10 A |  | 100% | as late as possible | Lüthi Rico F. [10%] | 0.8h | 0.8h | 0.8 | 0.8 | (3) System Design | medium | (2) Normal | Stream Lead Project Support | Lüthi Rico F. (KIRO 12) |  |  |
| 663 | 1.2.3.4.1.1.6 | Preparation Stream Status Report | 1d | 2009-08-17 A | 2009-08-17 A |  | 100% | as late as possible | Lüthi Rico F. [10%] | 0.8h | 0.8h | 0.8 | 0.8 | (3) System Design | medium | (2) Normal | Stream Lead Project Support | Lüthi Rico F. (KIRO 12) |  |  |
| 664 | 1.2.3.4.1.1.7 | Preparation Stream Status Report | 1d | 2009-08-24 A | 2009-08-24 A |  | 100% | as late as possible | Lüthi Rico F. [10%] | 0.8h | 0.8h | 0.8 | 0.8 | (3) System Design | medium | (2) Normal | Stream Lead Project Support | Lüthi Rico F. (KIRO 12) |  |  |
| 665 | 1.2.3.4.1.1.8 | Preparation Stream Status Report | 1d | 2009-08-31 A | 2009-08-31 A |  | 100% | as late as possible | Lüthi Rico F. [10%] | 0.8h | 0.8h | 0.8 | 0.8 | (3) System Design | medium | (2) Normal | Stream Lead Project Support | Lüthi Rico F. (KIRO 12) |  |  |
| 666 | 1.2.3.4.1.1.9 | Preparation Stream Status Report | 1d | 2009-09-07 A | 2009-09-07 A |  | 100% | as late as possible | Lüthi Rico F. [10%] | 0.8h | 0.8h | 0.8 | 0.8 | (3) System Design | medium | (2) Normal | Stream Lead Project Support | Lüthi Rico F. (KIRO 12) |  |  |
| 667 | 1.2.3.4.1.1.10 | Preparation Stream Status Report | 1d | 2009-09-14 A | 2009-09-14 A |  | 100% | as late as possible | Lüthi Rico F. [10%] | 0.8h | 0.8h | 0.8 | 0.8 | (3) System Design | medium | (2) Normal | Stream Lead Project Support | Lüthi Rico F. (KIRO 12) |  |  |
| 668 | 1.2.3.4.1.1.11 | Preparation Stream Status Report | 1d | 2009-09-21 A | 2009-09-21 A |  | 100% | as late as possible | Lüthi Rico F. [10%] | 0.8h | 0.8h | 0.8 | 0.8 | (3) System Design | medium | (2) Normal | Stream Lead Project Support | Lüthi Rico F. (KIRO 12) |  |  |
| 669 | 1.2.3.4.1.2 | **preparation System Design Phase** | 10d? | 2009-07-28 A | 2009-08-10 A |  | 100% |  |  | 40h | 40h | 40 | 40 | (3) System Design | medium | (2) Normal |  |  |  |  |
| 670 | 1.2.3.4.1.2.1 | Process Planning Requiremet Management | 10d? | 2009-07-28 A | 2009-08-10 A | 660 | 100% |  | Lüthi Rico F. [50%] | 40h | 40h | 40 | 40 | (3) System Design | medium | (2) Normal | Stream Lead Project Support | Lüthi Rico F. (KIRO 12) |  |  |
| 671 | 1.2.3.4.2 | **PMO** | 51.12d? | 2009-07-14 A | 2009-09-23 A |  | 100% |  |  | 1843.48h | 1843.48h | 335.96 | 335.96 | (3) System Design | medium | (2) Normal |  |  |  |  |
| 672 | 1.2.3.4.2.1 | **Status Report** | 50.12d | 2009-07-15 A | 2009-09-23 A |  | 100% |  |  | 4.4h | 4.4h | 4.4 | 4.4 | (3) System Design | medium | (2) Normal |  |  |  |  |
| 673 | 1.2.3.4.2.1.1 | Prepare and Send Status Report | 0.5d | 2009-07-15 A | 2009-07-15 A | 598 | 100% |  | Lüthi Rico F. [10%] | 0.4h | 0.4h | 0.4 | 0.4 | (3) System Design | medium | (2) Normal | Stream Lead Project Support | Scheidegger Ruedi (KIRO 11) | Lüthi Rico F. (KIRO 12) | IT- Project Manager |
| 674 | 1.2.3.4.2.1.2 | Prepare and Send Status Report | 0.5d | 2009-07-22 A | 2009-07-22 A | 599 | 100% |  | Lüthi Rico F. [10%] | 0.4h | 0.4h | 0.4 | 0.4 | (3) System Design | medium | (2) Normal | Stream Lead Project Support | Scheidegger Ruedi (KIRO 11) | Lüthi Rico F. (KIRO 12) | IT- Project Manager |
| 675 | 1.2.3.4.2.1.3 | Prepare and Send Status Report | 0.5d | 2009-07-29 A | 2009-07-29 A | 600 | 100% |  | Lüthi Rico F. [10%] | 0.4h | 0.4h | 0.4 | 0.4 | (3) System Design | medium | (2) Normal | Stream Lead Project Support | Scheidegger Ruedi (KIRO 11) | Lüthi Rico F. (KIRO 12) | IT- Project Manager |
| 676 | 1.2.3.4.2.1.4 | Prepare and Send Status Report | 0.5d | 2009-08-05 A | 2009-08-05 A | 601 | 100% |  | Lüthi Rico F. [10%] | 0.4h | 0.4h | 0.4 | 0.4 | (3) System Design | medium | (2) Normal | Stream Lead Project Support | Scheidegger Ruedi (KIRO 11) | Lüthi Rico F. (KIRO 12) | IT- Project Manager |
| 677 | 1.2.3.4.2.1.5 | Prepare and Send Status Report | 0.5d | 2009-08-12 A | 2009-08-12 A | 602 | 100% |  | Lüthi Rico F. [10%] | 0.4h | 0.4h | 0.4 | 0.4 | (3) System Design | medium | (2) Normal | Stream Lead Project Support | Scheidegger Ruedi (KIRO 11) | Lüthi Rico F. (KIRO 12) | IT- Project Manager |
| 678 | 1.2.3.4.2.1.6 | Prepare and Send Status Report | 0.5d | 2009-08-19 A | 2009-08-19 A | 603 | 100% |  | Lüthi Rico F. [10%] | 0.4h | 0.4h | 0.4 | 0.4 | (3) System Design | medium | (2) Normal | Stream Lead Project Support | Scheidegger Ruedi (KIRO 11) | Lüthi Rico F. (KIRO 12) | IT- Project Manager |
| 679 | 1.2.3.4.2.1.7 | Prepare and Send Status Report | 0.5d | 2009-08-26 A | 2009-08-26 A | 604 | 100% |  | Lüthi Rico F. [10%] | 0.4h | 0.4h | 0.4 | 0.4 | (3) System Design | medium | (2) Normal | Stream Lead Project Support | Scheidegger Ruedi (KIRO 11) | Lüthi Rico F. (KIRO 12) | IT- Project Manager |
| 680 | 1.2.3.4.2.1.8 | Prepare and Send Status Report | 0.5d | 2009-09-02 A | 2009-09-02 A | 605 | 100% |  | Lüthi Rico F. [10%] | 0.4h | 0.4h | 0.4 | 0.4 | (3) System Design | medium | (2) Normal | Stream Lead Project Support | Scheidegger Ruedi (KIRO 11) | Lüthi Rico F. (KIRO 12) | IT- Project Manager |
| 681 | 1.2.3.4.2.1.9 | Prepare and Send Status Report | 0.5d | 2009-09-09 A | 2009-09-09 A | 606 | 100% |  | Lüthi Rico F. [10%] | 0.4h | 0.4h | 0.4 | 0.4 | (3) System Design | medium | (2) Normal | Stream Lead Project Support | Scheidegger Ruedi (KIRO 11) | Lüthi Rico F. (KIRO 12) | IT- Project Manager |
| 682 | 1.2.3.4.2.1.10 | Prepare and Send Status Report | 0.5d | 2009-09-16 A | 2009-09-16 A | 607 | 100% |  | Lüthi Rico F. [10%] | 0.4h | 0.4h | 0.4 | 0.4 | (3) System Design | medium | (2) Normal | Stream Lead Project Support | Scheidegger Ruedi (KIRO 11) | Lüthi Rico F. (KIRO 12) | IT- Project Manager |
| 683 | 1.2.3.4.2.1.11 | Prepare and Send Status Report | 0.5d | 2009-09-23 A | 2009-09-23 A | 608 | 100% |  | Lüthi Rico F. [10%] | 0.4h | 0.4h | 0.4 | 0.4 | (3) System Design | medium | (2) Normal | Stream Lead Project Support | Scheidegger Ruedi (KIRO 11) | Lüthi Rico F. (KIRO 12) | IT- Project Manager |

| ID | WBS | Task | Type | Duration | Start | Finish | Predecessors | Complete | Constraint | Resources | Work | Actual work | Cost | Actual cost | Text11 | Text23 | Text30 | Text13 | Text25 | Text21 |
| --- | --- | --- | --- | --- | --- | --- | --- | --- | --- | --- | --- | --- | --- | --- | --- | --- | --- | --- | --- | --- |
| 684 | 1.2.3.4.2.2 | **Preparation System Design Phase** |  | 14d | 2009-07-14 A | 2009-08-03 A |  | 100% |  |  | 56h | 56h | 56 | 56 | (3) System Design | medium | (2) Normal |  |  |  |
| 685 | 1.2.3.4.2.2.1 | SharePoint preparation |  | 12d | 2009-07-14 A | 2009-07-30 A |  | 100% |  | Lüthi Rico F. [41.7%] | 40h | 40h | 40 | 40 | (3) System Design | medium | (2) Normal | Stream Lead Project Support | Lüthi Rico F. (KIRO 12) |  |
| 686 | 1.2.3.4.2.2.2 | Update Finance Control Planning |  | 2d | 2009-07-30 A | 2009-08-03 A | 685 | 100% |  | Lüthi Rico F. | 16h | 16h | 16 | 16 | (3) System Design | medium | (2) Normal | Stream Lead Project Support | Lüthi Rico F. (KIRO 12) | PMO |
| 687 | 1.2.3.4.2.3 | **PRB Artifacts** |  | 39.56d? | 2009-07-29 A | 2009-09-22 A |  | 100% |  |  | 1711.08h | 1711.08h | 203.56 | 203.56 | (3) System Design | medium | (2) Normal |  |  |  |
| 688 | 1.2.3.4.2.3.1 | Start planning of document preparation | milestone | 0d | 2009-07-29 A | 2009-07-29 A |  | 100% | as late as possible |  |  |  |  |  | (3) System Design | medium | (2) Normal | Stream Lead Project Support | Lüthi Rico F. (KIRO 12) |  |
| 689 | 1.2.3.4.2.3.2 | **Planning and preparation** |  | 12.81d? | 2009-07-29 A | 2009-08-17 A |  | 100% |  |  | 185.08h | 185.08h | 167.56 | 167.56 | (3) System Design | medium | (2) Normal |  |  |  |
| 690 | 1.2.3.4.2.3.2.1 | **Planning of the document preparation** |  | 6d? | 2009-07-29 A | 2009-08-06 A | 688 | 100% |  | Lüthi Rico F. | 72h | 72h | 72 | 72 | (3) System Design | medium | (2) Normal |  |  |  |
| 691 | 1.2.3.4.2.3.2.1.1 | Planning PRB Artifacts |  | 2d? | 2009-07-29 A | 2009-07-31 A |  | 100% |  | Lüthi Rico F. [50%] | 8h | 8h | 8 | 8 | (3) System Design | medium | (2) Normal | Stream Lead Project Support | Lüthi Rico F. (KIRO 12) |  |
| 692 | 1.2.3.4.2.3.2.1.2 | Preperaring Sharepoint for PRB Artifacts |  | 4d? | 2009-07-31 A | 2009-08-06 A | 691 | 100% |  | Lüthi Rico F. [50%] | 16h | 16h | 16 | 16 | (3) System Design | medium | (2) Normal | Stream Lead Project Support | Lüthi Rico F. (KIRO 12) |  |
| 693 | 1.2.3.4.2.3.2.2 | **Planning RO chapters** |  | 6d? | 2009-07-29 A | 2009-08-06 A |  | 100% |  | Lüthi Rico F. | 72h | 72h | 72 | 72 | (3) System Design | medium | (2) Normal |  |  |  |
| 694 | 1.2.3.4.2.3.2.2.1 | Planning PO chapters / ressources |  | 2d? | 2009-07-29 A | 2009-07-31 A |  | 100% | as late as possible | Lüthi Rico F. [50%] | 8h | 8h | 8 | 8 | (3) System Design | medium | (2) Normal | Stream Lead Project Support | Lüthi Rico F. (KIRO 12) |  |
| 695 | 1.2.3.4.2.3.2.2.2 | Preperaring Sharepoint for PRB Artifacts |  | 4d? | 2009-07-31 A | 2009-08-06 A | 694 | 100% | as late as possible | Lüthi Rico F. [50%] | 16h | 16h | 16 | 16 | (3) System Design | medium | (2) Normal | Stream Lead Project Support | Lüthi Rico F. (KIRO 12) |  |
| 696 | 1.2.3.4.2.3.2.3 | Meeting with project management about the document organization |  | 0.07d? | 2009-08-06 A | 2009-08-06 A | 690, 693 | 100% |  | Lüthi Rico F.; Scheidegger Ruedi | 1.04h | 1.04h | 0.52 | 0.52 | (3) System Design | medium | (2) Normal | Stream Lead Project Support | Lüthi Rico F. (KIRO 12) |  |
| 697 | 1.2.3.4.2.3.2.4 | Updating Document Organization |  | 2d? | 2009-08-06 A | 2009-08-10 A | 696 | 100% |  | Lüthi Rico F. [50%] | 8h | 8h | 8 | 8 | (3) System Design | medium | (2) Normal | Stream Lead Project Support | Lüthi Rico F. (KIRO 12) |  |
| 698 | 1.2.3.4.2.3.2.5 | Update Time Shedule & SharePoint |  | 2d? | 2009-08-10 A | 2009-08-12 A | 697 | 100% |  | Lüthi Rico F. [50%] | 8h | 8h | 8 | 8 | (3) System Design | medium | (2) Normal | Stream Lead Project Support | Lüthi Rico F. (KIRO 12) |  |
| 699 | 1.2.3.4.2.3.2.6 | Send invitation to all document authors |  | 1d? | 2009-08-06 A | 2009-08-07 A | 696 | 100% |  | Lüthi Rico F. [13%] | 1.04h | 1.04h | 1.04 | 1.04 | (3) System Design | medium | (2) Normal | Stream Lead Project Support | Lüthi Rico F. (KIRO 12) |  |
| 700 | 1.2.3.4.2.3.2.7 | Kick off PRB Artifacts preparation meeting with all document autors |  | 1h | 2009-08-14 A | 2009-08-14 A | 699FS+5d | 100% |  | Matthes Andreas; Zulliger Markus; Lackmann Ralph; Lüthi Rico F.; Polisano Riccardo; Scheidegger Ruedi; Telgheider Jörg; Trindler Markus; Hess Andreas | 9h | 9h | 1 | 1 | (3) System Design | medium | (2) Normal | Stream Lead Project Support | Lüthi Rico F. (KIRO 12) |  |
| 701 | 1.2.3.4.2.3.2.8 | Kick off PO preparation meeting with all document authors |  | 1h | 2009-08-14 A | 2009-08-14 A | 699FS+5d, 700 | 100% |  | Matthes Andreas; Bennek Robert; Zulliger Markus; Lackmann Ralph; Lüthi Rico F.; Polisano Riccardo; Scheidegger Ruedi; Telgheider Jörg; Trindler Markus; Hess Andreas | 10h | 10h | 1 | 1 | (3) System Design | medium | (2) Normal | Stream Lead Project Support | Lüthi Rico F. (KIRO 12) |  |
| 702 | 1.2.3.4.2.3.2.9 | Update Schedule & Sharepoint |  | 0.5d? | 2009-08-14 A | 2009-08-17 A | 700, 701 | 100% |  | Lüthi Rico F. | 4h | 4h | 4 | 4 | (3) System Design | medium | (2) Normal | Stream Lead Project Support | Lüthi Rico F. (KIRO 12) |  |
| 703 | 1.2.3.4.2.3.2.10 | Start of document preparation | milestone | 0d? | 2009-08-14 A | 2009-08-14 A | 701 | 100% |  | Trindler Markus |  |  |  |  | (3) System Design | medium | (2) Normal | Stream Lead Project Support | Lüthi Rico F. (KIRO 12) |  |
| 704 | 1.2.3.4.2.3.3 | **Writing PRB Artifacts** |  | 20d | 2009-08-17 A | 2009-09-14 A | 689 | 100% |  |  | 1384h | 1384h | 8 | 8 | (3) System Design | medium | (2) Normal |  |  |  |
| 705 | 1.2.3.4.2.3.3.1 | **Realization Offer** |  | 20d | 2009-08-17 A | 2009-09-14 A |  | 100% |  |  | 1384h | 1384h | 8 | 8 | (3) System Design | medium | (2) Normal |  |  |  |
| 706 | 1.2.3.4.2.3.3.1.1 | 1 Project Objectives |  | 20d | 2009-08-17 A | 2009-09-14 A |  | 100% |  | Zulliger Markus [5%] | 8h | 8h |  |  | (3) System Design | medium | (2) Normal | Stream Lead Project Support | Zulliger Markus (KSLB 3) |  |
| 707 | 1.2.3.4.2.3.3.1.2 | 2 Starting Situation |  | 20d | 2009-08-17 A | 2009-09-14 A |  | 100% |  | Zulliger Markus [5%] | 8h | 8h |  |  | (3) System Design | medium | (2) Normal | Stream Lead Project Support | Zulliger Markus (KSLB 3) |  |

| ID | WBS | Task | Duration | Start | Finish | Complete | Resources | Work | Actual work | Text11 | Text23 | Text30 | Text13 | Text25 |
| --- | --- | --- | --- | --- | --- | --- | --- | --- | --- | --- | --- | --- | --- | --- |
| 708 | 1.2.3.4.2.3.3.1.3 | **3 Scope Summary** | 20d | 2009-08-17 A | 2009-09-14 A | 100% | Zulliger Markus | 216h | 216h | (3) System Design | medium | (2) Normal |  |  |
| 709 | 1.2.3.4.2.3.3.1.3.1 | 3.1 Scope of Project | 20d | 2009-08-17 A | 2009-09-14 A | 100% | Zulliger Markus [5%] | 8h | 8h | (3) System Design | medium | (2) Normal | Stream Lead Project Support | Zulliger Markus (KSLB 3) |
| 710 | 1.2.3.4.2.3.3.1.3.2 | 3.2 Out of Scope | 20d | 2009-08-17 A | 2009-09-14 A | 100% | Zulliger Markus [5%] | 8h | 8h | (3) System Design | medium | (2) Normal | Stream Lead Project Support | Zulliger Markus (KSLB 3) |
| 711 | 1.2.3.4.2.3.3.1.3.3 | 3.3 Dependencies | 20d | 2009-08-17 A | 2009-09-14 A | 100% | Zulliger Markus [5%] | 8h | 8h | (3) System Design | medium | (2) Normal | Stream Lead Project Support | Zulliger Markus (KSLB 3) |
| 712 | 1.2.3.4.2.3.3.1.3.4 | 3.4 Functionality no longer supported | 20d | 2009-08-17 A | 2009-09-14 A | 100% | Zulliger Markus [5%] | 8h | 8h | (3) System Design | medium | (2) Normal | Stream Lead Project Support | Zulliger Markus (KSLB 3) |
| 713 | 1.2.3.4.2.3.3.1.3.5 | 3.5 Scope adjustments compared with Project Concept | 20d | 2009-08-17 A | 2009-09-14 A | 100% | Zulliger Markus [5%] | 8h | 8h | (3) System Design | medium | (2) Normal | Stream Lead Project Support | Zulliger Markus (KSLB 3) |
| 714 | 1.2.3.4.2.3.3.1.3.6 | 3.6 Scope adjustments compared with Planning Offer | 20d | 2009-08-17 A | 2009-09-14 A | 100% | Zulliger Markus [5%] | 8h | 8h | (3) System Design | medium | (2) Normal | Stream Lead Project Support | Zulliger Markus (KSLB 3) |
| 715 | 1.2.3.4.2.3.3.1.3.7 | 3.7 Assumptions and Constraints | 20d | 2009-08-17 A | 2009-09-14 A | 100% | Zulliger Markus [5%] | 8h | 8h | (3) System Design | medium | (2) Normal | Stream Lead Project Support | Zulliger Markus (KSLB 3) |
| 716 | 1.2.3.4.2.3.3.1.4 | **4 Solution Concept** | 20d | 2009-08-17 A | 2009-09-14 A | 100% | Scheidegger Ruedi | 432h | 432h | (3) System Design | medium | (2) Normal |  |  |
| 717 | 1.2.3.4.2.3.3.1.4.1 | **4.1 Solution Description** | 20d | 2009-08-17 A | 2009-09-14 A | 100% | Scheidegger Ruedi | 176h | 176h | (3) System Design | medium | (2) Normal |  |  |
| 718 | 1.2.3.4.2.3.3.1.4.1.1 | 4.1.1 Business Aspect | 20d | 2009-08-17 A | 2009-09-14 A | 100% | Zulliger Markus [5%] | 8h | 8h | (3) System Design | medium | (2) Normal | Stream Lead Project Support | Zulliger Markus (KSLB 3) |
| 719 | 1.2.3.4.2.3.3.1.4.1.2 | 4.1.2 IT Aspects | 20d | 2009-08-17 A | 2009-09-14 A | 100% | Scheidegger Ruedi [5%] | 8h | 8h | (3) System Design | medium | (2) Normal | Stream Lead Project Support | Scheidegger Ruedi (KIRO 11) |
| 720 | 1.2.3.4.2.3.3.1.4.2 | 4.2 Concept Deliveries | 20d | 2009-08-17 A | 2009-09-14 A | 100% | Trindler Markus [5%] | 8h | 8h | (3) System Design | medium | (2) Normal | Stream Lead Project Support | Trindler Markus (KIRO 12) |
| 721 | 1.2.3.4.2.3.3.1.4.3 | 4.3 Lifecycle | 20d | 2009-08-17 A | 2009-09-14 A | 100% | Scheidegger Ruedi [5%] | 8h | 8h | (3) System Design | medium | (2) Normal | Stream Lead Project Support | Scheidegger Ruedi (KIRO 11) |
| 722 | 1.2.3.4.2.3.3.1.4.4 | 4.4 New TIP Features | 20d | 2009-08-17 A | 2009-09-14 A | 100% | Bennek Robert [5%] | 8h | 8h | (3) System Design | medium | (2) Normal | Stream Lead Project Support | Bennek Robert (KIRO 14) |
| 723 | 1.2.3.4.2.3.3.1.4.5 | 4.5 New RTP Features | 20d | 2009-08-17 A | 2009-09-14 A | 100% | Trindler Markus [5%] | 8h | 8h | (3) System Design | medium | (2) Normal | Stream Lead Project Support | Trindler Markus (KIRO 12) |
| 724 | 1.2.3.4.2.3.3.1.4.6 | 4.6 System Management | 20d | 2009-08-17 A | 2009-09-14 A | 100% | Lackmann Ralph [5%] | 8h | 8h | (3) System Design | medium | (2) Normal | Stream Lead Project Support | Lackmann Ralph (KIRO 12) |
| 725 | 1.2.3.4.2.3.3.1.4.7 | 4.7 Deployment | 20d | 2009-08-17 A | 2009-09-14 A | 100% | Bennek Robert [5%] | 8h | 8h | (3) System Design | medium | (2) Normal | Stream Lead Project Support | Bennek Robert (KIRO 14) |
| 726 | 1.2.3.4.2.3.3.1.4.8 | 4.8 Development Support | 20d | 2009-08-17 A | 2009-09-14 A | 100% | Bennek Robert [5%] | 8h | 8h | (3) System Design | medium | (2) Normal | Stream Lead Project Support | Bennek Robert (KIRO 14) |
| 727 | 1.2.3.4.2.3.3.1.4.9 | 4.9 Security | 20d | 2009-08-17 A | 2009-09-14 A | 100% | Hermann René [5%] | 8h | 8h | (3) System Design | medium | (2) Normal | Stream Lead Project Support | Herrmann René (KIRO 12) |
| 728 | 1.2.3.4.2.3.3.1.4.10 | 4.10 JAP infrastructure | 20d | 2009-08-17 A | 2009-09-14 A | 100% | Trindler Markus [5%] | 8h | 8h | (3) System Design | medium | (2) Normal | Stream Lead Project Support | Trindler Markus (KIRO 12) |
| 729 | 1.2.3.4.2.3.3.1.4.11 | 4.11 JAP Operations | 20d | 2009-08-17 A | 2009-09-14 A | 100% | Lackmann Ralph [5%] | 8h | 8h | (3) System Design | medium | (2) Normal | Stream Lead Project Support | Lackmann Ralph (KIRO 12) |
| 730 | 1.2.3.4.2.3.3.1.4.12 | 4.12 JAP Global Platform Management | 20d | 2009-08-17 A | 2009-09-14 A | 100% | Schelling Adrian [5%] | 8h | 8h | (3) System Design | medium | (2) Normal | Stream Lead Project Support | Schelling Adrian (KIRO 11) |
| 731 | 1.2.3.4.2.3.3.1.4.13 | 4.13 Impact on JAP Processes | 20d | 2009-08-17 A | 2009-09-14 A | 100% | Polisano Riccardo [5%] | 8h | 8h | (3) System Design | medium | (2) Normal | Stream Lead Project Support | Polisano Riccardo (KIRO 11) |

| ID | WBS | Task | Type | Duration | Start | Finish | Predecessors | Complete | Constraint | Resources | Work | Actual work | Cost | Actual cost | Text11 | Text23 | Text30 | Text13 | Text25 | Text20 | Text21 | Text19 |
| --- | --- | --- | --- | --- | --- | --- | --- | --- | --- | --- | --- | --- | --- | --- | --- | --- | --- | --- | --- | --- | --- | --- |
| 732 | 1.2.3.4.2.3.3.1.5 | **5 Benefits** |  | 20d | 2009-08-17 A | 2009-09-14 A |  | 100% |  | Zulliger Markus | 352h | 352h |  |  | (3) System Design | medium | (2) Normal |  |  |  |  |  |
| 733 | 1.2.3.4.2.3.3.1.5.1 | **5.1 Quantitative Benefits** |  | 20d | 2009-08-17 A | 2009-09-14 A |  | 100% |  | Zulliger Markus | 176h | 176h |  |  | (3) System Design | medium | (2) Normal |  |  |  |  |  |
| 734 | 1.2.3.4.2.3.3.1.5.1.1 | 5.1.1 Type of Benefits |  | 20d | 2009-08-17 A | 2009-09-14 A |  | 100% |  | Zulliger Markus [5%] | 8h | 8h |  |  | (3) System Design | medium | (2) Normal | Stream Lead Project Support | Zulliger Markus (KSLB 3) |  |  |  |
| 735 | 1.2.3.4.2.3.3.1.5.1.2 | 5.1.2 Classification of Benefits |  | 20d | 2009-08-17 A | 2009-09-14 A |  | 100% |  | Zulliger Markus [5%] | 8h | 8h |  |  | (3) System Design | medium | (2) Normal | Stream Lead Project Support | Zulliger Markus (KSLB 3) |  |  |  |
| 736 | 1.2.3.4.2.3.3.1.5.2 | 5.2 Qualitative Benefits |  | 20d | 2009-08-17 A | 2009-09-14 A |  | 100% |  | Zulliger Markus [5%] | 8h | 8h |  |  | (3) System Design | medium | (2) Normal | Stream Lead Project Support | Zulliger Markus (KSLB 3) |  |  |  |
| 737 | 1.2.3.4.2.3.3.1.5.3 | 5.3 Business Case |  | 20d | 2009-08-17 A | 2009-09-14 A |  | 100% |  | Zulliger Markus [5%] | 8h | 8h |  |  | (3) System Design | medium | (2) Normal | Stream Lead Project Support | Zulliger Markus (KSLB 3) |  |  |  |
| 738 | 1.2.3.4.2.3.3.1.6 | **6 Request for Approval** |  | 20d | 2009-08-17 A | 2009-09-14 A |  | 100% |  | Scheidegger Ruedi | 344h | 344h |  |  | (3) System Design | medium | (2) Normal |  |  |  |  |  |
| 739 | 1.2.3.4.2.3.3.1.6.1 | 6.1 Deviations from IT-PV |  | 20d | 2009-08-17 A | 2009-09-14 A |  | 100% |  | Scheidegger Ruedi [5%] | 8h | 8h |  |  | (3) System Design | medium | (2) Normal | Stream Lead Project Support | Scheidegger Ruedi (KIRO 11) |  |  |  |
| 740 | 1.2.3.4.2.3.3.1.6.2 | **6.2 Requested Budget and Milestones** |  | 20d | 2009-08-17 A | 2009-09-14 A |  | 100% |  | Scheidegger Ruedi | 176h | 176h |  |  | (3) System Design | medium | (2) Normal |  |  |  |  |  |
| 741 | 1.2.3.4.2.3.3.1.6.2.1 | 6.2.1 Requested Budget |  | 20d | 2009-08-17 A | 2009-09-14 A |  | 100% |  | Scheidegger Ruedi [5%] | 8h | 8h |  |  | (3) System Design | medium | (2) Normal | Stream Lead Project Support | Scheidegger Ruedi (KIRO 11) |  |  |  |
| 742 | 1.2.3.4.2.3.3.1.6.2.2 | 6.2.2 Milestones |  | 20d | 2009-08-17 A | 2009-09-14 A |  | 100% |  | Scheidegger Ruedi [5%] | 8h | 8h |  |  | (3) System Design | medium | (2) Normal | Stream Lead Project Support | Scheidegger Ruedi (KIRO 11) |  |  |  |
| 743 | 1.2.3.4.2.3.3.1.7 | Appendix A Link(s) to related documents |  | 20d | 2009-08-17 A | 2009-09-14 A |  | 100% |  | all [5%] | 8h | 8h |  |  | (3) System Design | medium | (2) Normal | Stream Lead Project Support |  |  |  |  |
| 744 | 1.2.3.4.2.3.3.1.8 | Appendix B Reference Documents, Glossary and Abbreviations |  | 20d | 2009-08-17 A | 2009-09-14 A |  | 100% |  | Lüthi Rico F. [5%] | 8h | 8h | 8 | 8 | (3) System Design | medium | (2) Normal | Stream Lead Project Support | Lüthi Rico F. (KIRO 12) |  |  |  |
| 745 | 1.2.3.4.2.3.3.1.9 | Appendix C Change Requests |  | 20d | 2009-08-17 A | 2009-09-14 A |  | 100% |  | Hess Andreas [5%] | 8h | 8h |  |  | (3) System Design | medium | (2) Normal | Stream Lead Project Support | Hess Andreas (KIRO 11) |  |  |  |
| 746 | 1.2.3.4.2.3.4 | **RO postprocessing** |  | 6.75d? | 2009-09-14 A | 2009-09-22 A | 705 | 100% |  |  | 142h | 142h | 28 | 28 | (3) System Design | medium | (2) Normal |  |  |  |  |  |
| 747 | 1.2.3.4.2.3.4.1 | Final version checked in | milestone | 0d | 2009-09-14 A | 2009-09-14 A |  | 100% | as late as possible |  |  |  |  |  | (3) System Design | medium | (2) Normal | Stream Lead Project Support | Trindler Markus (KIRO 12) | Trindler Markus (KIRO 12) | IT-PV Phase Documents |  |
| 748 | 1.2.3.4.2.3.4.2 | RO layout update |  | 1d? | 2009-09-14 A | 2009-09-15 A | 747 | 100% |  | Lüthi Rico F. | 8h | 8h | 8 | 8 | (3) System Design | medium | (2) Normal | Stream Lead Project Support | Lüthi Rico F. (KIRO 12) |  |  |  |
| 749 | 1.2.3.4.2.3.4.3 | Sending PO for Review |  | 2h | 2009-09-15 A | 2009-09-15 A | 748 | 100% | as late as possible | Lüthi Rico F. | 2h | 2h | 2 | 2 | (3) System Design | medium | (2) Normal | Stream Lead Project Support | Lüthi Rico F. (KIRO 12) |  |  |  |
| 750 | 1.2.3.4.2.3.4.4 | Review from experts |  | 3d | 2009-09-15 A | 2009-09-18 A | 749 | 100% | as late as possible |  |  |  |  |  | (3) System Design | medium | (2) Normal | Stream Lead Project Support | Scheidegger Ruedi (KIRO 11) | Trindler Markus (KIRO 12) | IT-PV Phase Documents |  |
| 751 | 1.2.3.4.2.3.4.5 | Review from QAS |  | 3d | 2009-09-15 A | 2009-09-18 A | 749 | 100% | as late as possible | Koch Thomas | 24h | 24h |  |  | (3) System Design | medium | (2) Normal | Stream Lead Project Support | Koch Thomas (KIRO 1) | Polisano Riccardo (KIRO 11) | IT-PV Phase Documents |  |
| 752 | 1.2.3.4.2.3.4.6 | Feedback to authors |  | 2h | 2009-09-18 A | 2009-09-18 A | 750, 751 | 100% | as late as possible | Scheidegger Ruedi | 2h | 2h |  |  | (3) System Design | medium | (2) Normal | Stream Lead Project Support | Scheidegger Ruedi (KIRO 11) | Trindler Markus (KIRO 12) | IT-PV Phase Documents |  |
| 753 | 1.2.3.4.2.3.4.7 | Last review finished | milestone | 0d | 2009-09-18 A | 2009-09-18 A | 752 | 100% | as late as possible | Trindler Markus |  |  |  |  | (3) System Design | medium | (2) Normal | Stream Lead Project Support | Trindler Markus (KIRO 12) | Trindler Markus (KIRO 12) | IT-PV Phase Documents |  |
| 754 | 1.2.3.4.2.3.4.8 | Reworking of documents |  | 1d | 2009-09-18 A | 2009-09-21 A | 753 | 100% | as late as possible | Hess Andreas; Neumann Gabriele; Zulliger Markus; Bennek Robert; Lackmann Ralph; Lüthi Rico F.; Polisano Riccardo; Scheidegger Ruedi; Telgheider Jörg; Trindler Markus | 80h | 80h | 8 | 8 | (3) System Design | medium | (2) Normal | Stream Lead Project Support | Scheidegger Ruedi (KIRO 11) | Trindler Markus (KIRO 12) | IT-PV Phase Documents | Trindler Markus (KIRO 12) |
| 755 | 1.2.3.4.2.3.4.9 | Document Adjustment |  | 1d | 2009-09-21 A | 2009-09-22 A | 754 | 100% | as late as possible | Trindler Markus; Lüthi Rico F.; Scheidegger Ruedi | 24h | 24h | 8 | 8 | (3) System Design | medium | (2) Normal | Stream Lead Project Support | Scheidegger Ruedi (KIRO 11) | Trindler Markus (KIRO 12) | IT-PV Phase Documents | Trindler Markus (KIRO 12) |
| 756 | 1.2.3.4.2.3.4.10 | Upload Documents to IT-PV |  | 2h | 2009-09-22 A | 2009-09-22 A | 755 | 100% | as late as possible | Lüthi Rico F. | 2h | 2h | 2 | 2 | (3) System Design | medium | (2) Normal | Stream Lead Project Support | Scheidegger Ruedi (KIRO 11) | Lüthi Rico F. (KIRO 12) | IT-PV Phase Documents |  |
| 757 | 1.2.3.4.2.3.4.11 | Document finished an checked in in ITPV | milestone | 0d | 2009-09-22 A | 2009-09-22 A | 756 | 100% | as late as possible |  |  |  |  |  | (3) System Design | medium | (2) Normal | Stream Lead Project Support | Trindler Markus (KIRO 12) | Trindler Markus (KIRO 12) | IT-PV Phase Documents |  |
| 758 | 1.2.3.4.2.3.5 | End PRB Artifacts | milestone | 0d | 2009-09-22 A | 2009-09-22 A | 757, 970, 959 | 100% |  |  |  |  |  |  | (3) System Design | medium | (2) Normal | Stream Lead Project Support |  |  |  |  |

| ID | WBS | Task | Type | Duration | Start | Finish | Predecessors | Complete | Constraint | Resources | Work | Actual work | Cost | Actual cost | Text11 | Text23 | Text30 | Text1 | Text13 | Text25 |
| --- | --- | --- | --- | --- | --- | --- | --- | --- | --- | --- | --- | --- | --- | --- | --- | --- | --- | --- | --- | --- |
| 759 | 1.2.3.4.2.4 | **PRB Artifacts (Projects Support, PMO Config Mgmt)** |  | 15d | 2009-08-25 A | 2009-09-15 A | 689 | 100% |  |  | 72h | 72h | 72 | 72 | (3) System Design | medium | (2) Normal |  |  |  |
| 760 | 1.2.3.4.2.4.1 | Action Item/Issue/Escalation Tracker Template |  | 15d | 2009-08-25 A | 2009-09-15 A |  | 100% | as late as possible | Lüthi Rico F. [5%] | 6h | 6h | 6 | 6 | (3) System Design | medium | (2) Normal | Lüthi Rico F. (KIRO 12) | Stream Lead Project Support | Lüthi Rico F. (KIRO 12) |
| 761 | 1.2.3.4.2.4.2 | Baseline Record Template |  | 15d | 2009-08-25 A | 2009-09-15 A |  | 100% | as late as possible | Lüthi Rico F. [5%] | 6h | 6h | 6 | 6 | (3) System Design | medium | (2) Normal | Lüthi Rico F. (KIRO 12) | Stream Lead Project Support | Lüthi Rico F. (KIRO 12) |
| 762 | 1.2.3.4.2.4.3 | Configuration Item List Template |  | 15d | 2009-08-25 A | 2009-09-15 A |  | 100% | as late as possible | Lüthi Rico F. [5%] | 6h | 6h | 6 | 6 | (3) System Design | medium | (2) Normal | Lüthi Rico F. (KIRO 12) | Stream Lead Project Support | Lüthi Rico F. (KIRO 12) |
| 763 | 1.2.3.4.2.4.4 | Configuration Management Plan Template |  | 15d | 2009-08-25 A | 2009-09-15 A |  | 100% | as late as possible | Lüthi Rico F. [5%] | 6h | 6h | 6 | 6 | (3) System Design | medium | (2) Normal | Lüthi Rico F. (KIRO 12) | Stream Lead Project Support | Lüthi Rico F. (KIRO 12) |
| 764 | 1.2.3.4.2.4.5 | Configuration Management Plan Checklist |  | 15d | 2009-08-25 A | 2009-09-15 A |  | 100% | as late as possible | Lüthi Rico F. [5%] | 6h | 6h | 6 | 6 | (3) System Design | medium | (2) Normal | Lüthi Rico F. (KIRO 12) | Stream Lead Project Support | Lüthi Rico F. (KIRO 12) |
| 765 | 1.2.3.4.2.4.6 | Documentation Concept Template |  | 15d | 2009-08-25 A | 2009-09-15 A |  | 100% | as late as possible | Lüthi Rico F. [5%] | 6h | 6h | 6 | 6 | (3) System Design | medium | (2) Normal | Lüthi Rico F. (KIRO 12) | Stream Lead Project Support | Lüthi Rico F. (KIRO 12) |
| 766 | 1.2.3.4.2.4.7 | N+ MS Project Schedule / WBS Template |  | 15d | 2009-08-25 A | 2009-09-15 A |  | 100% | as late as possible | Lüthi Rico F. [5%] | 6h | 6h | 6 | 6 | (3) System Design | medium | (2) Normal | Lüthi Rico F. (KIRO 12) | Stream Lead Project Support | Lüthi Rico F. (KIRO 12) |
| 767 | 1.2.3.4.2.4.8 | Project Change Request / RM Template |  | 15d | 2009-08-25 A | 2009-09-15 A |  | 100% | as late as possible | Lüthi Rico F. [5%] | 6h | 6h | 6 | 6 | (3) System Design | medium | (2) Normal | Lüthi Rico F. (KIRO 12) | Stream Lead Project Support | Lüthi Rico F. (KIRO 12) |
| 768 | 1.2.3.4.2.4.9 | Project Change Request List Template |  | 15d | 2009-08-25 A | 2009-09-15 A |  | 100% | as late as possible | Lüthi Rico F. [5%] | 6h | 6h | 6 | 6 | (3) System Design | medium | (2) Normal | Lüthi Rico F. (KIRO 12) | Stream Lead Project Support | Lüthi Rico F. (KIRO 12) |
| 769 | 1.2.3.4.2.4.10 | Project Organization Template |  | 15d | 2009-08-25 A | 2009-09-15 A |  | 100% | as late as possible | Lüthi Rico F. [5%] | 6h | 6h | 6 | 6 | (3) System Design | medium | (2) Normal | Lüthi Rico F. (KIRO 12) | Stream Lead Project Support | Lüthi Rico F. (KIRO 12) |
| 770 | 1.2.3.4.2.4.11 | Risk Management Plan Template |  | 15d | 2009-08-25 A | 2009-09-15 A |  | 100% | as late as possible | Lüthi Rico F. [5%] | 6h | 6h | 6 | 6 | (3) System Design | medium | (2) Normal | Lüthi Rico F. (KIRO 12) | Stream Lead Project Support | Lüthi Rico F. (KIRO 12) |
| 771 | 1.2.3.4.2.4.12 | Weekly Project Progress Review Report Template |  | 15d | 2009-08-25 A | 2009-09-15 A |  | 100% | as late as possible | Lüthi Rico F. [5%] | 6h | 6h | 6 | 6 | (3) System Design | medium | (2) Normal | Lüthi Rico F. (KIRO 12) | Stream Lead Project Support | Lüthi Rico F. (KIRO 12) |
| 772 | 1.2.3.4.3 | **Configuration Management** |  | 10d? | 2009-09-09 A | 2009-09-22 A |  | 100% |  |  | 32h | 32h | 32 | 32 | (3) System Design | medium | (2) Normal |  |  |  |
| 773 | 1.2.3.4.3.1 | **Basline** |  | 10d? | 2009-09-09 A | 2009-09-22 A |  | 100% |  |  | 32h | 32h | 32 | 32 | (3) System Design | medium | (2) Normal |  |  |  |
| 774 | 1.2.3.4.3.1.1 | Basline Planning |  | 5d | 2009-09-09 A | 2009-09-15 A |  | 100% | as late as possible | Lüthi Rico F. [20%] | 8h | 8h | 8 | 8 | (3) System Design | medium | (2) Normal |  | Stream Lead Project Support | Lüthi Rico F. (KIRO 12) |
| 775 | 1.2.3.4.3.1.2 | Basline creation |  | 2d? | 2009-09-16 A | 2009-09-17 A | 774 | 100% | as late as possible | Lüthi Rico F. | 16h | 16h | 16 | 16 | (3) System Design | medium | (2) Normal |  | Stream Lead Project Support | Lüthi Rico F. (KIRO 12) |
| 776 | 1.2.3.4.3.1.3 | Udate Configuration Management Plan & Configuration Item List & Basline Record |  | 3d | 2009-09-18 A | 2009-09-22 A | 775 | 100% | as late as possible | Lüthi Rico F. [33.3%] | 8h | 8h | 8 | 8 | (3) System Design | medium | (2) Normal |  | Stream Lead Project Support | Lüthi Rico F. (KIRO 12) |
| 777 | 1.2.3.4.3.1.4 | Phase Basline created | milestone | 0d | 2009-09-22 A | 2009-09-22 A | 776 | 100% | as late as possible |  |  |  |  |  | (3) System Design | medium | (2) Normal |  | Stream Lead Project Support | Lüthi Rico F. (KIRO 12) |
| 778 | 1.2.3.5 | **Requirement Management** |  | 49.5d? | 2009-07-14 A | 2009-09-21 A |  | 100% |  |  | 108h | 108h |  |  | (3) System Design | medium | (2) Normal |  |  |  |
| 779 | 1.2.3.5.1 | **Role Management** |  | 49.5d | 2009-07-14 A | 2009-09-21 A |  | 100% |  |  | 22h | 22h |  |  | (3) System Design | medium | (2) Normal |  |  |  |
| 780 | 1.2.3.5.1.1 | **Reporting** |  | 49.5d | 2009-07-14 A | 2009-09-21 A |  | 100% |  |  | 22h | 22h |  |  | (3) System Design | medium | (2) Normal |  |  |  |
| 781 | 1.2.3.5.1.1.1 | Preparation Stream Status Report |  | 1d | 2009-07-14 A | 2009-07-15 A |  | 100% | as late as possible | Hess Andreas [25%] | 2h | 2h |  |  | (3) System Design | medium | (2) Normal |  | Requirements Management | Hess Andreas (KIRO 11) |
| 782 | 1.2.3.5.1.1.2 | Preparation Stream Status Report |  | 1d | 2009-07-20 A | 2009-07-20 A |  | 100% | as late as possible | Hess Andreas [25%] | 2h | 2h |  |  | (3) System Design | medium | (2) Normal |  | Requirements Management | Hess Andreas (KIRO 11) |
| 783 | 1.2.3.5.1.1.3 | Preparation Stream Status Report |  | 1d | 2009-07-27 A | 2009-07-27 A |  | 100% | as late as possible | Hess Andreas [25%] | 2h | 2h |  |  | (3) System Design | medium | (2) Normal |  | Requirements Management | Hess Andreas (KIRO 11) |
| 784 | 1.2.3.5.1.1.4 | Preparation Stream Status Report |  | 1d | 2009-08-03 A | 2009-08-03 A |  | 100% | as late as possible | Hess Andreas [25%] | 2h | 2h |  |  | (3) System Design | medium | (2) Normal |  | Requirements Management | Hess Andreas (KIRO 11) |
| 785 | 1.2.3.5.1.1.5 | Preparation Stream Status Report |  | 1d | 2009-08-10 A | 2009-08-10 A |  | 100% | as late as possible | Hess Andreas [25%] | 2h | 2h |  |  | (3) System Design | medium | (2) Normal |  | Requirements Management | Hess Andreas (KIRO 11) |
| 786 | 1.2.3.5.1.1.6 | Preparation Stream Status Report |  | 1d | 2009-08-17 A | 2009-08-17 A |  | 100% | as late as possible | Hess Andreas [25%] | 2h | 2h |  |  | (3) System Design | medium | (2) Normal |  | Requirements Management | Hess Andreas (KIRO 11) |
| 787 | 1.2.3.5.1.1.7 | Preparation Stream Status Report |  | 1d | 2009-08-24 A | 2009-08-24 A |  | 100% | as late as possible | Hess Andreas [25%] | 2h | 2h |  |  | (3) System Design | medium | (2) Normal |  | Requirements Management | Hess Andreas (KIRO 11) |
| 788 | 1.2.3.5.1.1.8 | Preparation Stream Status Report |  | 1d | 2009-08-31 A | 2009-08-31 A |  | 100% | as late as possible | Hess Andreas [25%] | 2h | 2h |  |  | (3) System Design | medium | (2) Normal |  | Requirements Management | Hess Andreas (KIRO 11) |
| 789 | 1.2.3.5.1.1.9 | Preparation Stream Status Report |  | 1d | 2009-09-07 A | 2009-09-07 A |  | 100% | as late as possible | Hess Andreas [25%] | 2h | 2h |  |  | (3) System Design | medium | (2) Normal |  | Requirements Management | Hess Andreas (KIRO 11) |
| 790 | 1.2.3.5.1.1.10 | Preparation Stream Status Report |  | 1d | 2009-09-14 A | 2009-09-14 A |  | 100% | as late as possible | Hess Andreas [25%] | 2h | 2h |  |  | (3) System Design | medium | (2) Normal |  | Requirements Management | Hess Andreas (KIRO 11) |
| 791 | 1.2.3.5.1.1.11 | Preparation Stream Status Report |  | 1d | 2009-09-21 A | 2009-09-21 A |  | 100% | as late as possible | Hess Andreas [25%] | 2h | 2h |  |  | (3) System Design | medium | (2) Normal |  | Requirements Management | Hess Andreas (KIRO 11) |

| ID | WBS | Task | Duration | Start | Finish | Predecessors | Complete | Constraint | Deadline | Resources | Work | Actual work | Text11 | Text23 | Text30 | Text13 | Text25 |
| --- | --- | --- | --- | --- | --- | --- | --- | --- | --- | --- | --- | --- | --- | --- | --- | --- | --- |
| 792 | 1.2.3.5.2 | **Preparation System Design Phase** | 19.5d? | 2009-07-14 A | 2009-08-10 A |  | 100% |  |  |  | 80h | 80h | (3) System Design | medium | (2) Normal |  |  |
| 793 | 1.2.3.5.2.1 | JIRA clean up | 10d? | 2009-07-14 A | 2009-07-28 A |  | 100% |  |  | Hess Andreas [50%] | 40h | 40h | (3) System Design | medium | (2) Normal | Requirements Management | Hess Andreas (KIRO 11) |
| 794 | 1.2.3.5.2.2 | Process Planning Requiremet Management | 10d? | 2009-07-28 A | 2009-08-10 A | 670SS | 100% |  |  | Hess Andreas [50%] | 40h | 40h | (3) System Design | medium | (2) Normal | Requirements Management | Hess Andreas (KIRO 11) |
| 795 | 1.2.3.5.3 | **PRB Artifacts Req. Mgmt** | 15d | 2009-08-25 A | 2009-09-15 A | 689 | 100% |  |  |  | 6h | 6h | (3) System Design | medium | (2) Normal |  |  |
| 796 | 1.2.3.5.3.1 | Project Requirements List Template | 15d | 2009-08-25 A | 2009-09-15 A |  | 100% | as late as possible |  | Hess Andreas [5%] | 6h | 6h | (3) System Design | medium | (2) Normal | Requirements Management | Hess Andreas (KIRO 11) |
| 797 | 1.2.3.6 | **Platform Design** | 49.5d? | 2009-07-14 A | 2009-09-21 A |  | 100% |  |  |  | 1008h | 1008h | (3) System Design | medium | (2) Normal |  |  |
| 798 | 1.2.3.6.1 | **Stream Management** | 49.5d | 2009-07-14 A | 2009-09-21 A |  | 100% |  |  |  | 22h | 22h | (3) System Design | medium | (2) Normal |  |  |
| 799 | 1.2.3.6.1.1 | **Reporting** | 49.5d | 2009-07-14 A | 2009-09-21 A |  | 100% |  |  |  | 22h | 22h | (3) System Design | medium | (2) Normal |  |  |
| 800 | 1.2.3.6.1.1.1 | Preparation Stream Status Report | 1d | 2009-07-14 A | 2009-07-15 A |  | 100% | as late as possible |  | Trindler Markus [25%] | 2h | 2h | (3) System Design | medium | (2) Normal | Stream Lead Architecture | Trindler Markus (KIRO 12) |
| 801 | 1.2.3.6.1.1.2 | Preparation Stream Status Report | 1d | 2009-07-20 A | 2009-07-20 A |  | 100% | as late as possible |  | Trindler Markus [25%] | 2h | 2h | (3) System Design | medium | (2) Normal | Stream Lead Architecture | Trindler Markus (KIRO 12) |
| 802 | 1.2.3.6.1.1.3 | Preparation Stream Status Report | 1d | 2009-07-27 A | 2009-07-27 A |  | 100% | as late as possible |  | Trindler Markus [25%] | 2h | 2h | (3) System Design | medium | (2) Normal | Stream Lead Architecture | Trindler Markus (KIRO 12) |
| 803 | 1.2.3.6.1.1.4 | Preparation Stream Status Report | 1d | 2009-08-03 A | 2009-08-03 A |  | 100% | as late as possible |  | Trindler Markus [25%] | 2h | 2h | (3) System Design | medium | (2) Normal | Stream Lead Architecture | Trindler Markus (KIRO 12) |
| 804 | 1.2.3.6.1.1.5 | Preparation Stream Status Report | 1d | 2009-08-10 A | 2009-08-10 A |  | 100% | as late as possible |  | Trindler Markus [25%] | 2h | 2h | (3) System Design | medium | (2) Normal | Stream Lead Architecture | Trindler Markus (KIRO 12) |
| 805 | 1.2.3.6.1.1.6 | Preparation Stream Status Report | 1d | 2009-08-17 A | 2009-08-17 A |  | 100% | as late as possible |  | Trindler Markus [25%] | 2h | 2h | (3) System Design | medium | (2) Normal | Stream Lead Architecture | Trindler Markus (KIRO 12) |
| 806 | 1.2.3.6.1.1.7 | Preparation Stream Status Report | 1d | 2009-08-24 A | 2009-08-24 A |  | 100% | as late as possible |  | Trindler Markus [25%] | 2h | 2h | (3) System Design | medium | (2) Normal | Stream Lead Architecture | Trindler Markus (KIRO 12) |
| 807 | 1.2.3.6.1.1.8 | Preparation Stream Status Report | 1d | 2009-08-31 A | 2009-08-31 A |  | 100% | as late as possible |  | Trindler Markus [25%] | 2h | 2h | (3) System Design | medium | (2) Normal | Stream Lead Architecture | Trindler Markus (KIRO 12) |
| 808 | 1.2.3.6.1.1.9 | Preparation Stream Status Report | 1d | 2009-09-07 A | 2009-09-07 A |  | 100% | as late as possible |  | Trindler Markus [25%] | 2h | 2h | (3) System Design | medium | (2) Normal | Stream Lead Architecture | Trindler Markus (KIRO 12) |
| 809 | 1.2.3.6.1.1.10 | Preparation Stream Status Report | 1d | 2009-09-14 A | 2009-09-14 A |  | 100% | as late as possible |  | Trindler Markus [25%] | 2h | 2h | (3) System Design | medium | (2) Normal | Stream Lead Architecture | Trindler Markus (KIRO 12) |
| 810 | 1.2.3.6.1.1.11 | Preparation Stream Status Report | 1d | 2009-09-21 A | 2009-09-21 A |  | 100% | as late as possible |  | Trindler Markus [25%] | 2h | 2h | (3) System Design | medium | (2) Normal |  | Trindler Markus (KIRO 12) |
| 811 | 1.2.3.6.2 | **PRB Artifacts Platform Design** | 15d | 2009-08-25 A | 2009-09-15 A | 689 | 100% |  |  |  | 12h | 12h | (3) System Design | medium | (2) Normal |  |  |
| 812 | 1.2.3.6.2.1 | System Specification (english) | 15d | 2009-08-25 A | 2009-09-15 A |  | 100% | as late as possible |  | Trindler Markus [5%] | 6h | 6h | (3) System Design | medium | (2) Normal | Stream Lead Architecture | Trindler Markus (KIRO 12) |
| 813 | 1.2.3.6.2.2 | System Specification Security Design | 15d | 2009-08-25 A | 2009-09-15 A |  | 100% | as late as possible |  | Hermann René [5%] | 6h | 6h | (3) System Design | medium | (2) Normal | Stream Lead Architecture | Herrmann René (KIRO 12) |
| 814 | 1.2.3.6.3 | **preparation of the SD phase** | 35d | 2009-08-03 A | 2009-09-18 A |  | 100% |  |  |  | 14h | 14h |  | medium | (2) Normal |  |  |
| 815 | 1.2.3.6.3.1 | Requirements clean up | 35d | 2009-08-03 A | 2009-09-18 A |  | 100% | as late as possible | 2009-09-18 | Trindler Markus [5%] | 14h | 14h |  | medium | (2) Normal |  |  |

Notes:
- 815: Dringende Arbeitsliste Meeting 03. und 05.08.09: / Requirements (JIRA) Aufräumen / ·Nach Supplier Priorisieren / Stream Name zu jedem Requirement zufügen

| ID | WBS | Task | Duration | Start | Finish | Predecessors | Complete | Constraint | Deadline | Resources | Work | Actual work | Text23 | Text30 | Text11 | Text13 | Text25 |
| --- | --- | --- | --- | --- | --- | --- | --- | --- | --- | --- | --- | --- | --- | --- | --- | --- | --- |
| 816 | 1.2.3.6.4 | **Requirement know-how transfer** | 25d | 2009-08-03 A | 2009-09-04 A |  | 100% |  | 2009-09-06 |  | 32h | 32h | medium | (2) Normal |  |  |  |
| 817 | 1.2.3.6.4.1 | Know how transfer to ToolChain | 25d | 2009-08-03 A | 2009-09-04 A |  | 100% | as late as possible |  | Trindler Markus [4%] | 8h | 8h | medium | (2) Normal |  |  |  |
| 818 | 1.2.3.6.4.2 | Know how transfer to CI | 25d | 2009-08-03 A | 2009-09-04 A |  | 100% | as late as possible |  | Trindler Markus [4%] | 8h | 8h | medium | (2) Normal |  |  |  |
| 819 | 1.2.3.6.4.3 | Know how transfer to Batch | 25d | 2009-08-03 A | 2009-09-04 A |  | 100% | as late as possible |  | Trindler Markus [4%] | 8h | 8h | medium | (2) Normal |  |  |  |
| 820 | 1.2.3.6.4.4 | Know how transfer to CFW | 25d | 2009-08-03 A | 2009-09-04 A |  | 100% | as late as possible |  | Trindler Markus [4%] | 8h | 8h | medium | (2) Normal |  |  |  |
| 821 | 1.2.3.6.5 | Temp Task | 46.67d? | 2009-07-14 A | 2009-09-17 A |  | 100% |  |  | Schreier Balz [45%] | 168h | 168h | medium | (2) Normal | (3) System Design | Stream Lead Architecture | Schreier Balz (KIRO 12) |
| 822 | 1.2.3.6.6 | Temp Task | 42.86d? | 2009-07-14 A | 2009-09-11 A |  | 100% |  |  | Bennek Robert [35%] | 120h | 120h | medium | (2) Normal | (3) System Design | Stream Lead Architecture | Bennek Robert (KIRO 14) |
| 823 | 1.2.3.6.7 | Temp Task | 46.67d? | 2009-07-14 A | 2009-09-17 A |  | 100% |  |  | Neumann Gabriele [60%] | 224h | 224h | medium | (2) Normal | (3) System Design | Stream Lead Architecture | Neumann Gabriele (KIRO 14) |
| 824 | 1.2.3.6.8 | Temp Task | 40d? | 2009-07-14 A | 2009-09-08 A |  | 100% |  |  | Andreas Thomas [10%] | 32h | 32h | medium | (2) Normal | (3) System Design | Stream Lead Architecture |  |
| 825 | 1.2.3.6.9 | Temp Task | 40d? | 2009-07-14 A | 2009-09-08 A |  | 100% |  |  | Geppert Andreas [15%] | 48h | 48h | medium | (2) Normal | (3) System Design | Stream Lead Architecture |  |
| 826 | 1.2.3.6.10 | Temp Task | 40d? | 2009-07-14 A | 2009-09-08 A |  | 100% |  |  | Kradolfer Markus [20%] | 64h | 64h | medium | (2) Normal | (3) System Design | Stream Lead Architecture |  |
| 827 | 1.2.3.6.11 | Temp Task | 40d? | 2009-07-14 A | 2009-09-08 A |  | 100% |  |  | Duma Claudiu [20%] | 64h | 64h | medium | (2) Normal | (3) System Design | Stream Lead Architecture |  |
| 828 | 1.2.3.6.12 | Temp Task | 43.33d? | 2009-07-14 A | 2009-09-11 A |  | 100% |  |  | Meyer Andrea P [60%] | 208h | 208h | medium | (2) Normal | (3) System Design | Stream Lead Architecture |  |
| 829 | 1.2.3.7 | **JAP Integration** | 61.5d? | 2009-07-14 A | 2009-10-07 A |  | 100% |  |  |  | 1139.6h | 1139.6h | medium | (2) Normal | (3) System Design |  |  |
| 830 | 1.2.3.7.1 | **Stream Management** | 49.5d | 2009-07-14 A | 2009-09-21 A |  | 100% |  |  |  | 30h | 30h | medium | (2) Normal | (3) System Design |  |  |
| 831 | 1.2.3.7.1.1 | **Reporting** | 49.5d | 2009-07-14 A | 2009-09-21 A |  | 100% |  |  |  | 22h | 22h | medium | (2) Normal | (3) System Design |  |  |
| 832 | 1.2.3.7.1.1.1 | Preparation Stream Status Report | 1d | 2009-07-14 A | 2009-07-15 A |  | 100% | as late as possible |  | Lackmann Ralph [25%] | 2h | 2h | medium | (2) Normal | (3) System Design | Stream Lead Architecture |  |
| 833 | 1.2.3.7.1.1.2 | Preparation Stream Status Report | 1d | 2009-07-20 A | 2009-07-20 A |  | 100% | as late as possible |  | Lackmann Ralph [25%] | 2h | 2h | medium | (2) Normal | (3) System Design | Stream Lead Architecture |  |
| 834 | 1.2.3.7.1.1.3 | Preparation Stream Status Report | 1d | 2009-07-27 A | 2009-07-27 A |  | 100% | as late as possible |  | Lackmann Ralph [25%] | 2h | 2h | medium | (2) Normal | (3) System Design | Stream Lead Architecture |  |
| 835 | 1.2.3.7.1.1.4 | Preparation Stream Status Report | 1d | 2009-08-03 A | 2009-08-03 A |  | 100% | as late as possible |  | Lackmann Ralph [25%] | 2h | 2h | medium | (2) Normal | (3) System Design | Stream Lead Architecture |  |
| 836 | 1.2.3.7.1.1.5 | Preparation Stream Status Report | 1d | 2009-08-10 A | 2009-08-10 A |  | 100% | as late as possible |  | Lackmann Ralph [25%] | 2h | 2h | medium | (2) Normal | (3) System Design | Stream Lead Architecture |  |
| 837 | 1.2.3.7.1.1.6 | Preparation Stream Status Report | 1d | 2009-08-17 A | 2009-08-17 A |  | 100% | as late as possible |  | Lackmann Ralph [25%] | 2h | 2h | medium | (2) Normal | (3) System Design | Stream Lead Architecture |  |
| 838 | 1.2.3.7.1.1.7 | Preparation Stream Status Report | 1d | 2009-08-24 A | 2009-08-24 A |  | 100% | as late as possible |  | Lackmann Ralph [25%] | 2h | 2h | medium | (2) Normal | (3) System Design | Stream Lead Architecture |  |
| 839 | 1.2.3.7.1.1.8 | Preparation Stream Status Report | 1d | 2009-08-31 A | 2009-08-31 A |  | 100% | as late as possible |  | Lackmann Ralph [25%] | 2h | 2h | medium | (2) Normal | (3) System Design | Stream Lead Architecture |  |
| 840 | 1.2.3.7.1.1.9 | Preparation Stream Status Report | 1d | 2009-09-07 A | 2009-09-07 A |  | 100% | as late as possible |  | Lackmann Ralph [25%] | 2h | 2h | medium | (2) Normal | (3) System Design | Stream Lead Architecture |  |
| 841 | 1.2.3.7.1.1.10 | Preparation Stream Status Report | 1d | 2009-09-14 A | 2009-09-14 A |  | 100% | as late as possible |  | Lackmann Ralph [25%] | 2h | 2h | medium | (2) Normal | (3) System Design | Stream Lead Architecture |  |
| 842 | 1.2.3.7.1.1.11 | Preparation Stream Status Report | 1d | 2009-09-21 A | 2009-09-21 A |  | 100% | as late as possible |  | Lackmann Ralph [25%] | 2h | 2h | medium | (2) Normal | (3) System Design | Stream Lead Architecture |  |
| 843 | 1.2.3.7.1.2 | Detailed planning of System Design Phase | 4d | 2009-08-13 A | 2009-08-18 A | 836FS+2d | 100% |  |  | Lackmann Ralph [25%] | 8h | 8h | medium | (2) Normal | (3) System Design | Stream Lead Architecture |  |

| ID | WBS | Task | Type | Duration | Start | Finish | Predecessors | Complete | Constraint | Deadline | Resources | Work | Actual work | Text23 | Text30 | Text11 | Text13 |
| --- | --- | --- | --- | --- | --- | --- | --- | --- | --- | --- | --- | --- | --- | --- | --- | --- | --- |
| 844 | 1.2.3.7.2 | **General Organisation** |  | 22d? | 2009-08-03 A | 2009-09-01 A |  | 100% |  |  |  | 25.6h | 25.6h | medium | (2) Normal |  |  |
| 845 | 1.2.3.7.2.1 | Develop interface diagramm for the work flows of Integration, Engineering, Testing, Supplier Mgmt ans Supplier |  | 22d? | 2009-08-03 A | 2009-09-01 A |  | 100% | as late as possible | 2009-09-01 | Lackmann Ralph [10%] | 17.6h | 17.6h | medium | (2) Normal |  |  |
| 846 | 1.2.3.7.2.2 | Develop Supplier Delivery Process |  | 22d | 2009-08-03 A | 2009-09-01 A |  | 100% | as late as possible | 2009-09-01 | Lackmann Ralph [4.5%] | 8h | 8h | medium | (2) Normal |  |  |
| 847 | 1.2.3.7.3 | **PRB Artifacts Integration, Supplier Mgmt** |  | 15d | 2009-08-25 A | 2009-09-15 A | 689 | 100% |  |  |  | 12h | 12h | medium | (2) Normal | (3) System Design |  |
| 848 | 1.2.3.7.3.1 | Internal Agreement Template |  | 15d | 2009-08-25 A | 2009-09-15 A |  | 100% | as late as possible |  | Lackmann Ralph [5%] | 6h | 6h | medium | (2) Normal | (3) System Design | Stream Lead JAP Integration |
| 849 | 1.2.3.7.3.2 | Organizational Solution Concept Template |  | 15d | 2009-08-25 A | 2009-09-15 A |  | 100% | as late as possible |  | Lackmann Ralph [5%] | 6h | 6h | medium | (2) Normal | (3) System Design | Stream Lead JAP Integration |
| 850 | 1.2.3.7.4 | **Integration Mgmt** |  | 45.71d? | 2009-07-14 A | 2009-09-16 A |  | 100% |  |  |  | 192h | 192h | medium | (2) Normal | (3) System Design |  |
| 851 | 1.2.3.7.4.1 | Temp Task |  | 45.71d? | 2009-07-14 A | 2009-09-16 A |  | 100% |  |  | Bu Sigve [35%] | 128h | 128h | medium | (2) Normal | (3) System Design | Stream Lead Architecture |
| 852 | 1.2.3.7.4.2 | Temp Task |  | 44.44d? | 2009-07-14 A | 2009-09-14 A |  | 100% |  |  | Oezgen Oya [18%] | 64h | 64h | medium | (2) Normal | (3) System Design | Stream Lead Architecture |
| 853 | 1.2.3.7.5 | **Supplier Mgmt** |  | 29d | 2009-08-28 A | 2009-10-07 A |  | 100% |  |  |  | 880h | 880h | medium | (2) Normal | (3) System Design |  |
| 854 | 1.2.3.7.5.1 | **Supplier Agreement** |  | 27.5d | 2009-08-31 A | 2009-10-07 A |  | 100% |  |  |  | 88.8h | 88.8h | medium | (2) Normal |  |  |
| 855 | 1.2.3.7.5.1.1 | Consolidation Supplier List (only in Sharepoint) |  | 0.5d | 2009-08-31 A | 2009-08-31 A |  | 100% | start no earlier than 2009-08-31 |  | Lackmann Ralph | 4h | 4h | medium | (2) Normal |  |  |
| 856 | 1.2.3.7.5.1.2 | Distribution Working Plan for PG1 |  | 0.5d | 2009-08-31 A | 2009-08-31 A |  | 100% | start no earlier than 2009-08-31 |  | Lackmann Ralph | 4h | 4h | medium | (2) Normal |  |  |
| 857 | 1.2.3.7.5.1.3 | Finalize Distribution Working Plan |  | 1.5d | 2009-09-10 A | 2009-09-11 A |  | 100% | start no earlier than 2009-09-10 |  | Lackmann Ralph | 12h | 12h | medium | (2) Normal |  |  |
| 858 | 1.2.3.7.5.1.4 | Review process Delivery and Integration (only in ARIS) |  | 1.5d | 2009-09-10 A | 2009-09-11 A |  | 100% | start no earlier than 2009-09-10 |  | Polisano Riccardo | 12h | 12h | medium | (2) Normal |  |  |
| 859 | 1.2.3.7.5.1.5 | Finalize Process Supplier Agreement |  | 2d | 2009-09-17 A | 2009-09-18 A |  | 100% | start no earlier than 2009-09-17 |  | Polisano Riccardo | 16h | 16h | medium | (2) Normal |  |  |
| 860 | 1.2.3.7.5.1.6 | Finalize Supplier Agreeement document |  | 2.5d | 2009-09-16 A | 2009-09-18 A |  | 100% | start no earlier than 2009-09-16 |  | Lackmann Ralph | 20h | 20h | medium | (2) Normal |  |  |
| 861 | 1.2.3.7.5.1.7 | Send Supplier Agreement |  | 0.1d | 2009-09-18 A | 2009-09-18 A |  | 100% | start no earlier than 2009-09-18 |  | Lackmann Ralph | 0.8h | 0.8h | medium | (2) Normal |  |  |
| 862 | 1.2.3.7.5.1.8 | Signature Supplier Agreement | milestone | 0d | 2009-10-07 A | 2009-10-07 A |  | 100% | as late as possible |  | Participans |  |  | medium | (2) Normal |  |  |
| 863 | 1.2.3.7.5.1.9 | Input for Measurement Plan |  | 0.5d | 2009-08-31 A | 2009-08-31 A |  | 100% | start no earlier than 2009-08-31 |  | Lackmann Ralph | 4h | 4h | medium | (2) Normal |  |  |
| 864 | 1.2.3.7.5.1.10 | Measurement Plan |  | 1d | 2009-09-11 A | 2009-09-11 A |  | 100% | start no earlier than 2009-09-11 |  | Polisano Riccardo | 8h | 8h | medium | (2) Normal |  |  |
| 865 | 1.2.3.7.5.1.11 | Dashboard |  | 1d | 2009-09-18 A | 2009-09-18 A |  | 100% | start no earlier than 2009-09-18 |  | Polisano Riccardo | 8h | 8h | medium | (2) Normal |  |  |
| 866 | 1.2.3.7.5.1.12 | First Playgroung Delivery | milestone | 0d | 2009-09-25 A | 2009-09-25 A |  | 100% | as late as possible |  | Participans |  |  | medium | (2) Normal |  |  |
| 867 | 1.2.3.7.5.1.13 | Measument | milestone | 0d | 2009-09-29 A | 2009-09-29 A |  | 100% | must finish on 2009-09-29 |  | Lackmann Ralph |  |  | medium | (2) Normal |  |  |

Notes:
- 845: Dringende Arbeitsliste Meeting 03. und 05.08.09:/ Entwurf einer Ablaufdefinition für Integration, Engineering, Testing, Supplier Management, Supplier. / ·Erstellen einer Übersicht über den Ablauf und der Zusammenarbeit der Integration, Engineering, Testing, Supplier Management, Supplier für das Projekt JAP AR6 (Ablaufdiagramm) / ·Beschreibung der Übersicht in Zenarien und Use Cases.

| ID | WBS | Task | Type | Duration | Start | Finish | Predecessors | Complete | Constraint | Resources | Work | Actual work | Text11 | Text23 | Text30 | Text13 |
| --- | --- | --- | --- | --- | --- | --- | --- | --- | --- | --- | --- | --- | --- | --- | --- | --- |
| 868 | 1.2.3.7.5.2 | **Production of PG1** |  | 20d | 2009-08-28 A | 2009-09-24 A |  | 100% |  |  | 791.2h | 791.2h | (3) System Design | medium | (2) Normal |  |
| 869 | 1.2.3.7.5.2.1 | BEY |  | 20d | 2009-08-28 A | 2009-09-24 A |  | 100% | as late as possible | Participans [21.5%] | 34.4h | 34.4h | (3) System Design | medium | (2) Normal | Stream Lead Architecture |
| 870 | 1.2.3.7.5.2.2 | CFW |  | 20d | 2009-08-28 A | 2009-09-24 A |  | 100% | as late as possible | Participans [21.5%] | 34.4h | 34.4h | (3) System Design | medium | (2) Normal | Stream Lead Architecture |
| 871 | 1.2.3.7.5.2.3 | CYZ |  | 20d | 2009-08-28 A | 2009-09-24 A |  | 100% | as late as possible | Participans [21.5%] | 34.4h | 34.4h | (3) System Design | medium | (2) Normal | Stream Lead Architecture |
| 872 | 1.2.3.7.5.2.4 | ESA |  | 20d | 2009-08-28 A | 2009-09-24 A |  | 100% | as late as possible | Participans [21.5%] | 34.4h | 34.4h | (3) System Design | medium | (2) Normal | Stream Lead Architecture |
| 873 | 1.2.3.7.5.2.5 | JCB |  | 20d | 2009-08-28 A | 2009-09-24 A |  | 100% | as late as possible | Participans [21.5%] | 34.4h | 34.4h | (3) System Design | medium | (2) Normal | Stream Lead Architecture |
| 874 | 1.2.3.7.5.2.6 | JDK |  | 20d | 2009-08-28 A | 2009-09-24 A |  | 100% | as late as possible | Participans [21.5%] | 34.4h | 34.4h | (3) System Design | medium | (2) Normal | Stream Lead Architecture |
| 875 | 1.2.3.7.5.2.7 | JMA |  | 20d | 2009-08-28 A | 2009-09-24 A |  | 100% | as late as possible | Participans [21.5%] | 34.4h | 34.4h | (3) System Design | medium | (2) Normal | Stream Lead Architecture |
| 876 | 1.2.3.7.5.2.8 | JMS |  | 20d | 2009-08-28 A | 2009-09-24 A |  | 100% | as late as possible | Participans [21.5%] | 34.4h | 34.4h | (3) System Design | medium | (2) Normal | Stream Lead Architecture |
| 877 | 1.2.3.7.5.2.9 | KW2 |  | 20d | 2009-08-28 A | 2009-09-24 A |  | 100% | as late as possible | Participans [21.5%] | 34.4h | 34.4h | (3) System Design | medium | (2) Normal | Stream Lead Architecture |
| 878 | 1.2.3.7.5.2.10 | MKH |  | 20d | 2009-08-28 A | 2009-09-24 A |  | 100% | as late as possible | Participans [21.5%] | 34.4h | 34.4h | (3) System Design | medium | (2) Normal | Stream Lead Architecture |
| 879 | 1.2.3.7.5.2.11 | MRE |  | 20d | 2009-08-28 A | 2009-09-24 A |  | 100% | as late as possible | Participans [21.5%] | 34.4h | 34.4h | (3) System Design | medium | (2) Normal | Stream Lead Architecture |
| 880 | 1.2.3.7.5.2.12 | NP1 |  | 20d | 2009-08-28 A | 2009-09-24 A |  | 100% | as late as possible | Participans [21.5%] | 34.4h | 34.4h | (3) System Design | medium | (2) Normal | Stream Lead Architecture |
| 881 | 1.2.3.7.5.2.13 | OCL |  | 20d | 2009-08-28 A | 2009-09-24 A |  | 100% | as late as possible | Participans [21.5%] | 34.4h | 34.4h | (3) System Design | medium | (2) Normal | Stream Lead Architecture |
| 882 | 1.2.3.7.5.2.14 | OX6 |  | 20d | 2009-08-28 A | 2009-09-24 A |  | 100% | as late as possible | Participans [21.5%] | 34.4h | 34.4h | (3) System Design | medium | (2) Normal | Stream Lead Architecture |
| 883 | 1.2.3.7.5.2.15 | TIP |  | 20d | 2009-08-28 A | 2009-09-24 A |  | 100% | as late as possible | Participans [21.5%] | 34.4h | 34.4h | (3) System Design | medium | (2) Normal | Stream Lead Architecture |
| 884 | 1.2.3.7.5.2.16 | WF4 |  | 20d | 2009-08-28 A | 2009-09-24 A |  | 100% | as late as possible | Participans [21.5%] | 34.4h | 34.4h | (3) System Design | medium | (2) Normal | Stream Lead Architecture |
| 885 | 1.2.3.7.5.2.17 | WLS |  | 20d | 2009-08-28 A | 2009-09-24 A |  | 100% | as late as possible | Participans [21.5%] | 34.4h | 34.4h | (3) System Design | medium | (2) Normal | Stream Lead Architecture |
| 886 | 1.2.3.7.5.2.18 | Z88 |  | 20d | 2009-08-28 A | 2009-09-24 A |  | 100% | as late as possible | Participans [21.5%] | 34.4h | 34.4h | (3) System Design | medium | (2) Normal | Stream Lead Architecture |
| 887 | 1.2.3.7.5.2.19 | P9R |  | 20d | 2009-08-28 A | 2009-09-24 A |  | 100% | as late as possible | Participans [21.5%] | 34.4h | 34.4h | (3) System Design | medium | (2) Normal | Stream Lead Architecture |
| 888 | 1.2.3.7.5.2.20 | Z3A |  | 20d | 2009-08-28 A | 2009-09-24 A |  | 100% | as late as possible | Participans [21.5%] | 34.4h | 34.4h | (3) System Design | medium | (2) Normal | Stream Lead Architecture |
| 889 | 1.2.3.7.5.2.21 | F0M |  | 20d | 2009-08-28 A | 2009-09-24 A |  | 100% | as late as possible | Participans [21.5%] | 34.4h | 34.4h | (3) System Design | medium | (2) Normal | Stream Lead Architecture |
| 890 | 1.2.3.7.5.2.22 | V8I |  | 20d | 2009-08-28 A | 2009-09-24 A |  | 100% | as late as possible | Participans [21.5%] | 34.4h | 34.4h | (3) System Design | medium | (2) Normal | Stream Lead Architecture |
| 891 | 1.2.3.7.5.2.23 | I3W |  | 20d | 2009-08-28 A | 2009-09-24 A |  | 100% | as late as possible | Participans [21.5%] | 34.4h | 34.4h | (3) System Design | medium | (2) Normal | Stream Lead Architecture |
| 892 | 1.2.3.7.5.3 | PG1 delivered | milestone | 0d | 2009-09-24 A | 2009-09-24 A | 868 | 100% |  |  |  |  | (3) System Design | medium | (2) Normal | Stream Lead Architecture |

| ID | WBS | Task | Duration | Start | Finish | Predecessors | Complete | Constraint | Resources | Work | Actual work | Text11 | Text23 | Text30 | Text13 |
| --- | --- | --- | --- | --- | --- | --- | --- | --- | --- | --- | --- | --- | --- | --- | --- |
| 893 | 1.2.3.8 | **JAP Engeneering** | 52.5d? | 2009-07-14 A | 2009-09-24 A |  | 100% |  |  | 1462h | 1462h | (3) System Design | medium | (2) Normal |  |
| 894 | 1.2.3.8.1 | **Stream Management** | 50d | 2009-07-14 A | 2009-09-22 A |  | 100% |  |  | 222h | 222h | (3) System Design | medium | (2) Normal |  |
| 895 | 1.2.3.8.1.1 | **Reporting** | 49.5d | 2009-07-14 A | 2009-09-21 A |  | 100% |  |  | 22h | 22h | (3) System Design | medium | (2) Normal |  |
| 896 | 1.2.3.8.1.1.1 | Preparation Stream Status Report | 1d | 2009-07-14 A | 2009-07-15 A |  | 100% | as late as possible | Telgheider Jörg [25%] | 2h | 2h | (3) System Design | medium | (2) Normal | Stream Lead JAP Engineering |
| 897 | 1.2.3.8.1.1.2 | Preparation Stream Status Report | 1d | 2009-07-20 A | 2009-07-20 A |  | 100% | as late as possible | Telgheider Jörg [25%] | 2h | 2h | (3) System Design | medium | (2) Normal | Stream Lead JAP Engineering |
| 898 | 1.2.3.8.1.1.3 | Preparation Stream Status Report | 1d | 2009-07-27 A | 2009-07-27 A |  | 100% | as late as possible | Telgheider Jörg [25%] | 2h | 2h | (3) System Design | medium | (2) Normal | Stream Lead JAP Engineering |
| 899 | 1.2.3.8.1.1.4 | Preparation Stream Status Report | 1d | 2009-08-03 A | 2009-08-03 A |  | 100% | as late as possible | Telgheider Jörg [25%] | 2h | 2h | (3) System Design | medium | (2) Normal | Stream Lead JAP Engineering |
| 900 | 1.2.3.8.1.1.5 | Preparation Stream Status Report | 1d | 2009-08-10 A | 2009-08-10 A |  | 100% | as late as possible | Telgheider Jörg [25%] | 2h | 2h | (3) System Design | medium | (2) Normal | Stream Lead JAP Engineering |
| 901 | 1.2.3.8.1.1.6 | Preparation Stream Status Report | 1d | 2009-08-17 A | 2009-08-17 A |  | 100% | as late as possible | Telgheider Jörg [25%] | 2h | 2h | (3) System Design | medium | (2) Normal | Stream Lead JAP Engineering |
| 902 | 1.2.3.8.1.1.7 | Preparation Stream Status Report | 1d | 2009-08-24 A | 2009-08-24 A |  | 100% | as late as possible | Telgheider Jörg [25%] | 2h | 2h | (3) System Design | medium | (2) Normal | Stream Lead JAP Engineering |
| 903 | 1.2.3.8.1.1.8 | Preparation Stream Status Report | 1d | 2009-08-31 A | 2009-08-31 A |  | 100% | as late as possible | Telgheider Jörg [25%] | 2h | 2h | (3) System Design | medium | (2) Normal | Stream Lead JAP Engineering |
| 904 | 1.2.3.8.1.1.9 | Preparation Stream Status Report | 1d | 2009-09-07 A | 2009-09-07 A |  | 100% | as late as possible | Telgheider Jörg [25%] | 2h | 2h | (3) System Design | medium | (2) Normal | Stream Lead JAP Engineering |
| 905 | 1.2.3.8.1.1.10 | Preparation Stream Status Report | 1d | 2009-09-14 A | 2009-09-14 A |  | 100% | as late as possible | Telgheider Jörg [25%] | 2h | 2h | (3) System Design | medium | (2) Normal | Stream Lead JAP Engineering |
| 906 | 1.2.3.8.1.1.11 | Preparation Stream Status Report | 1d | 2009-09-21 A | 2009-09-21 A |  | 100% | as late as possible | Telgheider Jörg [25%] | 2h | 2h | (3) System Design | medium | (2) Normal | Stream Lead JAP Engineering |
| 907 | 1.2.3.8.1.2 | Temp Task | 50d | 2009-07-14 A | 2009-09-22 A |  | 100% |  | Telgheider Jörg [50%] | 200h | 200h | (3) System Design | medium | (2) Normal | Stream Lead JAP Engineering |
| 908 | 1.2.3.8.2 | **Production of PG1** | 52.5d? | 2009-07-14 A | 2009-09-24 A |  | 100% |  |  | 1240h | 1240h | (3) System Design | medium | (2) Normal |  |
| 909 | 1.2.3.8.2.1 | Ordering Tool | 16d? | 2009-09-03 A | 2009-09-24 A |  | 100% | as late as possible | Janosevic Dejan | 128h | 128h | (3) System Design | medium | (2) Normal | Stream Lead Architecture |
| 910 | 1.2.3.8.2.2 | VCoP | 8d? | 2009-09-03 A | 2009-09-14 A |  | 100% | as late as possible | Thurner Rubert | 64h | 64h | (3) System Design | medium | (2) Normal | Stream Lead Architecture |
| 911 | 1.2.3.8.2.3 | Central Manager | 8d? | 2009-09-15 A | 2009-09-24 A | 910 | 100% | as late as possible | Thurner Rubert | 64h | 64h | (3) System Design | medium | (2) Normal | Stream Lead Architecture |
| 912 | 1.2.3.8.2.4 | QMB 7.0 | 8d? | 2009-09-03 A | 2009-09-14 A |  | 100% | as late as possible | Paulicke Stephan | 64h | 64h | (3) System Design | medium | (2) Normal | Stream Lead Architecture |
| 913 | 1.2.3.8.2.5 | Testapp / Refapp | 8d? | 2009-09-15 A | 2009-09-24 A | 912 | 100% | as late as possible | Paulicke Stephan | 64h | 64h | (3) System Design | medium | (2) Normal | Stream Lead Architecture |
| 914 | 1.2.3.8.2.6 | Central Build Server | 16d? | 2009-09-03 A | 2009-09-24 A |  | 100% | as late as possible | Piol Domenico | 128h | 128h | (3) System Design | medium | (2) Normal | Stream Lead Architecture |
| 915 | 1.2.3.8.2.7 | TIP Engineering | 16d? | 2009-09-03 A | 2009-09-24 A |  | 100% | as late as possible | Powischer Kolja | 128h | 128h | (3) System Design | medium | (2) Normal | Stream Lead Architecture |
| 916 | 1.2.3.8.2.8 | Temp Task | 25d | 2009-07-14 A | 2009-08-18 A |  | 100% |  | Participans | 200h | 200h | (3) System Design | medium | (2) Normal | Stream Lead Architecture |
| 917 | 1.2.3.8.2.9 | Temp Task | 25d | 2009-07-14 A | 2009-08-18 A |  | 100% |  | Participans | 200h | 200h | (3) System Design | medium | (2) Normal | Stream Lead Architecture |
| 918 | 1.2.3.8.2.10 | Temp Task | 25d | 2009-07-14 A | 2009-08-18 A |  | 100% |  | Participans | 200h | 200h | (3) System Design | medium | (2) Normal | Stream Lead Architecture |

| ID | WBS | Task | Duration | Start | Finish | Predecessors | Complete | Constraint | Resources | Work | Actual work | Cost | Actual cost | Text11 | Text23 | Text30 | Text13 |
| --- | --- | --- | --- | --- | --- | --- | --- | --- | --- | --- | --- | --- | --- | --- | --- | --- | --- |
| 919 | 1.2.3.9 | **Quality Assurance** | 50.5d? | 2009-07-14 A | 2009-09-22 A |  | 100% |  |  | 269.4h | 269.4h | 7.2 | 7.2 | (3) System Design | medium | (2) Normal |  |
| 920 | 1.2.3.9.1 | **Role Management** | 49.5d | 2009-07-14 A | 2009-09-21 A |  | 100% |  |  | 22h | 22h |  |  | (3) System Design | medium | (2) Normal |  |
| 921 | 1.2.3.9.1.1 | **Reporting** | 49.5d | 2009-07-14 A | 2009-09-21 A |  | 100% |  |  | 22h | 22h |  |  | (3) System Design | medium | (2) Normal |  |
| 922 | 1.2.3.9.1.1.1 | Preparation Stream Status Report | 1d | 2009-07-14 A | 2009-07-15 A |  | 100% | as late as possible | Polisano Riccardo [25%] | 2h | 2h |  |  | (3) System Design | medium | (2) Normal | Quality Management |
| 923 | 1.2.3.9.1.1.2 | Preparation Stream Status Report | 1d | 2009-07-20 A | 2009-07-20 A |  | 100% | as late as possible | Polisano Riccardo [25%] | 2h | 2h |  |  | (3) System Design | medium | (2) Normal | Quality Management |
| 924 | 1.2.3.9.1.1.3 | Preparation Stream Status Report | 1d | 2009-07-27 A | 2009-07-27 A |  | 100% | as late as possible | Polisano Riccardo [25%] | 2h | 2h |  |  | (3) System Design | medium | (2) Normal | Quality Management |
| 925 | 1.2.3.9.1.1.4 | Preparation Stream Status Report | 1d | 2009-08-03 A | 2009-08-03 A |  | 100% | as late as possible | Polisano Riccardo [25%] | 2h | 2h |  |  | (3) System Design | medium | (2) Normal | Quality Management |
| 926 | 1.2.3.9.1.1.5 | Preparation Stream Status Report | 1d | 2009-08-10 A | 2009-08-10 A |  | 100% | as late as possible | Polisano Riccardo [25%] | 2h | 2h |  |  | (3) System Design | medium | (2) Normal | Quality Management |
| 927 | 1.2.3.9.1.1.6 | Preparation Stream Status Report | 1d | 2009-08-17 A | 2009-08-17 A |  | 100% | as late as possible | Polisano Riccardo [25%] | 2h | 2h |  |  | (3) System Design | medium | (2) Normal | Quality Management |
| 928 | 1.2.3.9.1.1.7 | Preparation Stream Status Report | 1d | 2009-08-24 A | 2009-08-24 A |  | 100% | as late as possible | Polisano Riccardo [25%] | 2h | 2h |  |  | (3) System Design | medium | (2) Normal | Quality Management |
| 929 | 1.2.3.9.1.1.8 | Preparation Stream Status Report | 1d | 2009-08-31 A | 2009-08-31 A |  | 100% | as late as possible | Polisano Riccardo [25%] | 2h | 2h |  |  | (3) System Design | medium | (2) Normal | Quality Management |
| 930 | 1.2.3.9.1.1.9 | Preparation Stream Status Report | 1d | 2009-09-07 A | 2009-09-07 A |  | 100% | as late as possible | Polisano Riccardo [25%] | 2h | 2h |  |  | (3) System Design | medium | (2) Normal | Quality Management |
| 931 | 1.2.3.9.1.1.10 | Preparation Stream Status Report | 1d | 2009-09-14 A | 2009-09-14 A |  | 100% | as late as possible | Polisano Riccardo [25%] | 2h | 2h |  |  | (3) System Design | medium | (2) Normal | Quality Management |
| 932 | 1.2.3.9.1.1.11 | Preparation Stream Status Report | 1d | 2009-09-21 A | 2009-09-21 A |  | 100% | as late as possible | Polisano Riccardo [25%] | 2h | 2h |  |  | (3) System Design | medium | (2) Normal | Quality Management |
| 933 | 1.2.3.9.2 | **PRB Artifacts QMP** | 15d | 2009-08-25 A | 2009-09-15 A | 689 | 100% |  |  | 30h | 30h |  |  | (3) System Design | medium | (2) Normal |  |
| 934 | 1.2.3.9.2.1 | Lessons Learned Report Template | 15d | 2009-08-25 A | 2009-09-15 A |  | 100% | as late as possible | Polisano Riccardo [5%] | 6h | 6h |  |  | (3) System Design | medium | (2) Normal | Quality Management |
| 935 | 1.2.3.9.2.2 | Training Concept Template | 15d | 2009-08-25 A | 2009-09-15 A |  | 100% | as late as possible | Polisano Riccardo [5%] | 6h | 6h |  |  | (3) System Design | medium | (2) Normal | Quality Management |
| 936 | 1.2.3.9.2.3 | Project Quality Check Template | 15d | 2009-08-25 A | 2009-09-15 A |  | 100% | as late as possible | Polisano Riccardo [5%] | 6h | 6h |  |  | (3) System Design | medium | (2) Normal | Quality Management |
| 937 | 1.2.3.9.2.4 | QMP Status Report Template | 15d | 2009-08-25 A | 2009-09-15 A |  | 100% | as late as possible | Polisano Riccardo [5%] | 6h | 6h |  |  | (3) System Design | medium | (2) Normal | Quality Management |
| 938 | 1.2.3.9.2.5 | Quality Assurance Plan Template | 15d | 2009-08-25 A | 2009-09-15 A |  | 100% | as late as possible | Polisano Riccardo [5%] | 6h | 6h |  |  | (3) System Design | medium | (2) Normal | Quality Management |
| 939 | 1.2.3.9.3 | **Quality Check** | 5.5d? | 2009-09-15 A | 2009-09-22 A | 622, 759, 933, 795, 847, 811, 653 | 100% |  |  | 217.4h | 217.4h | 7.2 | 7.2 | (3) System Design | medium | (2) Normal |  |
| 940 | 1.2.3.9.3.1 | **Formal Review Test Plan** | 3.88d? | 2009-09-17 A | 2009-09-22 A |  | 100% |  |  | 135h | 135h |  |  |  | medium | (2) Normal |  |
| 941 | 1.2.3.9.3.1.1 | Send Test Plan to reviewer | 0.12d? | 2009-09-17 A | 2009-09-17 A |  | 100% | as late as possible | Polisano Riccardo | 1h | 1h |  |  |  | medium | (2) Normal | Quality Management |
| 942 | 1.2.3.9.3.1.2 | Study Test Plan | 3d | 2009-09-17 A | 2009-09-22 A | 941 | 100% | as late as possible | Polisano Riccardo; Scheidegger Ruedi; Lackmann Ralph; Matthes Andreas; von Itzenplitz Georg | 120h | 120h |  |  |  | medium | (2) Normal | Quality Management |
| 943 | 1.2.3.9.3.1.3 | Review Meeting | 0.25d | 2009-09-22 A | 2009-09-22 A | 942 | 100% | as late as possible | Polisano Riccardo; Scheidegger Ruedi; Lackmann Ralph; Matthes Andreas; von Itzenplitz Georg | 10h | 10h |  |  |  | medium | (2) Normal | Quality Management |
| 944 | 1.2.3.9.3.1.4 | Udate Test Plan | 0.5d? | 2009-09-22 A | 2009-09-22 A | 943 | 100% | as late as possible | Matthes Andreas | 4h | 4h |  |  |  | medium | (2) Normal | Quality Management |

| ID | WBS | Task | Type | Duration | Start | Finish | Predecessors | Complete | Constraint | Resources | Work | Actual work | Cost | Actual cost | Text11 | Text23 | Text30 | Text13 | Text25 | Text21 | Text27 | Text29 |
| --- | --- | --- | --- | --- | --- | --- | --- | --- | --- | --- | --- | --- | --- | --- | --- | --- | --- | --- | --- | --- | --- | --- |
| 945 | 1.2.3.9.3.2 | **Project Quality Management** |  | 3d | 2009-09-15 A | 2009-09-18 A |  | 100% |  |  | 62.4h | 62.4h | 7.2 | 7.2 | (3) System Design | medium | (2) Normal |  |  |  |  |  |
| 946 | 1.2.3.9.3.2.1 | Walk-through Project Charter |  | 3d | 2009-09-15 A | 2009-09-18 A |  | 100% | as late as possible | Polisano Riccardo [10%]; Scheidegger Ruedi [10%] | 4.8h | 4.8h |  |  | (3) System Design | medium | (2) Normal | Quality Management | Polisano Riccardo (KIRO 11) |  |  |  |
| 947 | 1.2.3.9.3.2.2 | Walk-through Project Organization |  | 3d | 2009-09-15 A | 2009-09-18 A |  | 100% | as late as possible | Polisano Riccardo [10%]; Scheidegger Ruedi [10%] | 4.8h | 4.8h |  |  | (3) System Design | medium | (2) Normal | Quality Management | Polisano Riccardo (KIRO 11) |  |  |  |
| 948 | 1.2.3.9.3.2.3 | Milestone Review Project Management Plan |  | 3d | 2009-09-15 A | 2009-09-18 A |  | 100% | as late as possible | Polisano Riccardo [10%]; Scheidegger Ruedi [10%] | 4.8h | 4.8h |  |  | (3) System Design | medium | (2) Normal | Quality Management | Polisano Riccardo (KIRO 11) |  |  |  |
| 949 | 1.2.3.9.3.2.4 | Walktrough Communication Plan |  | 3d | 2009-09-15 A | 2009-09-18 A |  | 100% | as late as possible | Polisano Riccardo [10%]; Scheidegger Ruedi [10%] | 4.8h | 4.8h |  |  | (3) System Design | medium | (2) Normal | Quality Management | Polisano Riccardo (KIRO 11) |  |  |  |
| 950 | 1.2.3.9.3.2.5 | Milestone Review MS Project Schedule |  | 3d | 2009-09-15 A | 2009-09-18 A |  | 100% | as late as possible | Polisano Riccardo [10%]; Scheidegger Ruedi [10%] | 4.8h | 4.8h |  |  | (3) System Design | medium | (2) Normal | Quality Management | Polisano Riccardo (KIRO 11) |  |  |  |
| 951 | 1.2.3.9.3.2.6 | Milestone Review Risk Management Plan |  | 3d | 2009-09-15 A | 2009-09-18 A |  | 100% | as late as possible | Polisano Riccardo [10%]; Scheidegger Ruedi [10%] | 4.8h | 4.8h |  |  | (3) System Design | medium | (2) Normal | Quality Management | Polisano Riccardo (KIRO 11) |  |  |  |
| 952 | 1.2.3.9.3.2.7 | Walk-through Quality Assurance Plan |  | 3d | 2009-09-15 A | 2009-09-18 A |  | 100% | as late as possible | Polisano Riccardo [10%]; Scheidegger Ruedi [10%] | 4.8h | 4.8h |  |  | (3) System Design | medium | (2) Normal | Quality Management | Polisano Riccardo (KIRO 11) |  |  |  |
| 953 | 1.2.3.9.3.2.8 | Walk-through Action Item Issue Escalation Tracker |  | 3d | 2009-09-15 A | 2009-09-18 A |  | 100% | as late as possible | Polisano Riccardo [10%]; Scheidegger Ruedi [10%] | 4.8h | 4.8h |  |  | (3) System Design | medium | (2) Normal | Quality Management | Polisano Riccardo (KIRO 11) |  |  |  |
| 954 | 1.2.3.9.3.2.9 | Walk-through Measurement Report |  | 3d | 2009-09-15 A | 2009-09-18 A |  | 100% | as late as possible | Polisano Riccardo [10%]; Scheidegger Ruedi [10%] | 4.8h | 4.8h |  |  | (3) System Design | medium | (2) Normal | Quality Management | Polisano Riccardo (KIRO 11) |  |  |  |
| 955 | 1.2.3.9.3.2.10 | Walk-through Deviation Register |  | 3d | 2009-09-15 A | 2009-09-18 A |  | 100% | as late as possible | Polisano Riccardo [10%]; Scheidegger Ruedi [10%] | 4.8h | 4.8h |  |  | (3) System Design | medium | (2) Normal | Quality Management | Polisano Riccardo (KIRO 11) |  |  |  |
| 956 | 1.2.3.9.3.2.11 | Configuration Audit Configuration Mgmt Plan |  | 3d | 2009-09-15 A | 2009-09-18 A |  | 100% | as late as possible | Polisano Riccardo [10%]; Lüthi Rico F. [10%] | 4.8h | 4.8h | 2.4 | 2.4 | (3) System Design | medium | (2) Normal | Quality Management | Polisano Riccardo (KIRO 11) |  |  |  |
| 957 | 1.2.3.9.3.2.12 | Configuration Audit Configuration Items List |  | 3d | 2009-09-15 A | 2009-09-18 A |  | 100% | as late as possible | Polisano Riccardo [10%]; Lüthi Rico F. [10%] | 4.8h | 4.8h | 2.4 | 2.4 | (3) System Design | medium | (2) Normal | Quality Management | Polisano Riccardo (KIRO 11) |  |  |  |
| 958 | 1.2.3.9.3.2.13 | Configuration Audit Baseline Records |  | 3d | 2009-09-15 A | 2009-09-18 A |  | 100% | as late as possible | Polisano Riccardo [10%]; Lüthi Rico F. [10%] | 4.8h | 4.8h | 2.4 | 2.4 | (3) System Design | medium | (2) Normal | Quality Management | Polisano Riccardo (KIRO 11) |  |  |  |
| 959 | 1.2.3.9.3.3 | **PRB General Document's checklists** |  | 2.5d | 2009-09-18 A | 2009-09-22 A | 945 | 100% |  |  | 20h | 20h |  |  | (3) System Design | medium | (2) Normal |  |  | IT-PV Phase Documents |  |  |
| 960 | 1.2.3.9.3.3.1 | Checklist for Acquisition |  | 2.5d | 2009-09-18 A | 2009-09-22 A |  | 100% | as late as possible | Polisano Riccardo [10%] | 2h | 2h |  |  | (3) System Design | medium | (2) Normal | Quality Management |  |  |  |  |
| 961 | 1.2.3.9.3.3.2 | Configuration Audit Report (A/P) |  | 2.5d | 2009-09-18 A | 2009-09-22 A |  | 100% | as late as possible | Polisano Riccardo [10%] | 2h | 2h |  |  | (3) System Design | medium | (2) Normal | Quality Management | Polisano Riccardo (KIRO 11) | IT-PV Phase Documents | QAP | ITPL |
| 962 | 1.2.3.9.3.3.3 | N+ Milestone Review Report and Checklist |  | 2.5d | 2009-09-18 A | 2009-09-22 A |  | 100% | as late as possible | Polisano Riccardo [10%] | 2h | 2h |  |  | (3) System Design | medium | (2) Normal | Quality Management | Polisano Riccardo (KIRO 11) | IT-PV Phase Documents | QAP | ITPL |
| 963 | 1.2.3.9.3.3.4 | Walkthrough Change Request & Change Request List |  | 2.5d | 2009-09-18 A | 2009-09-22 A |  | 100% | as late as possible | Polisano Riccardo [10%] | 2h | 2h |  |  | (3) System Design | medium | (2) Normal | Quality Management | Polisano Riccardo (KIRO 11) |  |  |  |
| 964 | 1.2.3.9.3.3.5 | Test Quality Gate Checklist |  | 2.5d | 2009-09-18 A | 2009-09-22 A |  | 100% | as late as possible | Polisano Riccardo [10%] | 2h | 2h |  |  | (3) System Design | medium | (2) Normal | Quality Management | Polisano Riccardo (KIRO 11) |  |  |  |
| 965 | 1.2.3.9.3.3.6 | PMC Plan and Tracker (P) |  | 2.5d | 2009-09-18 A | 2009-09-22 A |  | 100% | as late as possible | Polisano Riccardo [10%] | 2h | 2h |  |  | (3) System Design | medium | (2) Normal | Quality Management | Polisano Riccardo (KIRO 11) | IT-PV Phase Documents |  |  |
| 966 | 1.2.3.9.3.3.7 | Project Management Plan Review Checklist (P) |  | 2.5d | 2009-09-18 A | 2009-09-22 A |  | 100% | as late as possible | Polisano Riccardo [10%] | 2h | 2h |  |  | (3) System Design | medium | (2) Normal | Quality Management | Polisano Riccardo (KIRO 11) | IT-PV Phase Documents | QAP | ITPL |
| 967 | 1.2.3.9.3.3.8 | Project Quality Check Template |  | 2.5d | 2009-09-18 A | 2009-09-22 A |  | 100% | as late as possible | Polisano Riccardo [10%] | 2h | 2h |  |  | (3) System Design | medium | (2) Normal | Quality Management | Polisano Riccardo (KIRO 11) |  |  |  |
| 968 | 1.2.3.9.3.3.9 | QAS Review-Checklist/-Report (P) |  | 2.5d | 2009-09-18 A | 2009-09-22 A |  | 100% | as late as possible | Polisano Riccardo [10%] | 2h | 2h |  |  | (3) System Design | medium | (2) Normal | Quality Management | Polisano Riccardo (KIRO 11) | IT-PV Phase Documents | QAP | ITPL |
| 969 | 1.2.3.9.3.3.10 | PRB Readiness Checklist |  | 2.5d | 2009-09-18 A | 2009-09-22 A |  | 100% | as late as possible | Polisano Riccardo [10%] | 2h | 2h |  |  | (3) System Design | medium | (2) Normal | Quality Management | Polisano Riccardo (KIRO 11) |  |  |  |
| 970 | 1.2.3.9.3.3.11 | End quality check | milestone | 0d | 2009-09-22 A | 2009-09-22 A | 969 | 100% |  |  |  |  |  |  | (3) System Design | medium | (2) Normal | Quality Management |  |  |  |  |

| ID | WBS | Task | Duration | Start | Finish | Predecessors | Complete | Constraint | Resources | Work | Actual work | Text23 | Text30 | Text11 | Text13 | Text15 | Text14 |
| --- | --- | --- | --- | --- | --- | --- | --- | --- | --- | --- | --- | --- | --- | --- | --- | --- | --- |
| 971 | 1.2.3.10 | **Test Management** | 65d? | 2009-07-14 A | 2009-10-13 A |  | 100% |  |  | 806h | 806h | medium | (2) Normal |  |  |  |  |
| 972 | 1.2.3.10.1 | **Role Management** | 65d? | 2009-07-14 A | 2009-10-13 A |  | 100% |  |  | 806h | 806h | medium | (2) Normal | (3) System Design |  |  |  |
| 973 | 1.2.3.10.1.1 | **Reporting** | 49.5d | 2009-07-14 A | 2009-09-21 A |  | 100% |  |  | 22h | 22h | medium | (2) Normal | (3) System Design |  |  |  |
| 974 | 1.2.3.10.1.1.1 | Preparation Stream Status Report | 1d | 2009-07-14 A | 2009-07-15 A |  | 100% | as late as possible | Matthes Andreas [25%] | 2h | 2h | medium | (2) Normal | (3) System Design | Test Management |  |  |
| 975 | 1.2.3.10.1.1.2 | Preparation Stream Status Report | 1d | 2009-07-20 A | 2009-07-20 A |  | 100% | as late as possible | Matthes Andreas [25%] | 2h | 2h | medium | (2) Normal | (3) System Design | Test Management |  |  |
| 976 | 1.2.3.10.1.1.3 | Preparation Stream Status Report | 1d | 2009-07-27 A | 2009-07-27 A |  | 100% | as late as possible | Matthes Andreas [25%] | 2h | 2h | medium | (2) Normal | (3) System Design | Test Management |  |  |
| 977 | 1.2.3.10.1.1.4 | Preparation Stream Status Report | 1d | 2009-08-03 A | 2009-08-03 A |  | 100% | as late as possible | Matthes Andreas [25%] | 2h | 2h | medium | (2) Normal | (3) System Design | Test Management |  |  |
| 978 | 1.2.3.10.1.1.5 | Preparation Stream Status Report | 1d | 2009-08-10 A | 2009-08-10 A |  | 100% | as late as possible | Matthes Andreas [25%] | 2h | 2h | medium | (2) Normal | (3) System Design | Test Management |  |  |
| 979 | 1.2.3.10.1.1.6 | Preparation Stream Status Report | 1d | 2009-08-17 A | 2009-08-17 A |  | 100% | as late as possible | Matthes Andreas [25%] | 2h | 2h | medium | (2) Normal | (3) System Design | Test Management |  |  |
| 980 | 1.2.3.10.1.1.7 | Preparation Stream Status Report | 1d | 2009-08-24 A | 2009-08-24 A |  | 100% | as late as possible | Matthes Andreas [25%] | 2h | 2h | medium | (2) Normal | (3) System Design | Test Management |  |  |
| 981 | 1.2.3.10.1.1.8 | Preparation Stream Status Report | 1d | 2009-08-31 A | 2009-08-31 A |  | 100% | as late as possible | Matthes Andreas [25%] | 2h | 2h | medium | (2) Normal | (3) System Design | Test Management |  |  |
| 982 | 1.2.3.10.1.1.9 | Preparation Stream Status Report | 1d | 2009-09-07 A | 2009-09-07 A |  | 100% | as late as possible | Matthes Andreas [25%] | 2h | 2h | medium | (2) Normal | (3) System Design | Test Management |  |  |
| 983 | 1.2.3.10.1.1.10 | Preparation Stream Status Report | 1d | 2009-09-14 A | 2009-09-14 A |  | 100% | as late as possible | Matthes Andreas [25%] | 2h | 2h | medium | (2) Normal | (3) System Design | Test Management |  |  |
| 984 | 1.2.3.10.1.1.11 | Preparation Stream Status Report | 1d | 2009-09-21 A | 2009-09-21 A |  | 100% | as late as possible | Matthes Andreas [25%] | 2h | 2h | medium | (2) Normal | (3) System Design | Test Management |  |  |
| 985 | 1.2.3.10.1.2 | **Prepare Testing** | 65d? | 2009-07-14 A | 2009-10-13 A |  | 100% |  |  | 784h | 784h |  |  |  |  | ----- |  |
| 986 | 1.2.3.10.1.2.1 | **Refine Test Plan & Schedule** | 48.5d? | 2009-07-14 A | 2009-09-18 A |  | 100% |  |  | 320h | 320h |  |  |  |  | TES | QA |
| 987 | 1.2.3.10.1.2.1.1 | **Overview & Approach** | 40d? | 2009-07-14 A | 2009-09-08 A |  | 100% |  |  | 136h | 136h | medium | (2) Normal |  |  |  |  |
| 988 | 1.2.3.10.1.2.1.1.1 | Introduction | 1d? | 2009-09-04 A | 2009-09-07 A | 1005 | 100% |  | Matthes Andreas | 8h | 8h |  |  |  |  |  |  |
| 989 | 1.2.3.10.1.2.1.1.2 | System to be Tested | 6d? | 2009-07-14 A | 2009-07-22 A |  | 100% |  | Matthes Andreas | 48h | 48h |  |  |  |  |  |  |
| 990 | 1.2.3.10.1.2.1.1.3 | Out of Scope | 1d? | 2009-07-22 A | 2009-07-23 A | 989 | 100% |  | Matthes Andreas | 8h | 8h |  |  |  |  |  |  |
| 991 | 1.2.3.10.1.2.1.1.4 | Approach | 3d? | 2009-07-23 A | 2009-07-28 A | 990 | 100% |  | Matthes Andreas | 24h | 24h |  |  |  |  |  |  |
| 992 | 1.2.3.10.1.2.1.1.5 | Completion Criteria | 2d? | 2009-07-28 A | 2009-07-30 A | 991 | 100% |  | Matthes Andreas | 16h | 16h |  |  |  |  |  |  |
| 993 | 1.2.3.10.1.2.1.1.6 | Entry, Interruption, Resumption | 3d? | 2009-07-30 A | 2009-08-18 A | 992 | 100% |  | Matthes Andreas | 24h | 24h |  |  |  |  |  |  |
| 994 | 1.2.3.10.1.2.1.1.7 | Appendix, Formats, etc. | 1d? | 2009-09-07 A | 2009-09-08 A | 988 | 100% |  | Matthes Andreas | 8h | 8h |  |  |  |  |  |  |

| ID | WBS | Task | Type | Duration | Start | Finish | Predecessors | Complete | Constraint | Resources | Work | Actual work | Text23 | Text30 | Text14 | Text15 |
| --- | --- | --- | --- | --- | --- | --- | --- | --- | --- | --- | --- | --- | --- | --- | --- | --- |
| 995 | 1.2.3.10.1.2.1.2 | **Test Subproject Organisation** |  | 3d? | 2009-08-31 A | 2009-09-03 A |  | 100% |  |  | 24h | 24h | medium | (2) Normal |  |  |
| 996 | 1.2.3.10.1.2.1.2.1 | Test Deliverables |  | 1d? | 2009-08-31 A | 2009-09-01 A | 1038 | 100% |  | Matthes Andreas | 8h | 8h |  |  |  |  |
| 997 | 1.2.3.10.1.2.1.2.2 | Project Specific Roles and Responsibilities |  | 1d? | 2009-09-01 A | 2009-09-02 A | 996 | 100% |  | Matthes Andreas | 8h | 8h |  |  |  |  |
| 998 | 1.2.3.10.1.2.1.2.3 | Staffing and Training Needs |  | 1d? | 2009-09-02 A | 2009-09-03 A | 997 | 100% |  | Matthes Andreas | 8h | 8h |  |  |  |  |
| 999 | 1.2.3.10.1.2.1.3 | **Requirements, Tests & Infrastructure** |  | 34d? | 2009-08-04 A | 2009-09-18 A |  | 100% |  |  | 160h | 160h | medium | (2) Normal |  |  |
| 1000 | 1.2.3.10.1.2.1.3.1 | Requirements |  | 5d? | 2009-08-04 A | 2009-08-10 A |  | 100% | start no earlier than 2009-08-03 | Oberndorfer Richard | 40h | 40h |  |  |  |  |
| 1001 | 1.2.3.10.1.2.1.3.2 | Verify Requirements for Testability |  | 10d | 2009-08-18 A | 2009-08-31 A | 1025 | 100% |  | Oberndorfer Richard | 24h | 24h |  |  | QA | TES |
| 1002 | 1.2.3.10.1.2.1.3.3 | Testing Tasks |  | 3d? | 2009-09-02 A | 2009-09-04 A | 1018 | 100% |  | Oberndorfer Richard | 24h | 24h |  |  |  |  |
| 1003 | 1.2.3.10.1.2.1.3.4 | Infrastructure needs |  | 4d? | 2009-09-07 A | 2009-09-10 A | 1002 | 100% |  | Oberndorfer Richard | 32h | 32h |  |  |  |  |
| 1004 | 1.2.3.10.1.2.1.3.5 | Test Schedule |  | 2d? | 2009-09-15 A | 2009-09-16 A | 1003 | 100% |  | Oberndorfer Richard | 16h | 16h |  |  |  |  |
| 1005 | 1.2.3.10.1.2.1.3.6 | Project Risks, Assumptions and Contingencies |  | 1d? | 2009-09-03 A | 2009-09-04 A | 998 | 100% |  | Matthes Andreas | 8h | 8h |  |  |  |  |
| 1006 | 1.2.3.10.1.2.1.3.7 | Refine Test Effort Estimate |  | 2d | 2009-09-17 A | 2009-09-18 A | 1004 | 100% |  | Oberndorfer Richard | 16h | 16h |  |  | QA | TES |
| 1007 | 1.2.3.10.1.2.2 | Test Plan ready for "Formal Review Test Plan" | milestone | 0d | 2009-09-18 A | 2009-09-18 A | 986 | 100% |  |  |  |  | medium | (2) Normal |  |  |
| 1008 | 1.2.3.10.1.2.3 | **Testmanagement Tool** |  | 37d? | 2009-08-19 A | 2009-10-09 A |  | 100% |  |  | 64h | 64h |  |  |  |  |
| 1009 | 1.2.3.10.1.2.3.1 | Proposal document |  | 1d? | 2009-08-19 A | 2009-08-20 A | 1028 | 100% |  | Matthes Andreas | 8h | 8h |  |  |  |  |
| 1010 | 1.2.3.10.1.2.3.2 | Testproject administration |  | 2d? | 2009-09-30 A | 2009-10-02 A | 1021 | 100% |  | Matthes Andreas | 16h | 16h |  |  |  |  |
| 1011 | 1.2.3.10.1.2.3.3 | Installation JIRA Plugin |  | 2d? | 2009-10-02 A | 2009-10-06 A | 1010 | 100% |  | Matthes Andreas | 16h | 16h | medium | (2) Normal |  |  |
| 1012 | 1.2.3.10.1.2.3.4 | Process definition & documentation |  | 2d? | 2009-10-06 A | 2009-10-08 A | 1011 | 100% |  | Matthes Andreas | 16h | 16h |  |  |  |  |
| 1013 | 1.2.3.10.1.2.3.5 | Introduction team members |  | 1d? | 2009-10-08 A | 2009-10-09 A | 1012 | 100% |  | Matthes Andreas | 8h | 8h | medium | (2) Normal |  |  |
| 1014 | 1.2.3.10.1.2.4 | **External requirements** |  | 35.5d? | 2009-08-12 A | 2009-09-30 A |  | 100% |  |  | 56h | 56h |  |  |  |  |
| 1015 | 1.2.3.10.1.2.4.1 | **CSS** |  | 15d? | 2009-08-12 A | 2009-09-01 A |  | 100% |  |  | 24h | 24h |  |  |  |  |
| 1016 | 1.2.3.10.1.2.4.1.1 | Define acceptance criteria CSS |  | 1d? | 2009-08-12 A | 2009-08-12 A | 1000 | 100% |  | Oberndorfer Richard | 8h | 8h |  |  |  |  |
| 1017 | 1.2.3.10.1.2.4.1.2 | Define acceptance criteria Oracle |  | 1d? | 2009-08-13 A | 2009-08-13 A | 1016 | 100% |  | Oberndorfer Richard | 8h | 8h |  |  |  |  |
| 1018 | 1.2.3.10.1.2.4.1.3 | Review Testcases CSS |  | 1d? | 2009-09-01 A | 2009-09-01 A | 1001 | 100% |  | Oberndorfer Richard | 8h | 8h |  |  |  |  |

| ID | WBS | Task | Duration | Start | Finish | Predecessors | Complete | Constraint | Deadline | Resources | Work | Actual work | Text23 | Text30 | Text14 | Text15 |
| --- | --- | --- | --- | --- | --- | --- | --- | --- | --- | --- | --- | --- | --- | --- | --- | --- |
| 1019 | 1.2.3.10.1.2.4.2 | **SOA** | 16d? | 2009-09-08 A | 2009-09-30 A |  | 100% |  |  |  | 24h | 24h |  |  |  |  |
| 1020 | 1.2.3.10.1.2.4.2.1 | Define acceptance criteria SOA | 2d? | 2009-09-08 A | 2009-09-10 A | 994 | 100% |  |  | Matthes Andreas | 16h | 16h |  |  |  |  |
| 1021 | 1.2.3.10.1.2.4.2.2 | Review Testcases SOA | 1d? | 2009-09-29 A | 2009-09-30 A | 1036 | 100% |  |  | Matthes Andreas | 8h | 8h | medium | (2) Normal |  |  |
| 1022 | 1.2.3.10.1.2.4.3 | **Others** | 1d? | 2009-09-10 A | 2009-09-11 A |  | 100% |  |  |  | 8h | 8h |  |  |  |  |
| 1023 | 1.2.3.10.1.2.4.3.1 | Define acceptance criteria Others | 1d? | 2009-09-10 A | 2009-09-11 A | 1020 | 100% |  |  | Matthes Andreas | 8h | 8h |  |  |  |  |
| 1024 | 1.2.3.10.1.2.5 | **Requirements test application** | 20.5d? | 2009-08-17 A | 2009-09-14 A |  | 100% |  |  |  | 16h | 16h |  |  |  |  |
| 1025 | 1.2.3.10.1.2.5.1 | Identification | 1d? | 2009-08-17 A | 2009-08-17 A | 1017 | 100% |  |  | Oberndorfer Richard | 8h | 8h | medium | (2) Normal |  |  |
| 1026 | 1.2.3.10.1.2.5.2 | Description | 1d? | 2009-09-11 A | 2009-09-14 A | 1023 | 100% |  |  | Matthes Andreas | 8h | 8h | medium | (2) Normal |  |  |
| 1027 | 1.2.3.10.1.2.6 | **L&P test application** | 26d? | 2009-08-18 A | 2009-09-23 A |  | 100% |  |  |  | 24h | 24h | medium | (2) Normal |  |  |
| 1028 | 1.2.3.10.1.2.6.1 | Concept | 1d? | 2009-08-18 A | 2009-08-19 A | 993 | 100% |  |  | Matthes Andreas | 8h | 8h | medium | (2) Normal |  |  |
| 1029 | 1.2.3.10.1.2.6.2 | Specification | 2d? | 2009-09-21 A | 2009-09-23 A | 1026 | 100% |  |  | Matthes Andreas | 16h | 16h | medium | (2) Normal |  |  |
| 1030 | 1.2.3.10.1.2.7 | **Stakeholder consultation** | 28d? | 2009-08-20 A | 2009-09-29 A |  | 100% |  |  |  | 64h | 64h | medium | (2) Normal |  |  |
| 1031 | 1.2.3.10.1.2.7.1 | CSS 3.0 | 1d? | 2009-09-21 A | 2009-09-21 A | 1006 | 100% |  |  | Oberndorfer Richard | 8h | 8h | medium | (2) Normal |  |  |
| 1032 | 1.2.3.10.1.2.7.2 | SOA | 1d? | 2009-09-23 A | 2009-09-24 A | 1029 | 100% |  |  | Matthes Andreas | 8h | 8h | medium | (2) Normal |  |  |
| 1033 | 1.2.3.10.1.2.7.3 | Portal | 2d? | 2009-09-24 A | 2009-09-28 A | 1032 | 100% |  |  | Matthes Andreas | 16h | 16h | medium | (2) Normal |  |  |
| 1034 | 1.2.3.10.1.2.7.4 | TRX | 2d? | 2009-09-22 A | 2009-09-23 A | 1031 | 100% |  |  | Oberndorfer Richard | 16h | 16h | medium | (2) Normal |  |  |
| 1035 | 1.2.3.10.1.2.7.5 | WFI | 1d? | 2009-08-20 A | 2009-08-21 A | 1009 | 100% |  |  | Matthes Andreas | 8h | 8h | medium | (2) Normal |  |  |
| 1036 | 1.2.3.10.1.2.7.6 | JRules | 1d? | 2009-09-28 A | 2009-09-29 A | 1033 | 100% |  |  | Matthes Andreas | 8h | 8h | medium | (2) Normal |  |  |
| 1037 | 1.2.3.10.1.2.8 | **Define Approval criteria** | 27.5d? | 2009-08-21 A | 2009-09-29 A |  | 100% |  | 2009-09-01 |  | 40h | 40h |  |  |  |  |
| 1038 | 1.2.3.10.1.2.8.1 | Playground 1 | 1d? | 2009-08-21 A | 2009-08-31 A | 1035 | 100% |  |  | Matthes Andreas | 8h | 8h | medium | (2) Normal |  |  |
| 1039 | 1.2.3.10.1.2.8.2 | Playground 2 | 2d? | 2009-09-24 A | 2009-09-25 A | 1034 | 100% |  |  | Oberndorfer Richard | 16h | 16h | medium | (2) Normal |  |  |
| 1040 | 1.2.3.10.1.2.8.3 | Playground 3 | 2d? | 2009-09-28 A | 2009-09-29 A | 1039 | 100% |  |  | Oberndorfer Richard | 16h | 16h | medium | (2) Normal |  |  |
| 1041 | 1.2.3.10.1.2.9 | **Planning Integration Test** | 2d? | 2009-10-09 A | 2009-10-13 A |  | 100% |  |  |  | 24h | 24h | medium | (2) Normal |  |  |
| 1042 | 1.2.3.10.1.2.9.1 | Test case specification Integration Test | 1d? | 2009-10-09 A | 2009-10-12 A | 1013 | 100% |  |  |  | 16h | 16h | medium | (2) Normal |  |  |
| 1043 | 1.2.3.10.1.2.9.2 | Test case scheduling Integration Test | 1d? | 2009-10-12 A | 2009-10-13 A | 1042 | 100% |  |  |  | 8h | 8h | medium | (2) Normal |  |  |
| 1044 | 1.2.3.10.1.2.10 | Get Approvals for Test Plan | 1d | 2009-10-07 A | 2009-10-07 A | 1006 | 100% | start no earlier than 2009-10-07 |  |  |  |  |  |  | QA | TES |
| 1045 | 1.2.3.10.1.2.11 | Get Committment on Test Resources | 1d | 2009-09-21 A | 2009-09-21 A | 1006 | 100% |  |  |  |  |  |  |  | QA | TES |

Notes:
- 1037: Dringende Arbeitsliste Meeting 03. und 05.08.09:/ Abnahmekriterien Definition / ·Erstellen einer Übersicht die aufzeigt, bei welchen Requirements werden Abnahmekriterien definiert. / Abnahmekriterien für die Requirements des Playground 1.

| ID | WBS | Task | Type | Duration | Start | Finish | Predecessors | Complete | Constraint | Resources | Work | Actual work | Text14 | Text15 |
| --- | --- | --- | --- | --- | --- | --- | --- | --- | --- | --- | --- | --- | --- | --- |
| 1046 | 1.2.3.10.1.2.12 | **Testcase definition** |  | 22d? | 2009-07-14 A | 2009-08-13 A |  | 100% |  |  | 176h | 176h |  |  |
| 1047 | 1.2.3.10.1.2.12.1 | Transaction Platform |  | 3d? | 2009-07-14 A | 2009-07-17 A |  | 100% |  | Oberndorfer Richard | 24h | 24h |  |  |
| 1048 | 1.2.3.10.1.2.12.2 | Monitoring |  | 2d? | 2009-07-17 A | 2009-07-21 A | 1047 | 100% |  | Oberndorfer Richard | 16h | 16h |  |  |
| 1049 | 1.2.3.10.1.2.12.3 | Batch enhancements |  | 2d? | 2009-07-21 A | 2009-07-23 A | 1048 | 100% |  | Oberndorfer Richard | 16h | 16h |  |  |
| 1050 | 1.2.3.10.1.2.12.4 | RTP & ECO System Enhancement |  | 5d? | 2009-07-23 A | 2009-07-30 A | 1049 | 100% |  | Oberndorfer Richard | 40h | 40h |  |  |
| 1051 | 1.2.3.10.1.2.12.5 | SOA enhancements |  | 3d? | 2009-07-30 A | 2009-08-04 A | 1050 | 100% |  | Oberndorfer Richard | 24h | 24h |  |  |
| 1052 | 1.2.3.10.1.2.12.6 | Portal |  | 3d? | 2009-08-04 A | 2009-08-07 A | 1051 | 100% |  | Oberndorfer Richard | 24h | 24h |  |  |
| 1053 | 1.2.3.10.1.2.12.7 | Workflow Integration |  | 2d? | 2009-08-07 A | 2009-08-11 A | 1052 | 100% |  | Oberndorfer Richard | 16h | 16h |  |  |
| 1054 | 1.2.3.10.1.2.12.8 | Business Rule Management System |  | 2d? | 2009-08-11 A | 2009-08-13 A | 1053 | 100% |  | Oberndorfer Richard | 16h | 16h |  |  |
| 1055 | 1.2.3.10.1.2.12.9 | Development Environment | milestone | 0d? | 2009-08-13 A | 2009-08-13 A | 1054 | 100% |  | Oberndorfer Richard |  |  |  |  |
| 1056 | 1.2.3.10.1.2.12.10 | JAP Platform Management | milestone | 0d? | 2009-08-13 A | 2009-08-13 A | 1055 | 100% |  | Oberndorfer Richard |  |  |  |  |
| 1057 | 1.2.3.10.1.2.13 | **Request Technical Facilitation** |  | 7d | 2009-09-21 A | 2009-09-29 A |  | 100% |  |  |  |  | QA | TES |
| 1058 | 1.2.3.10.1.2.13.1 | Order Test Tools |  | 2d | 2009-09-21 A | 2009-09-22 A | 986 | 100% |  |  |  |  |  | TES |
| 1059 | 1.2.3.10.1.2.13.2 | Order Test Environments |  | 5d | 2009-09-23 A | 2009-09-29 A | 1058 | 100% |  |  |  |  |  | TES |
| 1060 | 1.2.3.10.1.2.14 | Ensure Knowledge Transition to Test Team |  | 5d | 2009-09-22 A | 2009-09-28 A | 1045 | 100% |  |  |  |  | QA | TES |
| 1061 | 1.2.3.10.1.2.15 | **Monitor and Control Prepare Testing** |  | 59d | 2009-07-20 A | 2009-10-08 A |  | 100% |  |  |  |  | QA | TES |
| 1062 | 1.2.3.10.1.2.15.1 | **Monitor & Report Test Progress** |  | 56d | 2009-07-20 A | 2009-10-05 A |  | 100% |  |  |  |  |  | TES |
| 1063 | 1.2.3.10.1.2.15.1.1 | Monitor & Report Test Progress 1 |  | 1d | 2009-07-20 A | 2009-07-20 A |  | 100% | start no earlier than 2009-07-20 |  |  |  |  |  |
| 1064 | 1.2.3.10.1.2.15.1.2 | Monitor & Report Test Progress 2 |  | 1d | 2009-07-27 A | 2009-07-27 A |  | 100% | start no earlier than 2009-07-27 |  |  |  |  |  |
| 1065 | 1.2.3.10.1.2.15.1.3 | Monitor & Report Test Progress 3 |  | 1d | 2009-08-03 A | 2009-08-03 A |  | 100% | start no earlier than 2009-08-03 |  |  |  |  |  |
| 1066 | 1.2.3.10.1.2.15.1.4 | Monitor & Report Test Progress 4 |  | 1d | 2009-08-10 A | 2009-08-10 A |  | 100% | start no earlier than 2009-08-10 |  |  |  |  |  |
| 1067 | 1.2.3.10.1.2.15.1.5 | Monitor & Report Test Progress 5 |  | 1d | 2009-08-17 A | 2009-08-17 A |  | 100% | start no earlier than 2009-08-17 |  |  |  |  |  |
| 1068 | 1.2.3.10.1.2.15.1.6 | Monitor & Report Test Progress 6 |  | 1d | 2009-08-24 A | 2009-08-24 A |  | 100% | start no earlier than 2009-08-24 |  |  |  |  |  |
| 1069 | 1.2.3.10.1.2.15.1.7 | Monitor & Report Test Progress 7 |  | 1d | 2009-08-31 A | 2009-08-31 A |  | 100% | start no earlier than 2009-08-31 |  |  |  |  |  |
| 1070 | 1.2.3.10.1.2.15.1.8 | Monitor & Report Test Progress 8 |  | 1d | 2009-09-07 A | 2009-09-07 A |  | 100% | start no earlier than 2009-09-07 |  |  |  |  |  |
| 1071 | 1.2.3.10.1.2.15.1.9 | Monitor & Report Test Progress 9 |  | 1d | 2009-09-14 A | 2009-09-14 A |  | 100% | start no earlier than 2009-09-14 |  |  |  |  |  |
| 1072 | 1.2.3.10.1.2.15.1.10 | Monitor & Report Test Progress 10 |  | 1d | 2009-09-21 A | 2009-09-21 A |  | 100% | start no earlier than 2009-09-21 |  |  |  |  |  |
| 1073 | 1.2.3.10.1.2.15.1.11 | Monitor & Report Test Progress 11 |  | 1d | 2009-09-28 A | 2009-09-28 A |  | 100% | start no earlier than 2009-09-28 |  |  |  |  |  |
| 1074 | 1.2.3.10.1.2.15.1.12 | Monitor & Report Test Progress 12 |  | 1d | 2009-10-05 A | 2009-10-05 A |  | 100% | start no earlier than 2009-10-05 |  |  |  |  |  |

| ID | WBS | Task | Type | Duration | Start | Finish | Predecessors | Complete | Total slack | Constraint | Resources | Work | Cost | Text15 | Text11 | Text23 | Text30 |
| --- | --- | --- | --- | --- | --- | --- | --- | --- | --- | --- | --- | --- | --- | --- | --- | --- | --- |
| 1075 | 1.2.3.10.1.2.15.2 | **Coordinate with Stakeholders** |  | 51d | 2009-07-21 A | 2009-09-29 A |  | 100% |  |  |  |  |  | TES |  |  |  |
| 1076 | 1.2.3.10.1.2.15.2.1 | Coordinate with Stakeholders 1 |  | 1d | 2009-07-21 A | 2009-07-21 A |  | 100% |  | start no earlier than 2009-07-21 |  |  |  |  |  |  |  |
| 1077 | 1.2.3.10.1.2.15.2.2 | Coordinate with Stakeholders 2 |  | 1d | 2009-08-04 A | 2009-08-04 A |  | 100% |  | start no earlier than 2009-08-04 |  |  |  |  |  |  |  |
| 1078 | 1.2.3.10.1.2.15.2.3 | Coordinate with Stakeholders 3 |  | 1d | 2009-08-18 A | 2009-08-18 A |  | 100% |  | start no earlier than 2009-08-18 |  |  |  |  |  |  |  |
| 1079 | 1.2.3.10.1.2.15.2.4 | Coordinate with Stakeholders 4 |  | 1d | 2009-09-01 A | 2009-09-01 A |  | 100% |  | start no earlier than 2009-09-01 |  |  |  |  |  |  |  |
| 1080 | 1.2.3.10.1.2.15.2.5 | Coordinate with Stakeholders 5 |  | 1d | 2009-09-15 A | 2009-09-15 A |  | 100% |  | start no earlier than 2009-09-15 |  |  |  |  |  |  |  |
| 1081 | 1.2.3.10.1.2.15.2.6 | Coordinate with Stakeholders 6 |  | 1d | 2009-09-29 A | 2009-09-29 A |  | 100% |  | start no earlier than 2009-09-29 |  |  |  |  |  |  |  |
| 1082 | 1.2.3.10.1.2.15.3 | Validate Test Phase Exit Criteria |  | 1d | 2009-10-08 A | 2009-10-08 A | 1044 | 100% |  |  |  |  |  | TES |  |  |  |
| 1083 | 1.2.3.11 | RO (Realization Offer) delivered | milestone | 0d | 2009-09-22 A | 2009-09-22 A | 687, 609, 622, 645, 684, 759, 773, 792, 795, 799, 811, 847, 933, 939, 653 | 100% |  | as late as possible |  |  |  |  | (3) System Design | medium | (2) Normal |
| 1084 | 1.2.3.12 | Supplier Delivery PG1 | milestone | 0d | 2009-09-25 A | 2009-09-25 A | 908, 866 | 100% |  | as late as possible |  |  |  |  | (3) System Design | medium | (2) Normal |
| 1085 | 1.2.3.13 | End System Design Phase | milestone | 0d | 2009-10-07 A | 2009-10-07 A | 597, 672, 779, 831, 895, 921, 854 | 100% |  | as late as possible |  |  |  |  | (3) System Design | medium | (2) Normal |
| 1086 | 1.2.4 | **Project Realization Phase** |  | 134d? | 2009-09-22 | 2010-03-31 | 34 |  | 0.67d |  |  | 13310.2h | 368 |  |  | medium | (2) Normal |
| 1087 | 1.2.4.1 | **Project Progress Review Meeting** |  | 128.12d | 2009-09-29 | 2010-03-30 |  |  | 0d |  |  | 243h | 27 |  |  | medium | (2) Normal |
| 1088 | 1.2.4.1.1 | Status Meeting W39 |  | 1h | 2009-09-29 | 2009-09-29 | 1204, 1360, 1394, 1427, 1502, 1555, 1916, 1591, 2107 |  | 0d | must start on 2009-09-29 | Zulliger Markus; Scheidegger Ruedi; Lüthi Rico F.; Trindler Markus; Polisano Riccardo; Kradolfer Markus; Lackmann Ralph; Telgheider Jörg; Frank Pascal | 9h | 1 |  |  | medium | (2) Normal |
| 1089 | 1.2.4.1.2 | Status Meeting W40 |  | 1h | 2009-10-06 | 2009-10-06 | 1205, 1361, 1395, 1428, 1503, 1556, 1917, 1592, 2108 |  | 0d | must start on 2009-10-06 | Zulliger Markus; Scheidegger Ruedi; Lüthi Rico F.; Trindler Markus; Polisano Riccardo; Kradolfer Markus; Lackmann Ralph; Telgheider Jörg; Frank Pascal | 9h | 1 |  |  | medium | (2) Normal |
| 1090 | 1.2.4.1.3 | Status Meeting W41 |  | 1h | 2009-10-13 | 2009-10-13 | 1206, 1362, 1396, 1429, 1504, 1557, 1918, 1593, 2109 |  | 0d | must start on 2009-10-13 | Zulliger Markus; Scheidegger Ruedi; Lüthi Rico F.; Trindler Markus; Polisano Riccardo; Kradolfer Markus; Lackmann Ralph; Telgheider Jörg; Frank Pascal | 9h | 1 |  |  | medium | (2) Normal |
| 1091 | 1.2.4.1.4 | Status Meeting W42 |  | 1h | 2009-10-20 | 2009-10-20 | 1207, 1363, 1397, 1430, 1505, 1558, 1919, 1594, 2110 |  | 0d | must start on 2009-10-20 | Zulliger Markus; Scheidegger Ruedi; Lüthi Rico F.; Trindler Markus; Polisano Riccardo; Kradolfer Markus; Lackmann Ralph; Telgheider Jörg; Frank Pascal | 9h | 1 |  |  | medium | (2) Normal |
| 1092 | 1.2.4.1.5 | Status Meeting W43 |  | 1h | 2009-10-27 | 2009-10-27 | 1208, 1364, 1398, 1431, 1506, 1559, 1920, 1595, 2111 |  | 0d | must start on 2009-10-27 | Zulliger Markus; Scheidegger Ruedi; Lüthi Rico F.; Trindler Markus; Polisano Riccardo; Kradolfer Markus; Lackmann Ralph; Telgheider Jörg; Frank Pascal | 9h | 1 |  |  | medium | (2) Normal |
| 1093 | 1.2.4.1.6 | Status Meeting W44 |  | 1h | 2009-11-03 | 2009-11-03 | 1209, 1365, 1399, 1432, 1507, 1560, 1921, 1596, 2112 |  | 0d | must start on 2009-11-03 | Zulliger Markus; Scheidegger Ruedi; Lüthi Rico F.; Trindler Markus; Polisano Riccardo; Kradolfer Markus; Lackmann Ralph; Telgheider Jörg; Frank Pascal | 9h | 1 |  |  | medium | (2) Normal |
| 1094 | 1.2.4.1.7 | Status Meeting W45 |  | 1h | 2009-11-10 | 2009-11-10 | 1210, 1366, 1400, 1433, 1508, 1561, 1922, 1597, 2113 |  | 0d | must start on 2009-11-10 | Zulliger Markus; Scheidegger Ruedi; Lüthi Rico F.; Trindler Markus; Polisano Riccardo; Kradolfer Markus; Lackmann Ralph; Telgheider Jörg; Frank Pascal | 9h | 1 |  |  | medium | (2) Normal |
| 1095 | 1.2.4.1.8 | Status Meeting W46 |  | 1h | 2009-11-17 | 2009-11-17 | 1211, 1367, 1401, 1434, 1509, 1562, 1923, 1598, 2114 |  | 0d | must start on 2009-11-17 | Zulliger Markus; Scheidegger Ruedi; Lüthi Rico F.; Trindler Markus; Polisano Riccardo; Kradolfer Markus; Lackmann Ralph; Telgheider Jörg; Frank Pascal | 9h | 1 |  |  | medium | (2) Normal |
| 1096 | 1.2.4.1.9 | Status Meeting W47 |  | 1h | 2009-11-24 | 2009-11-24 | 1212, 1368, 1402, 1435, 1510, 1563, 1924, 1599, 2115 |  | 0d | must start on 2009-11-24 | Zulliger Markus; Scheidegger Ruedi; Lüthi Rico F.; Trindler Markus; Polisano Riccardo; Kradolfer Markus; Lackmann Ralph; Telgheider Jörg; Frank Pascal | 9h | 1 |  |  | medium | (2) Normal |
| 1097 | 1.2.4.1.10 | Status Meeting W48 |  | 1h | 2009-12-01 | 2009-12-01 | 1213, 1369, 1403, 1436, 1511, 1564, 1925, 1600, 2116 |  | 0d | must start on 2009-12-01 | Zulliger Markus; Scheidegger Ruedi; Lüthi Rico F.; Trindler Markus; Polisano Riccardo; Kradolfer Markus; Lackmann Ralph; Telgheider Jörg; Frank Pascal | 9h | 1 |  |  | medium | (2) Normal |
| 1098 | 1.2.4.1.11 | Status Meeting W49 |  | 1h | 2009-12-08 | 2009-12-08 | 1214, 1370, 1404, 1437, 1512, 1565, 1926, 1601, 2117 |  | 0d | must start on 2009-12-08 | Zulliger Markus; Scheidegger Ruedi; Lüthi Rico F.; Trindler Markus; Polisano Riccardo; Kradolfer Markus; Lackmann Ralph; Telgheider Jörg; Frank Pascal | 9h | 1 |  |  | medium | (2) Normal |
| 1099 | 1.2.4.1.12 | Status Meeting W50 |  | 1h | 2009-12-15 | 2009-12-15 | 1215, 1371, 1405, 1438, 1513, 1566, 1927, 1602, 2118 |  | 0d | must start on 2009-12-15 | Zulliger Markus; Scheidegger Ruedi; Lüthi Rico F.; Trindler Markus; Polisano Riccardo; Kradolfer Markus; Lackmann Ralph; Telgheider Jörg; Frank Pascal | 9h | 1 |  |  | medium | (2) Normal |
| 1100 | 1.2.4.1.13 | Status Meeting W51 |  | 1h | 2009-12-22 | 2009-12-22 | 1216, 1372, 1406, 1439, 1514, 1567, 1928, 1603, 2119 |  | 0d | must start on 2009-12-22 | Zulliger Markus; Scheidegger Ruedi; Lüthi Rico F.; Trindler Markus; Polisano Riccardo; Kradolfer Markus; Lackmann Ralph; Telgheider Jörg; Frank Pascal | 9h | 1 |  |  | medium | (2) Normal |
| 1101 | 1.2.4.1.14 | Status Meeting W52 |  | 1h | 2009-12-29 | 2009-12-29 | 1217, 1373, 1407, 1440, 1515, 1568, 1929, 1604, 2120 |  | 0d | must start on 2009-12-29 | Zulliger Markus; Scheidegger Ruedi; Lüthi Rico F.; Trindler Markus; Polisano Riccardo; Kradolfer Markus; Lackmann Ralph; Telgheider Jörg; Frank Pascal | 9h | 1 |  |  | medium | (2) Normal |
| 1102 | 1.2.4.1.15 | Status Meeting W53 |  | 1h | 2010-01-05 | 2010-01-05 | 1218, 1374, 1408, 1441, 1516, 1569, 1930, 1605, 2121 |  | 0d | must start on 2010-01-05 | Zulliger Markus; Scheidegger Ruedi; Lüthi Rico F.; Trindler Markus; Polisano Riccardo; Kradolfer Markus; Lackmann Ralph; Telgheider Jörg; Frank Pascal | 9h | 1 |  |  | medium | (2) Normal |
| 1103 | 1.2.4.1.16 | Status Meeting W01 |  | 1h | 2010-01-12 | 2010-01-12 | 1219, 1375, 1409, 1442, 1517, 1570, 1931, 1606, 2122 |  | 0d | must start on 2010-01-12 | Zulliger Markus; Scheidegger Ruedi; Lüthi Rico F.; Trindler Markus; Polisano Riccardo; Kradolfer Markus; Lackmann Ralph; Telgheider Jörg; Frank Pascal | 9h | 1 |  |  | medium | (2) Normal |
| 1104 | 1.2.4.1.17 | Status Meeting W02 |  | 1h | 2010-01-19 | 2010-01-19 | 1220, 1376, 1410, 1443, 1518, 1571, 1932, 1607, 2123 |  | 0d | must start on 2010-01-19 | Zulliger Markus; Scheidegger Ruedi; Lüthi Rico F.; Trindler Markus; Polisano Riccardo; Kradolfer Markus; Lackmann Ralph; Telgheider Jörg; Frank Pascal | 9h | 1 |  |  | medium | (2) Normal |
| 1105 | 1.2.4.1.18 | Status Meeting W03 |  | 1h | 2010-01-26 | 2010-01-26 | 1221, 1377, 1411, 1444, 1519, 1572, 1933, 1608, 2124 |  | 0d | must start on 2010-01-26 | Zulliger Markus; Scheidegger Ruedi; Lüthi Rico F.; Trindler Markus; Polisano Riccardo; Kradolfer Markus; Lackmann Ralph; Telgheider Jörg; Frank Pascal | 9h | 1 |  |  | medium | (2) Normal |
| 1106 | 1.2.4.1.19 | Status Meeting W04 |  | 1h | 2010-02-02 | 2010-02-02 | 1222, 1378, 1412, 1445, 1520, 1573, 1934, 1609, 2125 |  | 0d | must start on 2010-02-02 | Zulliger Markus; Scheidegger Ruedi; Lüthi Rico F.; Trindler Markus; Polisano Riccardo; Kradolfer Markus; Lackmann Ralph; Telgheider Jörg; Frank Pascal | 9h | 1 |  |  | medium | (2) Normal |
| 1107 | 1.2.4.1.20 | Status Meeting W05 |  | 1h | 2010-02-09 | 2010-02-09 | 1223, 1379, 1413, 1446, 1521, 1574, 1935, 1610, 2126 |  | 0d | must start on 2010-02-09 | Zulliger Markus; Scheidegger Ruedi; Lüthi Rico F.; Trindler Markus; Polisano Riccardo; Kradolfer Markus; Lackmann Ralph; Telgheider Jörg; Frank Pascal | 9h | 1 |  |  | medium | (2) Normal |
| 1108 | 1.2.4.1.21 | Status Meeting W06 |  | 1h | 2010-02-16 | 2010-02-16 | 1224, 1380, 1414, 1447, 1522, 1575, 1936, 1611, 2127 |  | 0d | must start on 2010-02-16 | Zulliger Markus; Scheidegger Ruedi; Lüthi Rico F.; Trindler Markus; Polisano Riccardo; Kradolfer Markus; Lackmann Ralph; Telgheider Jörg; Frank Pascal | 9h | 1 |  |  | medium | (2) Normal |
| 1109 | 1.2.4.1.22 | Status Meeting W07 |  | 1h | 2010-02-23 | 2010-02-23 | 1225, 1381, 1415, 1448, 1523, 1576, 1937, 1612, 2128 |  | 0d | must start on 2010-02-23 | Zulliger Markus; Scheidegger Ruedi; Lüthi Rico F.; Trindler Markus; Polisano Riccardo; Kradolfer Markus; Lackmann Ralph; Telgheider Jörg; Frank Pascal | 9h | 1 |  |  | medium | (2) Normal |
| 1110 | 1.2.4.1.23 | Status Meeting W08 |  | 1h | 2010-03-02 | 2010-03-02 | 1226, 1382, 1416, 1449, 1524, 1577, 1938, 1613, 2129 |  | 0d | must start on 2010-03-02 | Zulliger Markus; Scheidegger Ruedi; Lüthi Rico F.; Trindler Markus; Polisano Riccardo; Kradolfer Markus; Lackmann Ralph; Telgheider Jörg; Frank Pascal | 9h | 1 |  |  | medium | (2) Normal |
| 1111 | 1.2.4.1.24 | Status Meeting W09 |  | 1h | 2010-03-09 | 2010-03-09 | 1227, 1383, 1417, 1450, 1525, 1578, 1939, 1614, 2130 |  | 0d | must start on 2010-03-09 | Zulliger Markus; Scheidegger Ruedi; Lüthi Rico F.; Trindler Markus; Polisano Riccardo; Kradolfer Markus; Lackmann Ralph; Telgheider Jörg; Frank Pascal | 9h | 1 |  |  | medium | (2) Normal |
| 1112 | 1.2.4.1.25 | Status Meeting W10 |  | 1h | 2010-03-16 | 2010-03-16 | 1228, 1384, 1418, 1451, 1526, 1579, 1940, 1615, 2131 |  | 0d | must start on 2010-03-16 | Zulliger Markus; Scheidegger Ruedi; Lüthi Rico F.; Trindler Markus; Polisano Riccardo; Kradolfer Markus; Lackmann Ralph; Telgheider Jörg; Frank Pascal | 9h | 1 |  |  | medium | (2) Normal |
| 1113 | 1.2.4.1.26 | Status Meeting W11 |  | 1h | 2010-03-23 | 2010-03-23 | 1229, 1385, 1419, 1452, 1527, 1580, 1941, 1616, 2132 |  | 0d | must start on 2010-03-23 | Zulliger Markus; Scheidegger Ruedi; Lüthi Rico F.; Trindler Markus; Polisano Riccardo; Kradolfer Markus; Lackmann Ralph; Telgheider Jörg; Frank Pascal | 9h | 1 |  |  | medium | (2) Normal |
| 1114 | 1.2.4.1.27 | Status Meeting W12 |  | 1h | 2010-03-30 | 2010-03-30 | 1230, 1386, 1420, 1453, 1528, 1581, 1942, 1617, 2133 |  | 0d | must start on 2010-03-30 | Zulliger Markus; Scheidegger Ruedi; Lüthi Rico F.; Trindler Markus; Polisano Riccardo; Kradolfer Markus; Lackmann Ralph; Telgheider Jörg; Frank Pascal | 9h | 1 |  |  | medium | (2) Normal |

| ID | WBS | Task | Duration | Start | Finish | Predecessors | Total slack | Free slack | Resources | Work | Cost | Text23 | Text30 |
| --- | --- | --- | --- | --- | --- | --- | --- | --- | --- | --- | --- | --- | --- |
| 1115 | 1.2.4.2 | **Project Management** | 134d? | 2009-09-23 | 2010-03-31 |  | 0d |  |  | 804h | 3 | medium | (2) Normal |
| 1116 | 1.2.4.2.1 | **Prepare Project Progress Review Report** | 129d | 2009-09-29 | 2010-03-31 |  | 0.62d |  |  | 54h |  | medium | (2) Normal |
| 1117 | 1.2.4.2.1.1 | Create Status Report W39 | 1d | 2009-09-29 | 2009-09-30 | 1088 | 128.62d | 0d | Scheidegger Ruedi [25%] | 2h |  | medium | (2) Normal |
| 1118 | 1.2.4.2.1.2 | Create Status Report W40 | 1d | 2009-10-06 | 2009-10-07 | 1089 | 123.62d | 0d | Scheidegger Ruedi [25%] | 2h |  | medium | (2) Normal |
| 1119 | 1.2.4.2.1.3 | Create Status Report W41 | 1d | 2009-10-13 | 2009-10-14 | 1090 | 118.62d | 0d | Scheidegger Ruedi [25%] | 2h |  | medium | (2) Normal |
| 1120 | 1.2.4.2.1.4 | Create Status Report W42 | 1d | 2009-10-20 | 2009-10-21 | 1091 | 113.62d | 0d | Scheidegger Ruedi [25%] | 2h |  | medium | (2) Normal |
| 1121 | 1.2.4.2.1.5 | Create Status Report W43 | 1d | 2009-10-27 | 2009-10-28 | 1092 | 108.62d | 0d | Scheidegger Ruedi [25%] | 2h |  | medium | (2) Normal |
| 1122 | 1.2.4.2.1.6 | Create Status Report W44 | 1d | 2009-11-03 | 2009-11-04 | 1093 | 103.62d | 0d | Scheidegger Ruedi [25%] | 2h |  | medium | (2) Normal |
| 1123 | 1.2.4.2.1.7 | Create Status Report W45 | 1d | 2009-11-10 | 2009-11-11 | 1094 | 98.62d | 0d | Scheidegger Ruedi [25%] | 2h |  | medium | (2) Normal |
| 1124 | 1.2.4.2.1.8 | Create Status Report W46 | 1d | 2009-11-17 | 2009-11-18 | 1095 | 93.62d | 0d | Scheidegger Ruedi [25%] | 2h |  | medium | (2) Normal |
| 1125 | 1.2.4.2.1.9 | Create Status Report W47 | 1d | 2009-11-24 | 2009-11-25 | 1096 | 88.62d | 0d | Scheidegger Ruedi [25%] | 2h |  | medium | (2) Normal |
| 1126 | 1.2.4.2.1.10 | Create Status Report W48 | 1d | 2009-12-01 | 2009-12-02 | 1097 | 83.62d | 0d | Scheidegger Ruedi [25%] | 2h |  | medium | (2) Normal |
| 1127 | 1.2.4.2.1.11 | Create Status Report W49 | 1d | 2009-12-08 | 2009-12-09 | 1098 | 78.62d | 0d | Scheidegger Ruedi [25%] | 2h |  | medium | (2) Normal |
| 1128 | 1.2.4.2.1.12 | Create Status Report W50 | 1d | 2009-12-15 | 2009-12-16 | 1099 | 73.62d | 0d | Scheidegger Ruedi [25%] | 2h |  | medium | (2) Normal |
| 1129 | 1.2.4.2.1.13 | Create Status Report W51 | 1d | 2009-12-22 | 2009-12-23 | 1100 | 68.62d | 0d | Scheidegger Ruedi [25%] | 2h |  | medium | (2) Normal |
| 1130 | 1.2.4.2.1.14 | Create Status Report W52 | 1d | 2009-12-29 | 2009-12-30 | 1101 | 64.62d | 0d | Scheidegger Ruedi [25%] | 2h |  | medium | (2) Normal |
| 1131 | 1.2.4.2.1.15 | Create Status Report W53 | 1d | 2010-01-05 | 2010-01-06 | 1102 | 60.62d | 0d | Scheidegger Ruedi [25%] | 2h |  | medium | (2) Normal |
| 1132 | 1.2.4.2.1.16 | Create Status Report W01 | 1d | 2010-01-12 | 2010-01-13 | 1103 | 55.62d | 0d | Scheidegger Ruedi [25%] | 2h |  | medium | (2) Normal |
| 1133 | 1.2.4.2.1.17 | Create Status Report W02 | 1d | 2010-01-19 | 2010-01-20 | 1104 | 50.62d | 0d | Scheidegger Ruedi [25%] | 2h |  | medium | (2) Normal |
| 1134 | 1.2.4.2.1.18 | Create Status Report W03 | 1d | 2010-01-26 | 2010-01-27 | 1105 | 45.62d | 0d | Scheidegger Ruedi [25%] | 2h |  | medium | (2) Normal |
| 1135 | 1.2.4.2.1.19 | Create Status Report W04 | 1d | 2010-02-02 | 2010-02-03 | 1106 | 40.62d | 0d | Scheidegger Ruedi [25%] | 2h |  | medium | (2) Normal |
| 1136 | 1.2.4.2.1.20 | Create Status Report W05 | 1d | 2010-02-09 | 2010-02-10 | 1107 | 35.62d | 0d | Scheidegger Ruedi [25%] | 2h |  | medium | (2) Normal |
| 1137 | 1.2.4.2.1.21 | Create Status Report W06 | 1d | 2010-02-16 | 2010-02-17 | 1108 | 30.62d | 0d | Scheidegger Ruedi [25%] | 2h |  | medium | (2) Normal |
| 1138 | 1.2.4.2.1.22 | Create Status Report W07 | 1d | 2010-02-23 | 2010-02-24 | 1109 | 25.62d | 0d | Scheidegger Ruedi [25%] | 2h |  | medium | (2) Normal |
| 1139 | 1.2.4.2.1.23 | Create Status Report W08 | 1d | 2010-03-02 | 2010-03-03 | 1110 | 20.62d | 0d | Scheidegger Ruedi [25%] | 2h |  | medium | (2) Normal |
| 1140 | 1.2.4.2.1.24 | Create Status Report W09 | 1d | 2010-03-09 | 2010-03-10 | 1111 | 15.62d | 0d | Scheidegger Ruedi [25%] | 2h |  | medium | (2) Normal |
| 1141 | 1.2.4.2.1.25 | Create Status Report W10 | 1d | 2010-03-16 | 2010-03-17 | 1112 | 10.62d | 0d | Scheidegger Ruedi [25%] | 2h |  | medium | (2) Normal |
| 1142 | 1.2.4.2.1.26 | Create Status Report W11 | 1d | 2010-03-23 | 2010-03-24 | 1113 | 5.62d | 0d | Scheidegger Ruedi [25%] | 2h |  | medium | (2) Normal |
| 1143 | 1.2.4.2.1.27 | Create Status Report W12 | 1d | 2010-03-30 | 2010-03-31 | 1114 | 0.62d | 0d | Scheidegger Ruedi [25%] | 2h |  | medium | (2) Normal |

| ID | WBS | Task | Type | Duration | Start | Finish | Predecessors | Total slack | Free slack | Constraint | Resources | Work | Cost | Text23 | Text30 |
| --- | --- | --- | --- | --- | --- | --- | --- | --- | --- | --- | --- | --- | --- | --- | --- |
| 1144 | 1.2.4.2.2 | **Phase preparation project** |  | 134d? | 2009-09-23 | 2010-03-31 |  | 0d |  |  |  | 110h | 3 | medium | (2) Normal |
| 1145 | 1.2.4.2.2.1 | Revisit Project Charter |  | 1d | 2009-09-23 | 2009-09-23 |  | 114.88d | 0d |  | Scheidegger Ruedi [25%] | 2h |  | medium | (2) Normal |
| 1146 | 1.2.4.2.2.2 | Initiate Phase in IT Plan |  | 1d | 2009-09-24 | 2009-09-24 | 1145 | 114.88d | 0d |  | Scheidegger Ruedi [25%] | 2h |  | medium | (2) Normal |
| 1147 | 1.2.4.2.2.3 | Revisit Project Process Tailoring |  | 1d | 2009-09-25 | 2009-09-25 | 1146 | 114.88d | 0d |  | Scheidegger Ruedi [25%] | 2h |  | medium | (2) Normal |
| 1148 | 1.2.4.2.2.4 | Update Project Management Plan |  | 1d | 2009-09-28 | 2009-09-28 | 1147 | 114.88d | 0d |  | Scheidegger Ruedi [25%] | 2h |  | medium | (2) Normal |
| 1149 | 1.2.4.2.2.5 | Update WBS and Project Schedule |  | 1d | 2009-09-29 | 2009-09-29 | 1148 | 114.88d | 0d |  | Lüthi Rico F. [25%] | 2h | 2 | medium | (2) Normal |
| 1150 | 1.2.4.2.2.6 | Creat non JIRA work packages |  | 10d | 2009-09-30 | 2009-10-13 | 1149 | 114.88d | 0d |  | Scheidegger Ruedi [50%] | 40h |  | medium | (2) Normal |
| 1151 | 1.2.4.2.2.7 | Clean up JIRA requirements |  | 10d | 2009-09-30 | 2009-10-13 | 1150FF, 1388FF | 114.88d | 0d |  | Scheidegger Ruedi [50%] | 40h |  | medium | (2) Normal |
| 1152 | 1.2.4.2.2.8 | Work packages agreement workshop |  | 1h | 2009-10-14 | 2009-10-14 | 1151 | 114.88d | 0d |  | Scheidegger Ruedi; Lüthi Rico F.; Trindler Markus; Polisano Riccardo; Kradolfer Markus; Lackmann Ralph; Oberndorfer Richard; Telgheider Jörg | 8h | 1 | medium | (2) Normal |
| 1153 | 1.2.4.2.2.9 | Finalize work packages |  | 1d? | 2009-10-14 | 2009-10-15 | 1152 | 114.88d | 0d |  | Scheidegger Ruedi [50%] | 4h |  | medium | (2) Normal |
| 1154 | 1.2.4.2.2.10 | Work Packages ready | milestone | 0d | 2009-10-15 | 2009-10-15 | 1153 | 114.88d | 0d |  |  |  |  | medium | (2) Normal |
| 1155 | 1.2.4.2.2.11 | Obtain Commitment to Plan |  | 1d? | 2010-03-31 | 2010-03-31 | 1154, 1270, 1389, 1421, 1454, 1529, 1582, 1943 | 0d |  |  | Scheidegger Ruedi | 8h |  | medium | (2) Normal |
| 1156 | 1.2.4.2.2.12 | Phase Planning Ready | milestone | 0d | 2010-03-31 | 2010-03-31 | 1155 | 0d |  |  |  |  |  | medium | (2) Normal |
| 1157 | 1.2.4.2.3 | Project coordination |  | 133.33d? | 2009-09-23 | 2010-03-31 |  | 0.67d |  |  | Scheidegger Ruedi [60%] | 640h |  | medium | (2) Normal |
| 1158 | 1.2.4.3 | **Risk Management** |  | 105.38d? | 2009-10-27 | 2010-03-25 |  | 0d |  |  |  | 114h | 66 | medium | (2) Normal |
| 1159 | 1.2.4.3.1 | **Risk Management Meeting October** |  | 1.38d? | 2009-10-27 | 2009-10-28 |  | 0d |  |  |  | 19h | 11 | medium | (2) Normal |
| 1160 | 1.2.4.3.1.1 | Update Risk Plan on SharePoint |  | 0.38d? | 2009-10-27 | 2009-10-27 |  | 0d |  | as late as possible | Lüthi Rico F. | 3h | 3 | medium | (2) Normal |
| 1161 | 1.2.4.3.1.2 | Risk Management Meeting |  | 1h | 2009-10-27 | 2009-10-27 | 1160 | 0d |  | as late as possible | Scheidegger Ruedi; Lüthi Rico F.; Trindler Markus; Polisano Riccardo; Kradolfer Markus; Lackmann Ralph; Oberndorfer Richard; Telgheider Jörg; Frank Pascal | 9h | 1 | medium | (2) Normal |
| 1162 | 1.2.4.3.1.3 | Update Risk Plan on SharePoint |  | 0.12d? | 2009-10-27 | 2009-10-27 | 1161 | 0d |  | as late as possible | Lüthi Rico F. | 1h | 1 | medium | (2) Normal |
| 1163 | 1.2.4.3.1.4 | Prepare Risk Slide |  | 0.25d? | 2009-10-27 | 2009-10-27 | 1162 | 0d |  | as late as possible | Lüthi Rico F. | 2h | 2 | medium | (2) Normal |
| 1164 | 1.2.4.3.1.5 | STC Meeting October | milestone | 0d | 2009-10-27 | 2009-10-27 | 1163 | 0d |  | as late as possible |  |  |  | medium | (2) Normal |
| 1165 | 1.2.4.3.1.6 | Update Risk Plan Doc |  | 0.5d? | 2009-10-28 | 2009-10-28 | 1164 | 108.5d |  |  | Lüthi Rico F. | 4h | 4 | medium | (2) Normal |
| 1166 | 1.2.4.3.2 | **Risk Management Meeting November** |  | 1.38d? | 2009-11-30 | 2009-12-01 |  | 0d |  |  |  | 19h | 11 | medium | (2) Normal |
| 1167 | 1.2.4.3.2.1 | Update Risk Plan on SharePoint |  | 0.38d? | 2009-11-30 | 2009-11-30 |  | 0d |  | as late as possible | Lüthi Rico F. | 3h | 3 | medium | (2) Normal |
| 1168 | 1.2.4.3.2.2 | Risk Management Meeting |  | 1h | 2009-11-30 | 2009-11-30 | 1167 | 0d |  | as late as possible | Scheidegger Ruedi; Lüthi Rico F.; Trindler Markus; Polisano Riccardo; Kradolfer Markus; Lackmann Ralph; Oberndorfer Richard; Telgheider Jörg; Frank Pascal | 9h | 1 | medium | (2) Normal |
| 1169 | 1.2.4.3.2.3 | Update Risk Plan on SharePoint |  | 0.12d? | 2009-11-30 | 2009-11-30 | 1168 | 0d |  | as late as possible | Lüthi Rico F. | 1h | 1 | medium | (2) Normal |
| 1170 | 1.2.4.3.2.4 | Prepare Risk Slide |  | 0.25d? | 2009-11-30 | 2009-11-30 | 1169 | 0d |  | as late as possible | Lüthi Rico F. | 2h | 2 | medium | (2) Normal |
| 1171 | 1.2.4.3.2.5 | STC Meeting November | milestone | 0d | 2009-11-30 | 2009-11-30 | 1170 | 0d |  | as late as possible |  |  |  | medium | (2) Normal |
| 1172 | 1.2.4.3.2.6 | Update Risk Plan Doc |  | 0.5d? | 2009-12-01 | 2009-12-01 | 1171 | 84.5d |  |  | Lüthi Rico F. | 4h | 4 | medium | (2) Normal |

| ID | WBS | Task | Type | Duration | Start | Finish | Predecessors | Total slack | Constraint | Resources | Work | Cost | Text23 | Text30 |
| --- | --- | --- | --- | --- | --- | --- | --- | --- | --- | --- | --- | --- | --- | --- |
| 1173 | 1.2.4.3.3 | **Risk Management Meeting December** |  | 1.38d? | 2009-12-22 | 2009-12-23 |  | 0d |  |  | 19h | 11 | medium | (2) Normal |
| 1174 | 1.2.4.3.3.1 | Update Risk Plan on SharePoint |  | 0.38d? | 2009-12-22 | 2009-12-22 |  | 0d | as late as possible | Lüthi Rico F. | 3h | 3 | medium | (2) Normal |
| 1175 | 1.2.4.3.3.2 | Risk Management Meeting |  | 1h | 2009-12-22 | 2009-12-22 | 1174 | 0d | as late as possible | Scheidegger Ruedi; Lüthi Rico F.; Trindler Markus; Polisano Riccardo; Kradolfer Markus; Lackmann Ralph; Oberndorfer Richard; Telgheider Jörg; Frank Pascal | 9h | 1 | medium | (2) Normal |
| 1176 | 1.2.4.3.3.3 | Update Risk Plan on SharePoint |  | 0.12d? | 2009-12-22 | 2009-12-22 | 1175 | 0d | as late as possible | Lüthi Rico F. | 1h | 1 | medium | (2) Normal |
| 1177 | 1.2.4.3.3.4 | Prepare Risk Slide |  | 0.25d? | 2009-12-22 | 2009-12-22 | 1176 | 0d | as late as possible | Lüthi Rico F. | 2h | 2 | medium | (2) Normal |
| 1178 | 1.2.4.3.3.5 | STC Meeting December | milestone | 0d | 2009-12-22 | 2009-12-22 | 1177 | 0d | as late as possible |  |  |  | medium | (2) Normal |
| 1179 | 1.2.4.3.3.6 | Update Risk Plan Doc |  | 0.5d? | 2009-12-23 | 2009-12-23 | 1178 | 68.5d |  | Lüthi Rico F. | 4h | 4 | medium | (2) Normal |
| 1180 | 1.2.4.3.4 | **Risk Management Meeting January** |  | 1.38d? | 2010-01-25 | 2010-01-26 |  | 0d |  |  | 19h | 11 | medium | (2) Normal |
| 1181 | 1.2.4.3.4.1 | Update Risk Plan on SharePoint |  | 0.38d? | 2010-01-25 | 2010-01-25 |  | 0d | as late as possible | Lüthi Rico F. | 3h | 3 | medium | (2) Normal |
| 1182 | 1.2.4.3.4.2 | Risk Management Meeting |  | 1h | 2010-01-25 | 2010-01-25 | 1181 | 0d | as late as possible | Scheidegger Ruedi; Lüthi Rico F.; Trindler Markus; Polisano Riccardo; Kradolfer Markus; Lackmann Ralph; Oberndorfer Richard; Telgheider Jörg; Frank Pascal | 9h | 1 | medium | (2) Normal |
| 1183 | 1.2.4.3.4.3 | Update Risk Plan on SharePoint |  | 0.12d? | 2010-01-25 | 2010-01-25 | 1182 | 0d | as late as possible | Lüthi Rico F. | 1h | 1 | medium | (2) Normal |
| 1184 | 1.2.4.3.4.4 | Prepare Risk Slide |  | 0.25d? | 2010-01-25 | 2010-01-25 | 1183 | 0d | as late as possible | Lüthi Rico F. | 2h | 2 | medium | (2) Normal |
| 1185 | 1.2.4.3.4.5 | STC Meeting January | milestone | 0d | 2010-01-25 | 2010-01-25 | 1184 | 0d | as late as possible |  |  |  | medium | (2) Normal |
| 1186 | 1.2.4.3.4.6 | Update Risk Plan Doc |  | 0.5d? | 2010-01-26 | 2010-01-26 | 1185 | 46.5d |  | Lüthi Rico F. | 4h | 4 | medium | (2) Normal |
| 1187 | 1.2.4.3.5 | **Risk Management Meeting February** |  | 1.38d? | 2010-02-24 | 2010-02-25 |  | 0d |  |  | 19h | 11 | medium | (2) Normal |
| 1188 | 1.2.4.3.5.1 | Update Risk Plan on SharePoint |  | 0.38d? | 2010-02-24 | 2010-02-24 |  | 0d | as late as possible | Lüthi Rico F. | 3h | 3 | medium | (2) Normal |
| 1189 | 1.2.4.3.5.2 | Risk Management Meeting |  | 1h | 2010-02-24 | 2010-02-24 | 1188 | 0d | as late as possible | Scheidegger Ruedi; Lüthi Rico F.; Trindler Markus; Polisano Riccardo; Kradolfer Markus; Lackmann Ralph; Oberndorfer Richard; Telgheider Jörg; Frank Pascal | 9h | 1 | medium | (2) Normal |
| 1190 | 1.2.4.3.5.3 | Update Risk Plan on SharePoint |  | 0.12d? | 2010-02-24 | 2010-02-24 | 1189 | 0d | as late as possible | Lüthi Rico F. | 1h | 1 | medium | (2) Normal |
| 1191 | 1.2.4.3.5.4 | Prepare Risk Slide |  | 0.25d? | 2010-02-24 | 2010-02-24 | 1190 | 0d | as late as possible | Lüthi Rico F. | 2h | 2 | medium | (2) Normal |
| 1192 | 1.2.4.3.5.5 | STC Meeting February | milestone | 0d | 2010-02-24 | 2010-02-24 | 1191 | 0d | as late as possible |  |  |  | medium | (2) Normal |
| 1193 | 1.2.4.3.5.6 | Update Risk Plan Doc |  | 0.5d? | 2010-02-25 | 2010-02-25 | 1192 | 24.5d |  | Lüthi Rico F. | 4h | 4 | medium | (2) Normal |
| 1194 | 1.2.4.3.6 | **Risk Management Meeting March** |  | 1.38d? | 2010-03-24 | 2010-03-25 |  | 0d |  |  | 19h | 11 | medium | (2) Normal |
| 1195 | 1.2.4.3.6.1 | Update Risk Plan on SharePoint |  | 0.38d? | 2010-03-24 | 2010-03-24 |  | 0d | as late as possible | Lüthi Rico F. | 3h | 3 | medium | (2) Normal |
| 1196 | 1.2.4.3.6.2 | Risk Management Meeting |  | 1h | 2010-03-24 | 2010-03-24 | 1195 | 0d | as late as possible | Scheidegger Ruedi; Lüthi Rico F.; Trindler Markus; Polisano Riccardo; Kradolfer Markus; Lackmann Ralph; Oberndorfer Richard; Telgheider Jörg; Frank Pascal | 9h | 1 | medium | (2) Normal |
| 1197 | 1.2.4.3.6.3 | Update Risk Plan on SharePoint |  | 0.12d? | 2010-03-24 | 2010-03-24 | 1196 | 0d | as late as possible | Lüthi Rico F. | 1h | 1 | medium | (2) Normal |
| 1198 | 1.2.4.3.6.4 | Prepare Risk Slide |  | 0.25d? | 2010-03-24 | 2010-03-24 | 1197 | 0d | as late as possible | Lüthi Rico F. | 2h | 2 | medium | (2) Normal |
| 1199 | 1.2.4.3.6.5 | STC Meeting March | milestone | 0d | 2010-03-24 | 2010-03-24 | 1198 | 0d | as late as possible |  |  |  | medium | (2) Normal |
| 1200 | 1.2.4.3.6.6 | Update Risk Plan Doc |  | 0.5d? | 2010-03-25 | 2010-03-25 | 1199 | 4.5d |  | Lüthi Rico F. | 4h | 4 | medium | (2) Normal |

| ID | WBS | Task | Duration | Start | Finish | Total slack | Constraint | Resources | Work | Cost | Text23 | Text30 |
| --- | --- | --- | --- | --- | --- | --- | --- | --- | --- | --- | --- | --- |
| 1201 | 1.2.4.4 | **PMO & Configuration Management** | 134d? | 2009-09-23 | 2010-03-31 | 0d |  |  | 419h | 269 | medium | (2) Normal |
| 1202 | 1.2.4.4.1 | **Reporting** | 130.38d? | 2009-09-28 | 2010-03-31 | 0d |  |  | 105h | 105 | medium | (2) Normal |
| 1203 | 1.2.4.4.1.1 | **Preparation Role Status Report** | 129d? | 2009-09-28 | 2010-03-29 | 0d |  |  | 27h | 27 | medium | (2) Normal |
| 1204 | 1.2.4.4.1.1.1 | Preparation Role Status Report W39 | 1d? | 2009-09-28 | 2009-09-28 | 0d | as late as possible | Lüthi Rico F. [12.5%] | 1h | 1 | medium | (2) Normal |
| 1205 | 1.2.4.4.1.1.2 | Preparation Role Status Report W40 | 1d? | 2009-10-05 | 2009-10-05 | 0d | as late as possible | Lüthi Rico F. [12.5%] | 1h | 1 | medium | (2) Normal |
| 1206 | 1.2.4.4.1.1.3 | Preparation Role Status Report W41 | 1d? | 2009-10-12 | 2009-10-12 | 0d | as late as possible | Lüthi Rico F. [12.5%] | 1h | 1 | medium | (2) Normal |
| 1207 | 1.2.4.4.1.1.4 | Preparation Role Status Report W42 | 1d? | 2009-10-19 | 2009-10-19 | 0d | as late as possible | Lüthi Rico F. [12.5%] | 1h | 1 | medium | (2) Normal |
| 1208 | 1.2.4.4.1.1.5 | Preparation Role Status Report W43 | 1d? | 2009-10-26 | 2009-10-26 | 0d | as late as possible | Lüthi Rico F. [12.5%] | 1h | 1 | medium | (2) Normal |
| 1209 | 1.2.4.4.1.1.6 | Preparation Role Status Report W44 | 1d? | 2009-11-02 | 2009-11-02 | 0d | as late as possible | Lüthi Rico F. [12.5%] | 1h | 1 | medium | (2) Normal |
| 1210 | 1.2.4.4.1.1.7 | Preparation Role Status Report W45 | 1d? | 2009-11-09 | 2009-11-09 | 0d | as late as possible | Lüthi Rico F. [12.5%] | 1h | 1 | medium | (2) Normal |
| 1211 | 1.2.4.4.1.1.8 | Preparation Role Status Report W46 | 1d? | 2009-11-16 | 2009-11-16 | 0d | as late as possible | Lüthi Rico F. [12.5%] | 1h | 1 | medium | (2) Normal |
| 1212 | 1.2.4.4.1.1.9 | Preparation Role Status Report W47 | 1d? | 2009-11-23 | 2009-11-23 | 0d | as late as possible | Lüthi Rico F. [12.5%] | 1h | 1 | medium | (2) Normal |
| 1213 | 1.2.4.4.1.1.10 | Preparation Role Status Report W48 | 1d? | 2009-11-30 | 2009-11-30 | 0d | as late as possible | Lüthi Rico F. [12.5%] | 1h | 1 | medium | (2) Normal |
| 1214 | 1.2.4.4.1.1.11 | Preparation Role Status Report W49 | 1d? | 2009-12-07 | 2009-12-07 | 0d | as late as possible | Lüthi Rico F. [12.5%] | 1h | 1 | medium | (2) Normal |
| 1215 | 1.2.4.4.1.1.12 | Preparation Role Status Report W50 | 1d? | 2009-12-14 | 2009-12-14 | 0d | as late as possible | Lüthi Rico F. [12.5%] | 1h | 1 | medium | (2) Normal |
| 1216 | 1.2.4.4.1.1.13 | Preparation Role Status Report W51 | 1d? | 2009-12-21 | 2009-12-21 | 0d | as late as possible | Lüthi Rico F. [12.5%] | 1h | 1 | medium | (2) Normal |
| 1217 | 1.2.4.4.1.1.14 | Preparation Role Status Report W52 | 1d? | 2009-12-28 | 2009-12-28 | 0d | as late as possible | Lüthi Rico F. [12.5%] | 1h | 1 | medium | (2) Normal |
| 1218 | 1.2.4.4.1.1.15 | Preparation Role Status Report W53 | 1d? | 2010-01-04 | 2010-01-04 | 0d | as late as possible | Lüthi Rico F. [12.5%] | 1h | 1 | medium | (2) Normal |
| 1219 | 1.2.4.4.1.1.16 | Preparation Role Status Report W01 | 1d? | 2010-01-11 | 2010-01-11 | 0d | as late as possible | Lüthi Rico F. [12.5%] | 1h | 1 | medium | (2) Normal |
| 1220 | 1.2.4.4.1.1.17 | Preparation Role Status Report W02 | 1d? | 2010-01-18 | 2010-01-18 | 0d | as late as possible | Lüthi Rico F. [12.5%] | 1h | 1 | medium | (2) Normal |
| 1221 | 1.2.4.4.1.1.18 | Preparation Role Status Report W03 | 1d? | 2010-01-25 | 2010-01-25 | 0d | as late as possible | Lüthi Rico F. [12.5%] | 1h | 1 | medium | (2) Normal |
| 1222 | 1.2.4.4.1.1.19 | Preparation Role Status Report W04 | 1d? | 2010-02-01 | 2010-02-01 | 0d | as late as possible | Lüthi Rico F. [12.5%] | 1h | 1 | medium | (2) Normal |
| 1223 | 1.2.4.4.1.1.20 | Preparation Role Status Report W05 | 1d? | 2010-02-08 | 2010-02-08 | 0d | as late as possible | Lüthi Rico F. [12.5%] | 1h | 1 | medium | (2) Normal |
| 1224 | 1.2.4.4.1.1.21 | Preparation Role Status Report W06 | 1d? | 2010-02-15 | 2010-02-15 | 0d | as late as possible | Lüthi Rico F. [12.5%] | 1h | 1 | medium | (2) Normal |
| 1225 | 1.2.4.4.1.1.22 | Preparation Role Status Report W07 | 1d? | 2010-02-22 | 2010-02-22 | 0d | as late as possible | Lüthi Rico F. [12.5%] | 1h | 1 | medium | (2) Normal |
| 1226 | 1.2.4.4.1.1.23 | Preparation Role Status Report W08 | 1d? | 2010-03-01 | 2010-03-01 | 0d | as late as possible | Lüthi Rico F. [12.5%] | 1h | 1 | medium | (2) Normal |
| 1227 | 1.2.4.4.1.1.24 | Preparation Role Status Report W09 | 1d? | 2010-03-08 | 2010-03-08 | 0d | as late as possible | Lüthi Rico F. [12.5%] | 1h | 1 | medium | (2) Normal |
| 1228 | 1.2.4.4.1.1.25 | Preparation Role Status Report W10 | 1d? | 2010-03-15 | 2010-03-15 | 0d | as late as possible | Lüthi Rico F. [12.5%] | 1h | 1 | medium | (2) Normal |
| 1229 | 1.2.4.4.1.1.26 | Preparation Role Status Report W11 | 1d? | 2010-03-22 | 2010-03-22 | 0d | as late as possible | Lüthi Rico F. [12.5%] | 1h | 1 | medium | (2) Normal |
| 1230 | 1.2.4.4.1.1.27 | Preparation Role Status Report W12 | 1d? | 2010-03-29 | 2010-03-29 | 0d | as late as possible | Lüthi Rico F. [12.5%] | 1h | 1 | medium | (2) Normal |

| ID | WBS | Task | Duration | Start | Finish | Predecessors | Total slack | Resources | Work | Cost | Text23 | Text30 |
| --- | --- | --- | --- | --- | --- | --- | --- | --- | --- | --- | --- | --- |
| 1231 | 1.2.4.4.1.2 | **Finishing Project Status Report** | 128.25d? | 2009-09-30 | 2010-03-31 |  | 0.62d |  | 54h | 54 | medium | (2) Normal |
| 1232 | 1.2.4.4.1.2.1 | Finishing Project Status Report W39 | 0.25d? | 2009-09-30 | 2009-09-30 | 1117 | 128.62d | Lüthi Rico F. | 2h | 2 | medium | (2) Normal |
| 1233 | 1.2.4.4.1.2.2 | Finishing Project Status Report W40 | 0.25d? | 2009-10-07 | 2009-10-07 | 1118 | 123.62d | Lüthi Rico F. | 2h | 2 | medium | (2) Normal |
| 1234 | 1.2.4.4.1.2.3 | Finishing Project Status Report W41 | 0.25d? | 2009-10-14 | 2009-10-14 | 1119 | 118.62d | Lüthi Rico F. | 2h | 2 | medium | (2) Normal |
| 1235 | 1.2.4.4.1.2.4 | Finishing Project Status Report W42 | 0.25d? | 2009-10-21 | 2009-10-21 | 1120 | 113.62d | Lüthi Rico F. | 2h | 2 | medium | (2) Normal |
| 1236 | 1.2.4.4.1.2.5 | Finishing Project Status Report W43 | 0.25d? | 2009-10-28 | 2009-10-28 | 1121 | 108.62d | Lüthi Rico F. | 2h | 2 | medium | (2) Normal |
| 1237 | 1.2.4.4.1.2.6 | Finishing Project Status Report W44 | 0.25d? | 2009-11-04 | 2009-11-04 | 1122 | 103.62d | Lüthi Rico F. | 2h | 2 | medium | (2) Normal |
| 1238 | 1.2.4.4.1.2.7 | Finishing Project Status Report W45 | 0.25d? | 2009-11-11 | 2009-11-11 | 1123 | 98.62d | Lüthi Rico F. | 2h | 2 | medium | (2) Normal |
| 1239 | 1.2.4.4.1.2.8 | Finishing Project Status Report W46 | 0.25d? | 2009-11-18 | 2009-11-18 | 1124 | 93.62d | Lüthi Rico F. | 2h | 2 | medium | (2) Normal |
| 1240 | 1.2.4.4.1.2.9 | Finishing Project Status Report W47 | 0.25d? | 2009-11-25 | 2009-11-25 | 1125 | 88.62d | Lüthi Rico F. | 2h | 2 | medium | (2) Normal |
| 1241 | 1.2.4.4.1.2.10 | Finishing Project Status Report W48 | 0.25d? | 2009-12-02 | 2009-12-02 | 1126 | 83.62d | Lüthi Rico F. | 2h | 2 | medium | (2) Normal |
| 1242 | 1.2.4.4.1.2.11 | Finishing Project Status Report W49 | 0.25d? | 2009-12-09 | 2009-12-09 | 1127 | 78.62d | Lüthi Rico F. | 2h | 2 | medium | (2) Normal |
| 1243 | 1.2.4.4.1.2.12 | Finishing Project Status Report W50 | 0.25d? | 2009-12-16 | 2009-12-16 | 1128 | 73.62d | Lüthi Rico F. | 2h | 2 | medium | (2) Normal |
| 1244 | 1.2.4.4.1.2.13 | Finishing Project Status Report W51 | 0.25d? | 2009-12-23 | 2009-12-23 | 1129 | 68.62d | Lüthi Rico F. | 2h | 2 | medium | (2) Normal |
| 1245 | 1.2.4.4.1.2.14 | Finishing Project Status Report W52 | 0.25d? | 2009-12-30 | 2009-12-30 | 1130 | 64.62d | Lüthi Rico F. | 2h | 2 | medium | (2) Normal |
| 1246 | 1.2.4.4.1.2.15 | Finishing Project Status Report W53 | 0.25d? | 2010-01-06 | 2010-01-06 | 1131 | 60.62d | Lüthi Rico F. | 2h | 2 | medium | (2) Normal |
| 1247 | 1.2.4.4.1.2.16 | Finishing Project Status Report W01 | 0.25d? | 2010-01-13 | 2010-01-13 | 1132 | 55.62d | Lüthi Rico F. | 2h | 2 | medium | (2) Normal |
| 1248 | 1.2.4.4.1.2.17 | Finishing Project Status Report W02 | 0.25d? | 2010-01-20 | 2010-01-20 | 1133 | 50.62d | Lüthi Rico F. | 2h | 2 | medium | (2) Normal |
| 1249 | 1.2.4.4.1.2.18 | Finishing Project Status Report W03 | 0.25d? | 2010-01-27 | 2010-01-27 | 1134 | 45.62d | Lüthi Rico F. | 2h | 2 | medium | (2) Normal |
| 1250 | 1.2.4.4.1.2.19 | Finishing Project Status Report W04 | 0.25d? | 2010-02-03 | 2010-02-03 | 1135 | 40.62d | Lüthi Rico F. | 2h | 2 | medium | (2) Normal |
| 1251 | 1.2.4.4.1.2.20 | Finishing Project Status Report W05 | 0.25d? | 2010-02-10 | 2010-02-10 | 1136 | 35.62d | Lüthi Rico F. | 2h | 2 | medium | (2) Normal |
| 1252 | 1.2.4.4.1.2.21 | Finishing Project Status Report W06 | 0.25d? | 2010-02-17 | 2010-02-17 | 1137 | 30.62d | Lüthi Rico F. | 2h | 2 | medium | (2) Normal |
| 1253 | 1.2.4.4.1.2.22 | Finishing Project Status Report W07 | 0.25d? | 2010-02-24 | 2010-02-24 | 1138 | 25.62d | Lüthi Rico F. | 2h | 2 | medium | (2) Normal |
| 1254 | 1.2.4.4.1.2.23 | Finishing Project Status Report W08 | 0.25d? | 2010-03-03 | 2010-03-03 | 1139 | 20.62d | Lüthi Rico F. | 2h | 2 | medium | (2) Normal |
| 1255 | 1.2.4.4.1.2.24 | Finishing Project Status Report W09 | 0.25d? | 2010-03-10 | 2010-03-10 | 1140 | 15.62d | Lüthi Rico F. | 2h | 2 | medium | (2) Normal |
| 1256 | 1.2.4.4.1.2.25 | Finishing Project Status Report W10 | 0.25d? | 2010-03-17 | 2010-03-17 | 1141 | 10.62d | Lüthi Rico F. | 2h | 2 | medium | (2) Normal |
| 1257 | 1.2.4.4.1.2.26 | Finishing Project Status Report W11 | 0.25d? | 2010-03-24 | 2010-03-24 | 1142 | 5.62d | Lüthi Rico F. | 2h | 2 | medium | (2) Normal |
| 1258 | 1.2.4.4.1.2.27 | Finishing Project Status Report W12 | 0.25d? | 2010-03-31 | 2010-03-31 | 1143 | 0.62d | Lüthi Rico F. | 2h | 2 | medium | (2) Normal |

| ID | WBS | Task | Type | Duration | Start | Finish | Predecessors | Total slack | Free slack | Constraint | Resources | Work | Cost | Text23 | Text30 |
| --- | --- | --- | --- | --- | --- | --- | --- | --- | --- | --- | --- | --- | --- | --- | --- |
| 1259 | 1.2.4.4.1.3 | **Financial Sheet Update** |  | 104.5d | 2009-10-08 | 2010-03-05 |  | 18.5d |  |  |  | 24h | 24 | medium | (2) Normal |
| 1260 | 1.2.4.4.1.3.1 | Financial Sheet Update 1 |  | 0.5d | 2009-10-08 | 2009-10-08 | 1269 | 122.5d |  | start no earlier than 2009-10-05 | Lüthi Rico F. | 4h | 4 | medium | (2) Normal |
| 1261 | 1.2.4.4.1.3.2 | Financial Sheet Update 2 |  | 0.5d | 2009-11-05 | 2009-11-05 |  | 102.5d |  | start no earlier than 2009-11-05 | Lüthi Rico F. | 4h | 4 | medium | (2) Normal |
| 1262 | 1.2.4.4.1.3.3 | Financial Sheet Update 3 |  | 0.5d | 2009-12-07 | 2009-12-07 |  | 80.5d |  | start no earlier than 2009-12-05 | Lüthi Rico F. | 4h | 4 | medium | (2) Normal |
| 1263 | 1.2.4.4.1.3.4 | Financial Sheet Update 4 |  | 0.5d | 2010-01-05 | 2010-01-05 |  | 61.5d |  | start no earlier than 2010-01-05 | Lüthi Rico F. | 4h | 4 | medium | (2) Normal |
| 1264 | 1.2.4.4.1.3.5 | Financial Sheet Update 5 |  | 0.5d | 2010-02-05 | 2010-02-05 |  | 38.5d |  | start no earlier than 2010-02-05 | Lüthi Rico F. | 4h | 4 | medium | (2) Normal |
| 1265 | 1.2.4.4.1.3.6 | Financial Sheet Update 6 |  | 0.5d | 2010-03-05 | 2010-03-05 |  | 18.5d |  | start no earlier than 2010-03-05 | Lüthi Rico F. | 4h | 4 | medium | (2) Normal |
| 1266 | 1.2.4.4.2 | **Phase preparation infrastructure** |  | 11d? | 2009-09-23 | 2009-10-07 |  | 122.5d |  |  |  | 88h | 88 | medium | (2) Normal |
| 1267 | 1.2.4.4.2.1 | Update Stream / Role Pages SharePoint |  | 5d? | 2009-09-23 | 2009-09-29 |  | 122.5d | 0d |  | Lüthi Rico F. | 40h | 40 | medium | (2) Normal |
| 1268 | 1.2.4.4.2.2 | Reporting Update (Graphics) |  | 3d? | 2009-09-30 | 2009-10-02 | 1267 | 122.5d | 0d |  | Lüthi Rico F. | 24h | 24 | medium | (2) Normal |
| 1269 | 1.2.4.4.2.3 | Finical Sheet Update |  | 3d? | 2009-10-05 | 2009-10-07 | 1268 | 122.5d | 0d |  | Lüthi Rico F. | 24h | 24 | medium | (2) Normal |
| 1270 | 1.2.4.4.3 | **Phase preparation role** |  | 2d? | 2009-10-15 | 2009-10-19 |  | 114.88d |  |  |  | 16h | 16 | medium | (2) Normal |
| 1271 | 1.2.4.4.3.1 | Detail planning of the phase |  | 2d? | 2009-10-15 | 2009-10-19 | 1154 | 114.88d |  |  | Lüthi Rico F. | 16h | 16 | medium | (2) Normal |
| 1272 | 1.2.4.4.4 | **Baselines** |  | 120d | 2009-10-13 | 2010-03-31 |  | 0d |  |  |  | 210h | 60 | medium | (2) Normal |
| 1273 | 1.2.4.4.4.1 | **Creation of Baseline PG1** |  | 3d | 2009-10-13 | 2009-10-15 | 46 | 117d |  |  |  | 35h | 10 | medium | (2) Normal |
| 1274 | 1.2.4.4.4.1.1 | Preparation fo Baseline |  | 0.5d | 2009-10-13 | 2009-10-13 |  | 117d | 0d |  | Lüthi Rico F. [50%] | 2h | 2 | medium | (2) Normal |
| 1275 | 1.2.4.4.4.1.2 | Create Baseline SharePoint |  | 1d | 2009-10-13 | 2009-10-14 | 1274 | 117d | 0d |  | Lüthi Rico F. [50%] | 4h | 4 | medium | (2) Normal |
| 1276 | 1.2.4.4.4.1.3 | Create Baseline WIKI |  | 1d | 2009-10-13 | 2009-10-14 | 1274 | 117d | 0d |  | Hermann René [37.5%] | 3h |  | medium | (2) Normal |
| 1277 | 1.2.4.4.4.1.4 | Create Baseline CVS |  | 1d | 2009-10-13 | 2009-10-14 | 1274 | 117d | 0d |  | Piol Domenico [37.5%] | 3h |  | medium | (2) Normal |
| 1278 | 1.2.4.4.4.1.5 | Create Baseline Subversion |  | 1d | 2009-10-13 | 2009-10-14 | 1274 | 117d | 0d |  | Bu Sigve [37.5%] | 3h |  | medium | (2) Normal |
| 1279 | 1.2.4.4.4.1.6 | Create Baseline SDSS |  | 1d | 2009-10-13 | 2009-10-14 | 1274 | 117d | 0d |  | Bu Sigve [37.5%] | 3h |  | medium | (2) Normal |
| 1280 | 1.2.4.4.4.1.7 | Create Baseline JIRA Requirements |  | 1d | 2009-10-13 | 2009-10-14 | 1274 | 117d | 0d |  | Trindler Markus [37.5%] | 3h |  | medium | (2) Normal |
| 1281 | 1.2.4.4.4.1.8 | Create Baseline JIRA Issues |  | 1d | 2009-10-13 | 2009-10-14 | 1274 | 117d | 0d |  | Oezgen Oya [37.5%] | 3h |  | medium | (2) Normal |
| 1282 | 1.2.4.4.4.1.9 | Create Baseline JIRA Defects |  | 1d | 2009-10-13 | 2009-10-14 | 1274 | 117d | 0d |  | Oezgen Oya [37.5%] | 3h |  | medium | (2) Normal |
| 1283 | 1.2.4.4.4.1.10 | Create Baseline Quality Center |  | 1d | 2009-10-13 | 2009-10-14 | 1274 | 117d | 0d |  | Oberndorfer Richard [37.5%] | 3h |  | medium | (2) Normal |
| 1284 | 1.2.4.4.4.1.11 | Update Configuration Management Plan & Configuration Item List & Baseline Record |  | 0.5d | 2009-10-14 | 2009-10-14 | 1275, 1276, 1277, 1278, 1279, 1280, 1281, 1282, 1283 | 117d | 0d |  | Lüthi Rico F. | 4h | 4 | medium | (2) Normal |
| 1285 | 1.2.4.4.4.1.12 | Audit Baseline Implematation Process |  | 1d | 2009-10-15 | 2009-10-15 | 1284 | 117d | 0d |  | Scheidegger Ruedi [6.2%]; Polisano Riccardo [6.2%] | 1h |  | medium | (2) Normal |
| 1286 | 1.2.4.4.4.1.13 | Baseline created | milestone | 0d | 2009-10-15 | 2009-10-15 | 1285 | 117d |  |  |  |  |  | medium | (2) Normal |

| ID | WBS | Task | Type | Duration | Start | Finish | Predecessors | Total slack | Free slack | Resources | Work | Cost | Text23 | Text30 |
| --- | --- | --- | --- | --- | --- | --- | --- | --- | --- | --- | --- | --- | --- | --- |
| 1287 | 1.2.4.4.4.2 | **Creation of Baseline PG2** |  | 3d | 2009-11-09 | 2009-11-11 | 49 | 98d |  |  | 35h | 10 | medium | (2) Normal |
| 1288 | 1.2.4.4.4.2.1 | preparation fo Baseline |  | 0.5d | 2009-11-09 | 2009-11-09 |  | 98d | 0d | Lüthi Rico F. [50%] | 2h | 2 | medium | (2) Normal |
| 1289 | 1.2.4.4.4.2.2 | Create Baseline SharePoint |  | 1d | 2009-11-09 | 2009-11-10 | 1288 | 98d | 0d | Lüthi Rico F. [50%] | 4h | 4 | medium | (2) Normal |
| 1290 | 1.2.4.4.4.2.3 | Create Baseline WIKI |  | 1d | 2009-11-09 | 2009-11-10 | 1288 | 98d | 0d | Hermann René [37.5%] | 3h |  | medium | (2) Normal |
| 1291 | 1.2.4.4.4.2.4 | Create Baseline CVS |  | 1d | 2009-11-09 | 2009-11-10 | 1288 | 98d | 0d | Piol Domenico [37.5%] | 3h |  | medium | (2) Normal |
| 1292 | 1.2.4.4.4.2.5 | Create Baseline Subversion |  | 1d | 2009-11-09 | 2009-11-10 | 1288 | 98d | 0d | Bu Sigve [37.5%] | 3h |  | medium | (2) Normal |
| 1293 | 1.2.4.4.4.2.6 | Create Baseline SDSS |  | 1d | 2009-11-09 | 2009-11-10 | 1288 | 98d | 0d | Bu Sigve [37.5%] | 3h |  | medium | (2) Normal |
| 1294 | 1.2.4.4.4.2.7 | Create Baseline JIRA Requirements |  | 1d | 2009-11-09 | 2009-11-10 | 1288 | 98d | 0d | Trindler Markus [37.5%] | 3h |  | medium | (2) Normal |
| 1295 | 1.2.4.4.4.2.8 | Create Baseline JIRA Issues |  | 1d | 2009-11-09 | 2009-11-10 | 1288 | 98d | 0d | Oezgen Oya [37.5%] | 3h |  | medium | (2) Normal |
| 1296 | 1.2.4.4.4.2.9 | Create Baseline JIRA Defects |  | 1d | 2009-11-09 | 2009-11-10 | 1288 | 98d | 0d | Oezgen Oya [37.5%] | 3h |  | medium | (2) Normal |
| 1297 | 1.2.4.4.4.2.10 | Create Baseline Quality Center |  | 1d | 2009-11-09 | 2009-11-10 | 1288 | 98d | 0d | Oberndorfer Richard [37.5%] | 3h |  | medium | (2) Normal |
| 1298 | 1.2.4.4.4.2.11 | Update Configuration Management Plan & Configuration Item List & Baseline Record |  | 0.5d | 2009-11-10 | 2009-11-10 | 1289, 1290, 1291, 1292, 1293, 1294, 1295, 1296, 1297 | 98d | 0d | Lüthi Rico F. | 4h | 4 | medium | (2) Normal |
| 1299 | 1.2.4.4.4.2.12 | Audit Baseline Implementation Process |  | 1d | 2009-11-11 | 2009-11-11 | 1298 | 98d | 0d | Scheidegger Ruedi [6.2%]; Polisano Riccardo [6.2%] | 1h |  | medium | (2) Normal |
| 1300 | 1.2.4.4.4.2.13 | Baseline created | milestone | 0d | 2009-11-11 | 2009-11-11 | 1299 | 98d |  |  |  |  | medium | (2) Normal |
| 1301 | 1.2.4.4.4.3 | **Creation of Baseline PG3** |  | 3d | 2009-12-07 | 2009-12-09 | 52 | 78d |  |  | 35h | 10 | medium | (2) Normal |
| 1302 | 1.2.4.4.4.3.1 | Preparation fo Baseline |  | 0.5d | 2009-12-07 | 2009-12-07 |  | 78d | 0d | Lüthi Rico F. [50%] | 2h | 2 | medium | (2) Normal |
| 1303 | 1.2.4.4.4.3.2 | Create Baseline SharePoint |  | 1d | 2009-12-07 | 2009-12-08 | 1302 | 78d | 0d | Lüthi Rico F. [50%] | 4h | 4 | medium | (2) Normal |
| 1304 | 1.2.4.4.4.3.3 | Create Baseline WIKI |  | 1d | 2009-12-07 | 2009-12-08 | 1302 | 78d | 0d | Hermann René [37.5%] | 3h |  | medium | (2) Normal |
| 1305 | 1.2.4.4.4.3.4 | Create Baseline CVS |  | 1d | 2009-12-07 | 2009-12-08 | 1302 | 78d | 0d | Piol Domenico [37.5%] | 3h |  | medium | (2) Normal |
| 1306 | 1.2.4.4.4.3.5 | Create Baseline Subversion |  | 1d | 2009-12-07 | 2009-12-08 | 1302 | 78d | 0d | Bu Sigve [37.5%] | 3h |  | medium | (2) Normal |
| 1307 | 1.2.4.4.4.3.6 | Create Baseline SDSS |  | 1d | 2009-12-07 | 2009-12-08 | 1302 | 78d | 0d | Bu Sigve [37.5%] | 3h |  | medium | (2) Normal |
| 1308 | 1.2.4.4.4.3.7 | Create Baseline JIRA Requirements |  | 1d | 2009-12-07 | 2009-12-08 | 1302 | 78d | 0d | Trindler Markus [37.5%] | 3h |  | medium | (2) Normal |
| 1309 | 1.2.4.4.4.3.8 | Create Baseline JIRA Issues |  | 1d | 2009-12-07 | 2009-12-08 | 1302 | 78d | 0d | Oezgen Oya [37.5%] | 3h |  | medium | (2) Normal |
| 1310 | 1.2.4.4.4.3.9 | Create Baseline JIRA Defects |  | 1d | 2009-12-07 | 2009-12-08 | 1302 | 78d | 0d | Oezgen Oya [37.5%] | 3h |  | medium | (2) Normal |
| 1311 | 1.2.4.4.4.3.10 | Create Baseline Quality Center |  | 1d | 2009-12-07 | 2009-12-08 | 1302 | 78d | 0d | Oberndorfer Richard [37.5%] | 3h |  | medium | (2) Normal |
| 1312 | 1.2.4.4.4.3.11 | Update Configuration Management Plan & Configuration Item List & Baseline Record |  | 0.5d | 2009-12-08 | 2009-12-08 | 1303, 1304, 1305, 1306, 1307, 1308, 1309, 1310, 1311 | 78d | 0d | Lüthi Rico F. | 4h | 4 | medium | (2) Normal |
| 1313 | 1.2.4.4.4.3.12 | Audit Baseline Implementation Process |  | 1d | 2009-12-09 | 2009-12-09 | 1312 | 78d | 0d | Scheidegger Ruedi [6.2%]; Polisano Riccardo [6.2%] | 1h |  | medium | (2) Normal |
| 1314 | 1.2.4.4.4.3.13 | Baseline created | milestone | 0d | 2009-12-09 | 2009-12-09 | 1313 | 78d |  |  |  |  | medium | (2) Normal |

| ID | WBS | Task | Type | Duration | Start | Finish | Predecessors | Total slack | Free slack | Resources | Work | Cost | Text23 | Text30 |
| --- | --- | --- | --- | --- | --- | --- | --- | --- | --- | --- | --- | --- | --- | --- |
| 1315 | 1.2.4.4.4.4 | **Creation of Baseline RC1** |  | 3d | 2010-01-15 | 2010-01-19 | 55 | 51d |  |  | 35h | 10 | medium | (2) Normal |
| 1316 | 1.2.4.4.4.4.1 | Preparation fo Baseline |  | 0.5d | 2010-01-15 | 2010-01-15 |  | 51d | 0d | Lüthi Rico F. [50%] | 2h | 2 | medium | (2) Normal |
| 1317 | 1.2.4.4.4.4.2 | Create Baseline SharePoint |  | 1d | 2010-01-15 | 2010-01-18 | 1316 | 51d | 0d | Lüthi Rico F. [50%] | 4h | 4 | medium | (2) Normal |
| 1318 | 1.2.4.4.4.4.3 | Create Baseline WIKI |  | 1d | 2010-01-15 | 2010-01-18 | 1316 | 51d | 0d | Hermann René [37.5%] | 3h |  | medium | (2) Normal |
| 1319 | 1.2.4.4.4.4.4 | Create Baseline CVS |  | 1d | 2010-01-15 | 2010-01-18 | 1316 | 51d | 0d | Piol Domenico [37.5%] | 3h |  | medium | (2) Normal |
| 1320 | 1.2.4.4.4.4.5 | Create Baseline Subversion |  | 1d | 2010-01-15 | 2010-01-18 | 1316 | 51d | 0d | Bu Sigve [37.5%] | 3h |  | medium | (2) Normal |
| 1321 | 1.2.4.4.4.4.6 | Create Baseline SDSS |  | 1d | 2010-01-15 | 2010-01-18 | 1316 | 51d | 0d | Bu Sigve [37.5%] | 3h |  | medium | (2) Normal |
| 1322 | 1.2.4.4.4.4.7 | Create Baseline JIRA Requirements |  | 1d | 2010-01-15 | 2010-01-18 | 1316 | 51d | 0d | Trindler Markus [37.5%] | 3h |  | medium | (2) Normal |
| 1323 | 1.2.4.4.4.4.8 | Create Baseline JIRA Issues |  | 1d | 2010-01-15 | 2010-01-18 | 1316 | 51d | 0d | Oezgen Oya [37.5%] | 3h |  | medium | (2) Normal |
| 1324 | 1.2.4.4.4.4.9 | Create Baseline JIRA Defects |  | 1d | 2010-01-15 | 2010-01-18 | 1316 | 51d | 0d | Oezgen Oya [37.5%] | 3h |  | medium | (2) Normal |
| 1325 | 1.2.4.4.4.4.10 | Create Baseline Quality Center |  | 1d | 2010-01-15 | 2010-01-18 | 1316 | 51d | 0d | Oberndorfer Richard [37.5%] | 3h |  | medium | (2) Normal |
| 1326 | 1.2.4.4.4.4.11 | Update Configuration Management Plan & Configuration Item List & Baseline Record |  | 0.5d | 2010-01-18 | 2010-01-18 | 1317, 1318, 1319, 1320, 1321, 1322, 1323, 1324, 1325 | 51d | 0d | Lüthi Rico F. | 4h | 4 | medium | (2) Normal |
| 1327 | 1.2.4.4.4.4.12 | Audit Baseline Implementation Process |  | 1d | 2010-01-19 | 2010-01-19 | 1326 | 51d | 0d | Scheidegger Ruedi [6.2%]; Polisano Riccardo [6.2%] | 1h |  | medium | (2) Normal |
| 1328 | 1.2.4.4.4.4.13 | Baseline created | milestone | 0d | 2010-01-19 | 2010-01-19 | 1327 | 51d |  |  |  |  | medium | (2) Normal |
| 1329 | 1.2.4.4.4.5 | **Creation of Baseline RC2** |  | 3d | 2010-02-08 | 2010-02-10 | 58 | 35d |  |  | 35h | 10 | medium | (2) Normal |
| 1330 | 1.2.4.4.4.5.1 | Preparation fo Baseline |  | 0.5d | 2010-02-08 | 2010-02-08 |  | 35d | 0d | Lüthi Rico F. [50%] | 2h | 2 | medium | (2) Normal |
| 1331 | 1.2.4.4.4.5.2 | Create Baseline SharePoint |  | 1d | 2010-02-08 | 2010-02-09 | 1330 | 35d | 0d | Lüthi Rico F. [50%] | 4h | 4 | medium | (2) Normal |
| 1332 | 1.2.4.4.4.5.3 | Create Baseline WIKI |  | 1d | 2010-02-08 | 2010-02-09 | 1330 | 35d | 0d | Hermann René [37.5%] | 3h |  | medium | (2) Normal |
| 1333 | 1.2.4.4.4.5.4 | Create Baseline CVS |  | 1d | 2010-02-08 | 2010-02-09 | 1330 | 35d | 0d | Piol Domenico [37.5%] | 3h |  | medium | (2) Normal |
| 1334 | 1.2.4.4.4.5.5 | Create Baseline Subversion |  | 1d | 2010-02-08 | 2010-02-09 | 1330 | 35d | 0d | Bu Sigve [37.5%] | 3h |  | medium | (2) Normal |
| 1335 | 1.2.4.4.4.5.6 | Create Baseline SDSS |  | 1d | 2010-02-08 | 2010-02-09 | 1330 | 35d | 0d | Bu Sigve [37.5%] | 3h |  | medium | (2) Normal |
| 1336 | 1.2.4.4.4.5.7 | Create Baseline JIRA Requirements |  | 1d | 2010-02-08 | 2010-02-09 | 1330 | 35d | 0d | Trindler Markus [37.5%] | 3h |  | medium | (2) Normal |
| 1337 | 1.2.4.4.4.5.8 | Create Baseline JIRA Issues |  | 1d | 2010-02-08 | 2010-02-09 | 1330 | 35d | 0d | Oezgen Oya [37.5%] | 3h |  | medium | (2) Normal |
| 1338 | 1.2.4.4.4.5.9 | Create Baseline JIRA Defects |  | 1d | 2010-02-08 | 2010-02-09 | 1330 | 35d | 0d | Oezgen Oya [37.5%] | 3h |  | medium | (2) Normal |
| 1339 | 1.2.4.4.4.5.10 | Create Baseline Quality Center |  | 1d | 2010-02-08 | 2010-02-09 | 1330 | 35d | 0d | Oberndorfer Richard [37.5%] | 3h |  | medium | (2) Normal |
| 1340 | 1.2.4.4.4.5.11 | Update Configuration Management Plan & Configuration Item List & Baseline Record |  | 0.5d | 2010-02-09 | 2010-02-09 | 1331, 1332, 1333, 1334, 1335, 1336, 1337, 1338, 1339 | 35d | 0d | Lüthi Rico F. | 4h | 4 | medium | (2) Normal |
| 1341 | 1.2.4.4.4.5.12 | Audit Baseline Implementation Process |  | 1d | 2010-02-10 | 2010-02-10 | 1340 | 35d | 0d | Scheidegger Ruedi [6.2%]; Polisano Riccardo [6.2%] | 1h |  | medium | (2) Normal |
| 1342 | 1.2.4.4.4.5.13 | Baseline created | milestone | 0d | 2010-02-10 | 2010-02-10 | 1341 | 35d |  |  |  |  | medium | (2) Normal |

| ID | WBS | Task | Type | Duration | Start | Finish | Predecessors | Total slack | Constraint | Resources | Work | Cost | Text23 | Text30 |
| --- | --- | --- | --- | --- | --- | --- | --- | --- | --- | --- | --- | --- | --- | --- |
| 1343 | 1.2.4.4.4.6 | **Creation of Baseline Major Realization Phase** |  | 3d | 2010-03-29 | 2010-03-31 |  | 0d |  |  | 35h | 10 | medium | (2) Normal |
| 1344 | 1.2.4.4.4.6.1 | Preparation fo Baseline |  | 0.5d | 2010-03-29 | 2010-03-29 |  | 0d | as late as possible | Lüthi Rico F. [50%] | 2h | 2 | medium | (2) Normal |
| 1345 | 1.2.4.4.4.6.2 | Create Baseline SharePoint |  | 1d | 2010-03-29 | 2010-03-30 | 1344 | 0d | as late as possible | Lüthi Rico F. [50%] | 4h | 4 | medium | (2) Normal |
| 1346 | 1.2.4.4.4.6.3 | Create Baseline WIKI |  | 1d | 2010-03-29 | 2010-03-30 | 1344 | 0d | as late as possible | Hermann René [37.5%] | 3h |  | medium | (2) Normal |
| 1347 | 1.2.4.4.4.6.4 | Create Baseline CVS |  | 1d | 2010-03-29 | 2010-03-30 | 1344 | 0d | as late as possible | Piol Domenico [37.5%] | 3h |  | medium | (2) Normal |
| 1348 | 1.2.4.4.4.6.5 | Create Baseline Subversion |  | 1d | 2010-03-29 | 2010-03-30 | 1344 | 0d | as late as possible | Bu Sigve [37.5%] | 3h |  | medium | (2) Normal |
| 1349 | 1.2.4.4.4.6.6 | Create Baseline SDSS |  | 1d | 2010-03-29 | 2010-03-30 | 1344 | 0d | as late as possible | Bu Sigve [37.5%] | 3h |  | medium | (2) Normal |
| 1350 | 1.2.4.4.4.6.7 | Create Baseline JIRA Requirements |  | 1d | 2010-03-29 | 2010-03-30 | 1344 | 0d | as late as possible | Trindler Markus [37.5%] | 3h |  | medium | (2) Normal |
| 1351 | 1.2.4.4.4.6.8 | Create Baseline JIRA Issues |  | 1d | 2010-03-29 | 2010-03-30 | 1344 | 0d | as late as possible | Oezgen Oya [37.5%] | 3h |  | medium | (2) Normal |
| 1352 | 1.2.4.4.4.6.9 | Create Baseline JIRA Defects |  | 1d | 2010-03-29 | 2010-03-30 | 1344 | 0d | as late as possible | Oezgen Oya [37.5%] | 3h |  | medium | (2) Normal |
| 1353 | 1.2.4.4.4.6.10 | Create Baseline Quality Center |  | 1d | 2010-03-29 | 2010-03-30 | 1344 | 0d | as late as possible | Oberndorfer Richard [37.5%] | 3h |  | medium | (2) Normal |
| 1354 | 1.2.4.4.4.6.11 | Update Configuration Management Plan & Configuration Item List & Baseline Record |  | 0.5d | 2010-03-30 | 2010-03-30 | 1345, 1346, 1347, 1348, 1349, 1350, 1351, 1352, 1353 | 0d | as late as possible | Lüthi Rico F. | 4h | 4 | medium | (2) Normal |
| 1355 | 1.2.4.4.4.6.12 | Audit Baseline Implementation Process |  | 1d | 2010-03-31 | 2010-03-31 | 1354 | 0d | as late as possible | Scheidegger Ruedi [6.2%]; Polisano Riccardo [6.2%] | 1h |  | medium | (2) Normal |
| 1356 | 1.2.4.4.4.6.13 | Baseline created | milestone | 0d | 2010-03-31 | 2010-03-31 | 1355 | 0d |  |  |  |  | medium | (2) Normal |
| 1357 | 1.2.4.5 | **Requirement Management** |  | 132d? | 2009-09-23 | 2010-03-29 |  | 1d |  |  | 123h |  | medium | (2) Normal |
| 1358 | 1.2.4.5.1 | **Reporting** |  | 129d? | 2009-09-28 | 2010-03-29 |  | 0d |  |  | 27h |  | medium | (2) Normal |
| 1359 | 1.2.4.5.1.1 | **Preparation Role Status Report** |  | 129d? | 2009-09-28 | 2010-03-29 |  | 0d |  |  | 27h |  | medium | (2) Normal |
| 1360 | 1.2.4.5.1.1.1 | Preparation Role Status Report W39 |  | 1d? | 2009-09-28 | 2009-09-28 |  | 0d | as late as possible | Trindler Markus [12.5%] | 1h |  | medium | (2) Normal |
| 1361 | 1.2.4.5.1.1.2 | Preparation Role Status Report W40 |  | 1d? | 2009-10-05 | 2009-10-05 |  | 0d | as late as possible | Trindler Markus [12.5%] | 1h |  | medium | (2) Normal |
| 1362 | 1.2.4.5.1.1.3 | Preparation Role Status Report W41 |  | 1d? | 2009-10-12 | 2009-10-12 |  | 0d | as late as possible | Trindler Markus [12.5%] | 1h |  | medium | (2) Normal |
| 1363 | 1.2.4.5.1.1.4 | Preparation Role Status Report W42 |  | 1d? | 2009-10-19 | 2009-10-19 |  | 0d | as late as possible | Trindler Markus [12.5%] | 1h |  | medium | (2) Normal |
| 1364 | 1.2.4.5.1.1.5 | Preparation Role Status Report W43 |  | 1d? | 2009-10-26 | 2009-10-26 |  | 0d | as late as possible | Trindler Markus [12.5%] | 1h |  | medium | (2) Normal |
| 1365 | 1.2.4.5.1.1.6 | Preparation Role Status Report W44 |  | 1d? | 2009-11-02 | 2009-11-02 |  | 0d | as late as possible | Trindler Markus [12.5%] | 1h |  | medium | (2) Normal |
| 1366 | 1.2.4.5.1.1.7 | Preparation Role Status Report W45 |  | 1d? | 2009-11-09 | 2009-11-09 |  | 0d | as late as possible | Trindler Markus [12.5%] | 1h |  | medium | (2) Normal |
| 1367 | 1.2.4.5.1.1.8 | Preparation Role Status Report W46 |  | 1d? | 2009-11-16 | 2009-11-16 |  | 0d | as late as possible | Trindler Markus [12.5%] | 1h |  | medium | (2) Normal |
| 1368 | 1.2.4.5.1.1.9 | Preparation Role Status Report W47 |  | 1d? | 2009-11-23 | 2009-11-23 |  | 0d | as late as possible | Trindler Markus [12.5%] | 1h |  | medium | (2) Normal |
| 1369 | 1.2.4.5.1.1.10 | Preparation Role Status Report W48 |  | 1d? | 2009-11-30 | 2009-11-30 |  | 0d | as late as possible | Trindler Markus [12.5%] | 1h |  | medium | (2) Normal |
| 1370 | 1.2.4.5.1.1.11 | Preparation Role Status Report W49 |  | 1d? | 2009-12-07 | 2009-12-07 |  | 0d | as late as possible | Trindler Markus [12.5%] | 1h |  | medium | (2) Normal |
| 1371 | 1.2.4.5.1.1.12 | Preparation Role Status Report W50 |  | 1d? | 2009-12-14 | 2009-12-14 |  | 0d | as late as possible | Trindler Markus [12.5%] | 1h |  | medium | (2) Normal |
| 1372 | 1.2.4.5.1.1.13 | Preparation Role Status Report W51 |  | 1d? | 2009-12-21 | 2009-12-21 |  | 0d | as late as possible | Trindler Markus [12.5%] | 1h |  | medium | (2) Normal |
| 1373 | 1.2.4.5.1.1.14 | Preparation Role Status Report W52 |  | 1d? | 2009-12-28 | 2009-12-28 |  | 0d | as late as possible | Trindler Markus [12.5%] | 1h |  | medium | (2) Normal |
| 1374 | 1.2.4.5.1.1.15 | Preparation Role Status Report W53 |  | 1d? | 2010-01-04 | 2010-01-04 |  | 0d | as late as possible | Trindler Markus [12.5%] | 1h |  | medium | (2) Normal |
| 1375 | 1.2.4.5.1.1.16 | Preparation Role Status Report W01 |  | 1d? | 2010-01-11 | 2010-01-11 |  | 0d | as late as possible | Trindler Markus [12.5%] | 1h |  | medium | (2) Normal |
| 1376 | 1.2.4.5.1.1.17 | Preparation Role Status Report W02 |  | 1d? | 2010-01-18 | 2010-01-18 |  | 0d | as late as possible | Trindler Markus [12.5%] | 1h |  | medium | (2) Normal |
| 1377 | 1.2.4.5.1.1.18 | Preparation Role Status Report W03 |  | 1d? | 2010-01-25 | 2010-01-25 |  | 0d | as late as possible | Trindler Markus [12.5%] | 1h |  | medium | (2) Normal |
| 1378 | 1.2.4.5.1.1.19 | Preparation Role Status Report W04 |  | 1d? | 2010-02-01 | 2010-02-01 |  | 0d | as late as possible | Trindler Markus [12.5%] | 1h |  | medium | (2) Normal |
| 1379 | 1.2.4.5.1.1.20 | Preparation Role Status Report W05 |  | 1d? | 2010-02-08 | 2010-02-08 |  | 0d | as late as possible | Trindler Markus [12.5%] | 1h |  | medium | (2) Normal |
| 1380 | 1.2.4.5.1.1.21 | Preparation Role Status Report W06 |  | 1d? | 2010-02-15 | 2010-02-15 |  | 0d | as late as possible | Trindler Markus [12.5%] | 1h |  | medium | (2) Normal |
| 1381 | 1.2.4.5.1.1.22 | Preparation Role Status Report W07 |  | 1d? | 2010-02-22 | 2010-02-22 |  | 0d | as late as possible | Trindler Markus [12.5%] | 1h |  | medium | (2) Normal |
| 1382 | 1.2.4.5.1.1.23 | Preparation Role Status Report W08 |  | 1d? | 2010-03-01 | 2010-03-01 |  | 0d | as late as possible | Trindler Markus [12.5%] | 1h |  | medium | (2) Normal |
| 1383 | 1.2.4.5.1.1.24 | Preparation Role Status Report W09 |  | 1d? | 2010-03-08 | 2010-03-08 |  | 0d | as late as possible | Trindler Markus [12.5%] | 1h |  | medium | (2) Normal |
| 1384 | 1.2.4.5.1.1.25 | Preparation Role Status Report W10 |  | 1d? | 2010-03-15 | 2010-03-15 |  | 0d | as late as possible | Trindler Markus [12.5%] | 1h |  | medium | (2) Normal |
| 1385 | 1.2.4.5.1.1.26 | Preparation Role Status Report W11 |  | 1d? | 2010-03-22 | 2010-03-22 |  | 0d | as late as possible | Trindler Markus [12.5%] | 1h |  | medium | (2) Normal |
| 1386 | 1.2.4.5.1.1.27 | Preparation Role Status Report W12 |  | 1d? | 2010-03-29 | 2010-03-29 |  | 0d | as late as possible | Trindler Markus [12.5%] | 1h |  | medium | (2) Normal |

| ID | WBS | Task | Duration | Start | Finish | Predecessors | Total slack | Free slack | Constraint | Resources | Work | Text23 | Text30 |
| --- | --- | --- | --- | --- | --- | --- | --- | --- | --- | --- | --- | --- | --- |
| 1387 | 1.2.4.5.2 | **Update JIRA** | 10d? | 2009-09-23 | 2009-10-06 |  | 119.88d |  |  |  | 80h | medium | (2) Normal |
| 1388 | 1.2.4.5.2.1 | Update Information in JIRA | 10d? | 2009-09-23 | 2009-10-06 |  | 119.88d | 5d |  | Trindler Markus | 80h | medium | (2) Normal |
| 1389 | 1.2.4.5.3 | **Phase preparation role** | 2d? | 2009-10-15 | 2009-10-19 |  | 114.88d |  |  |  | 16h | medium | (2) Normal |
| 1390 | 1.2.4.5.3.1 | Detail planning of the phase | 2d? | 2009-10-15 | 2009-10-19 | 1154 | 114.88d |  |  | Trindler Markus | 16h | medium | (2) Normal |
| 1391 | 1.2.4.6 | **Technical Pilot Support** | 130d? | 2009-09-28 | 2010-03-30 |  | 0d |  |  |  | 427h | medium | (2) Normal |
| 1392 | 1.2.4.6.1 | **Reporting** | 129d? | 2009-09-28 | 2010-03-29 |  | 0d |  |  |  | 27h | medium | (2) Normal |
| 1393 | 1.2.4.6.1.1 | **Preparation Role Status Report** | 129d? | 2009-09-28 | 2010-03-29 |  | 0d |  |  |  | 27h | medium | (2) Normal |
| 1394 | 1.2.4.6.1.1.1 | Preparation Role Status Report W39 | 1d? | 2009-09-28 | 2009-09-28 |  | 0d |  | as late as possible | Trindler Markus [12.5%] | 1h | medium | (2) Normal |
| 1395 | 1.2.4.6.1.1.2 | Preparation Role Status Report W40 | 1d? | 2009-10-05 | 2009-10-05 |  | 0d |  | as late as possible | Trindler Markus [12.5%] | 1h | medium | (2) Normal |
| 1396 | 1.2.4.6.1.1.3 | Preparation Role Status Report W41 | 1d? | 2009-10-12 | 2009-10-12 |  | 0d |  | as late as possible | Trindler Markus [12.5%] | 1h | medium | (2) Normal |
| 1397 | 1.2.4.6.1.1.4 | Preparation Role Status Report W42 | 1d? | 2009-10-19 | 2009-10-19 |  | 0d |  | as late as possible | Trindler Markus [12.5%] | 1h | medium | (2) Normal |
| 1398 | 1.2.4.6.1.1.5 | Preparation Role Status Report W43 | 1d? | 2009-10-26 | 2009-10-26 |  | 0d |  | as late as possible | Trindler Markus [12.5%] | 1h | medium | (2) Normal |
| 1399 | 1.2.4.6.1.1.6 | Preparation Role Status Report W44 | 1d? | 2009-11-02 | 2009-11-02 |  | 0d |  | as late as possible | Trindler Markus [12.5%] | 1h | medium | (2) Normal |
| 1400 | 1.2.4.6.1.1.7 | Preparation Role Status Report W45 | 1d? | 2009-11-09 | 2009-11-09 |  | 0d |  | as late as possible | Trindler Markus [12.5%] | 1h | medium | (2) Normal |
| 1401 | 1.2.4.6.1.1.8 | Preparation Role Status Report W46 | 1d? | 2009-11-16 | 2009-11-16 |  | 0d |  | as late as possible | Trindler Markus [12.5%] | 1h | medium | (2) Normal |
| 1402 | 1.2.4.6.1.1.9 | Preparation Role Status Report W47 | 1d? | 2009-11-23 | 2009-11-23 |  | 0d |  | as late as possible | Trindler Markus [12.5%] | 1h | medium | (2) Normal |
| 1403 | 1.2.4.6.1.1.10 | Preparation Role Status Report W48 | 1d? | 2009-11-30 | 2009-11-30 |  | 0d |  | as late as possible | Trindler Markus [12.5%] | 1h | medium | (2) Normal |
| 1404 | 1.2.4.6.1.1.11 | Preparation Role Status Report W49 | 1d? | 2009-12-07 | 2009-12-07 |  | 0d |  | as late as possible | Trindler Markus [12.5%] | 1h | medium | (2) Normal |
| 1405 | 1.2.4.6.1.1.12 | Preparation Role Status Report W50 | 1d? | 2009-12-14 | 2009-12-14 |  | 0d |  | as late as possible | Trindler Markus [12.5%] | 1h | medium | (2) Normal |
| 1406 | 1.2.4.6.1.1.13 | Preparation Role Status Report W51 | 1d? | 2009-12-21 | 2009-12-21 |  | 0d |  | as late as possible | Trindler Markus [12.5%] | 1h | medium | (2) Normal |
| 1407 | 1.2.4.6.1.1.14 | Preparation Role Status Report W52 | 1d? | 2009-12-28 | 2009-12-28 |  | 0d |  | as late as possible | Trindler Markus [12.5%] | 1h | medium | (2) Normal |
| 1408 | 1.2.4.6.1.1.15 | Preparation Role Status Report W53 | 1d? | 2010-01-04 | 2010-01-04 |  | 0d |  | as late as possible | Trindler Markus [12.5%] | 1h | medium | (2) Normal |
| 1409 | 1.2.4.6.1.1.16 | Preparation Role Status Report W01 | 1d? | 2010-01-11 | 2010-01-11 |  | 0d |  | as late as possible | Trindler Markus [12.5%] | 1h | medium | (2) Normal |
| 1410 | 1.2.4.6.1.1.17 | Preparation Role Status Report W02 | 1d? | 2010-01-18 | 2010-01-18 |  | 0d |  | as late as possible | Trindler Markus [12.5%] | 1h | medium | (2) Normal |
| 1411 | 1.2.4.6.1.1.18 | Preparation Role Status Report W03 | 1d? | 2010-01-25 | 2010-01-25 |  | 0d |  | as late as possible | Trindler Markus [12.5%] | 1h | medium | (2) Normal |
| 1412 | 1.2.4.6.1.1.19 | Preparation Role Status Report W04 | 1d? | 2010-02-01 | 2010-02-01 |  | 0d |  | as late as possible | Trindler Markus [12.5%] | 1h | medium | (2) Normal |
| 1413 | 1.2.4.6.1.1.20 | Preparation Role Status Report W05 | 1d? | 2010-02-08 | 2010-02-08 |  | 0d |  | as late as possible | Trindler Markus [12.5%] | 1h | medium | (2) Normal |
| 1414 | 1.2.4.6.1.1.21 | Preparation Role Status Report W06 | 1d? | 2010-02-15 | 2010-02-15 |  | 0d |  | as late as possible | Trindler Markus [12.5%] | 1h | medium | (2) Normal |
| 1415 | 1.2.4.6.1.1.22 | Preparation Role Status Report W07 | 1d? | 2010-02-22 | 2010-02-22 |  | 0d |  | as late as possible | Trindler Markus [12.5%] | 1h | medium | (2) Normal |
| 1416 | 1.2.4.6.1.1.23 | Preparation Role Status Report W08 | 1d? | 2010-03-01 | 2010-03-01 |  | 0d |  | as late as possible | Trindler Markus [12.5%] | 1h | medium | (2) Normal |
| 1417 | 1.2.4.6.1.1.24 | Preparation Role Status Report W09 | 1d? | 2010-03-08 | 2010-03-08 |  | 0d |  | as late as possible | Trindler Markus [12.5%] | 1h | medium | (2) Normal |
| 1418 | 1.2.4.6.1.1.25 | Preparation Role Status Report W10 | 1d? | 2010-03-15 | 2010-03-15 |  | 0d |  | as late as possible | Trindler Markus [12.5%] | 1h | medium | (2) Normal |
| 1419 | 1.2.4.6.1.1.26 | Preparation Role Status Report W11 | 1d? | 2010-03-22 | 2010-03-22 |  | 0d |  | as late as possible | Trindler Markus [12.5%] | 1h | medium | (2) Normal |
| 1420 | 1.2.4.6.1.1.27 | Preparation Role Status Report W12 | 1d? | 2010-03-29 | 2010-03-29 |  | 0d |  | as late as possible | Trindler Markus [12.5%] | 1h | medium | (2) Normal |

| ID | WBS | Task | Duration | Start | Finish | Predecessors | Total slack | Constraint | Resources | Work | Cost | Text23 | Text30 |
| --- | --- | --- | --- | --- | --- | --- | --- | --- | --- | --- | --- | --- | --- |
| 1421 | 1.2.4.6.2 | **Phase preparation role** | 120d? | 2009-10-12 | 2010-03-30 |  | 0d |  |  | 400h |  | medium | (2) Normal |
| 1422 | 1.2.4.6.2.1 | Detail planning of the phase | 2d? | 2009-10-15 | 2009-10-19 | 1154 | 114.88d |  | Trindler Markus | 16h |  | medium | (2) Normal |
| 1423 | 1.2.4.6.2.2 | Consult Pilot Application | 120d | 2009-10-12 | 2010-03-30 |  | 0d | as late as possible | Trindler Markus [40%] | 384h |  | medium | (2) Normal |
| 1424 | 1.2.4.7 | **Quality Assurance** | 134d? | 2009-09-23 | 2010-03-31 |  | 0d |  |  | 346h | 3 | medium | (2) Normal |
| 1425 | 1.2.4.7.1 | **Reporting** | 129d? | 2009-09-28 | 2010-03-29 |  | 0d |  |  | 27h |  | medium | (2) Normal |
| 1426 | 1.2.4.7.1.1 | **Preparation Role Status Report** | 129d? | 2009-09-28 | 2010-03-29 |  | 0d |  |  | 27h |  | medium | (2) Normal |
| 1427 | 1.2.4.7.1.1.1 | Preparation Role Status Report W39 | 1d? | 2009-09-28 | 2009-09-28 |  | 0d | as late as possible | Polisano Riccardo [12.5%] | 1h |  | medium | (2) Normal |
| 1428 | 1.2.4.7.1.1.2 | Preparation Role Status Report W40 | 1d? | 2009-10-05 | 2009-10-05 |  | 0d | as late as possible | Polisano Riccardo [12.5%] | 1h |  | medium | (2) Normal |
| 1429 | 1.2.4.7.1.1.3 | Preparation Role Status Report W41 | 1d? | 2009-10-12 | 2009-10-12 |  | 0d | as late as possible | Polisano Riccardo [12.5%] | 1h |  | medium | (2) Normal |
| 1430 | 1.2.4.7.1.1.4 | Preparation Role Status Report W42 | 1d? | 2009-10-19 | 2009-10-19 |  | 0d | as late as possible | Polisano Riccardo [12.5%] | 1h |  | medium | (2) Normal |
| 1431 | 1.2.4.7.1.1.5 | Preparation Role Status Report W43 | 1d? | 2009-10-26 | 2009-10-26 |  | 0d | as late as possible | Polisano Riccardo [12.5%] | 1h |  | medium | (2) Normal |
| 1432 | 1.2.4.7.1.1.6 | Preparation Role Status Report W44 | 1d? | 2009-11-02 | 2009-11-02 |  | 0d | as late as possible | Polisano Riccardo [12.5%] | 1h |  | medium | (2) Normal |
| 1433 | 1.2.4.7.1.1.7 | Preparation Role Status Report W45 | 1d? | 2009-11-09 | 2009-11-09 |  | 0d | as late as possible | Polisano Riccardo [12.5%] | 1h |  | medium | (2) Normal |
| 1434 | 1.2.4.7.1.1.8 | Preparation Role Status Report W46 | 1d? | 2009-11-16 | 2009-11-16 |  | 0d | as late as possible | Polisano Riccardo [12.5%] | 1h |  | medium | (2) Normal |
| 1435 | 1.2.4.7.1.1.9 | Preparation Role Status Report W47 | 1d? | 2009-11-23 | 2009-11-23 |  | 0d | as late as possible | Polisano Riccardo [12.5%] | 1h |  | medium | (2) Normal |
| 1436 | 1.2.4.7.1.1.10 | Preparation Role Status Report W48 | 1d? | 2009-11-30 | 2009-11-30 |  | 0d | as late as possible | Polisano Riccardo [12.5%] | 1h |  | medium | (2) Normal |
| 1437 | 1.2.4.7.1.1.11 | Preparation Role Status Report W49 | 1d? | 2009-12-07 | 2009-12-07 |  | 0d | as late as possible | Polisano Riccardo [12.5%] | 1h |  | medium | (2) Normal |
| 1438 | 1.2.4.7.1.1.12 | Preparation Role Status Report W50 | 1d? | 2009-12-14 | 2009-12-14 |  | 0d | as late as possible | Polisano Riccardo [12.5%] | 1h |  | medium | (2) Normal |
| 1439 | 1.2.4.7.1.1.13 | Preparation Role Status Report W51 | 1d? | 2009-12-21 | 2009-12-21 |  | 0d | as late as possible | Polisano Riccardo [12.5%] | 1h |  | medium | (2) Normal |
| 1440 | 1.2.4.7.1.1.14 | Preparation Role Status Report W52 | 1d? | 2009-12-28 | 2009-12-28 |  | 0d | as late as possible | Polisano Riccardo [12.5%] | 1h |  | medium | (2) Normal |
| 1441 | 1.2.4.7.1.1.15 | Preparation Role Status Report W53 | 1d? | 2010-01-04 | 2010-01-04 |  | 0d | as late as possible | Polisano Riccardo [12.5%] | 1h |  | medium | (2) Normal |
| 1442 | 1.2.4.7.1.1.16 | Preparation Role Status Report W01 | 1d? | 2010-01-11 | 2010-01-11 |  | 0d | as late as possible | Polisano Riccardo [12.5%] | 1h |  | medium | (2) Normal |
| 1443 | 1.2.4.7.1.1.17 | Preparation Role Status Report W02 | 1d? | 2010-01-18 | 2010-01-18 |  | 0d | as late as possible | Polisano Riccardo [12.5%] | 1h |  | medium | (2) Normal |
| 1444 | 1.2.4.7.1.1.18 | Preparation Role Status Report W03 | 1d? | 2010-01-25 | 2010-01-25 |  | 0d | as late as possible | Polisano Riccardo [12.5%] | 1h |  | medium | (2) Normal |
| 1445 | 1.2.4.7.1.1.19 | Preparation Role Status Report W04 | 1d? | 2010-02-01 | 2010-02-01 |  | 0d | as late as possible | Polisano Riccardo [12.5%] | 1h |  | medium | (2) Normal |
| 1446 | 1.2.4.7.1.1.20 | Preparation Role Status Report W05 | 1d? | 2010-02-08 | 2010-02-08 |  | 0d | as late as possible | Polisano Riccardo [12.5%] | 1h |  | medium | (2) Normal |
| 1447 | 1.2.4.7.1.1.21 | Preparation Role Status Report W06 | 1d? | 2010-02-15 | 2010-02-15 |  | 0d | as late as possible | Polisano Riccardo [12.5%] | 1h |  | medium | (2) Normal |
| 1448 | 1.2.4.7.1.1.22 | Preparation Role Status Report W07 | 1d? | 2010-02-22 | 2010-02-22 |  | 0d | as late as possible | Polisano Riccardo [12.5%] | 1h |  | medium | (2) Normal |
| 1449 | 1.2.4.7.1.1.23 | Preparation Role Status Report W08 | 1d? | 2010-03-01 | 2010-03-01 |  | 0d | as late as possible | Polisano Riccardo [12.5%] | 1h |  | medium | (2) Normal |
| 1450 | 1.2.4.7.1.1.24 | Preparation Role Status Report W09 | 1d? | 2010-03-08 | 2010-03-08 |  | 0d | as late as possible | Polisano Riccardo [12.5%] | 1h |  | medium | (2) Normal |
| 1451 | 1.2.4.7.1.1.25 | Preparation Role Status Report W10 | 1d? | 2010-03-15 | 2010-03-15 |  | 0d | as late as possible | Polisano Riccardo [12.5%] | 1h |  | medium | (2) Normal |
| 1452 | 1.2.4.7.1.1.26 | Preparation Role Status Report W11 | 1d? | 2010-03-22 | 2010-03-22 |  | 0d | as late as possible | Polisano Riccardo [12.5%] | 1h |  | medium | (2) Normal |
| 1453 | 1.2.4.7.1.1.27 | Preparation Role Status Report W12 | 1d? | 2010-03-29 | 2010-03-29 |  | 0d | as late as possible | Polisano Riccardo [12.5%] | 1h |  | medium | (2) Normal |

| ID | WBS | Task | Duration | Start | Finish | Predecessors | Total slack | Free slack | Resources | Work | Cost | Text23 | Text30 | Text1 |
| --- | --- | --- | --- | --- | --- | --- | --- | --- | --- | --- | --- | --- | --- | --- |
| 1454 | 1.2.4.7.2 | **Phase preparation role** | 2d? | 2009-10-15 | 2009-10-19 |  | 114.88d |  |  | 16h |  | medium | (2) Normal |  |
| 1455 | 1.2.4.7.2.1 | Detail planning of the phase | 2d? | 2009-10-15 | 2009-10-19 | 1154 | 114.88d |  | Polisano Riccardo | 16h |  | medium | (2) Normal |  |
| 1456 | 1.2.4.7.3 | **Reuse Lessons Learned Workshop** | 6.25d? | 2009-09-23 | 2009-10-01 |  | 127.75d |  |  | 32h | 3 | medium | (2) Normal |  |
| 1457 | 1.2.4.7.3.1 | Planning Meeting for Reuse Lessons Learned Workshop | 1h | 2009-09-23 | 2009-09-23 |  | 127.75d | 0d | Polisano Riccardo; Scheidegger Ruedi | 2h |  | medium | (2) Normal |  |
| 1458 | 1.2.4.7.3.2 | Preparation of Workshop | 0.5d? | 2009-09-23 | 2009-09-23 | 1457 | 127.75d | 0d | Polisano Riccardo | 4h |  | medium | (2) Normal |  |
| 1459 | 1.2.4.7.3.3 | Hold Workshop | 0.38d? | 2009-09-30 | 2009-09-30 | 1458FS+5d | 127.75d | 0d | Polisano Riccardo; Scheidegger Ruedi; Lüthi Rico F.; Trindler Markus; Kradolfer Markus; Lackmann Ralph; Oberndorfer Richard; Telgheider Jörg | 24h | 3 | medium | (2) Normal |  |
| 1460 | 1.2.4.7.3.4 | Define activity list | 0.25d? | 2009-10-01 | 2009-10-01 | 1459 | 127.75d |  | Polisano Riccardo | 2h |  | medium | (2) Normal |  |
| 1461 | 1.2.4.7.4 | Evaluate Project Process & Record Findings | 2d? | 2009-09-23 | 2009-09-24 |  | 132d |  | Polisano Riccardo | 16h |  | medium | (2) Normal |  |
| 1462 | 1.2.4.7.5 | **Supplier agreement measurement** | 85d? | 2009-09-25 | 2010-01-25 |  | 47d |  |  | 30h |  | medium | (2) Normal |  |
| 1463 | 1.2.4.7.5.1 | **Measurement PG1** | 2d? | 2009-09-25 | 2009-09-28 | 30 | 130d |  |  | 6h |  | medium | (2) Normal |  |
| 1464 | 1.2.4.7.5.1.1 | Collect Information | 1d? | 2009-09-25 | 2009-09-25 |  | 130d | 0d | Polisano Riccardo [50%] | 4h |  | medium | (2) Normal |  |
| 1465 | 1.2.4.7.5.1.2 | Produce Report | 1d? | 2009-09-28 | 2009-09-28 | 1464 | 130d |  | Polisano Riccardo [25%] | 2h |  | medium | (2) Normal |  |
| 1466 | 1.2.4.7.5.2 | **Measurement PG2** | 2d? | 2009-10-23 | 2009-10-26 | 47 | 110d |  |  | 6h |  | medium | (2) Normal |  |
| 1467 | 1.2.4.7.5.2.1 | Collect Information | 1d? | 2009-10-23 | 2009-10-23 |  | 110d | 0d | Polisano Riccardo [50%] | 4h |  | medium | (2) Normal |  |
| 1468 | 1.2.4.7.5.2.2 | Produce Report | 1d? | 2009-10-26 | 2009-10-26 | 1467 | 110d |  | Polisano Riccardo [25%] | 2h |  | medium | (2) Normal |  |
| 1469 | 1.2.4.7.5.3 | **Measurement PG3** | 2d? | 2009-11-20 | 2009-11-23 | 50 | 90d |  |  | 6h |  | medium | (2) Normal |  |
| 1470 | 1.2.4.7.5.3.1 | Collect Information | 1d? | 2009-11-20 | 2009-11-20 |  | 90d | 0d | Polisano Riccardo [50%] | 4h |  | medium | (2) Normal |  |
| 1471 | 1.2.4.7.5.3.2 | Produce Report | 1d? | 2009-11-23 | 2009-11-23 | 1470 | 90d |  | Polisano Riccardo [25%] | 2h |  | medium | (2) Normal |  |
| 1472 | 1.2.4.7.5.4 | **Measurement RC1** | 2d? | 2009-12-18 | 2009-12-21 | 53 | 70d |  |  | 6h |  | medium | (2) Normal |  |
| 1473 | 1.2.4.7.5.4.1 | Collect Information | 1d? | 2009-12-18 | 2009-12-18 |  | 70d | 0d | Polisano Riccardo [50%] | 4h |  | medium | (2) Normal |  |
| 1474 | 1.2.4.7.5.4.2 | Produce Report | 1d? | 2009-12-21 | 2009-12-21 | 1473 | 70d |  | Polisano Riccardo [25%] | 2h |  | medium | (2) Normal |  |
| 1475 | 1.2.4.7.5.5 | **Measurement RC2** | 2d? | 2010-01-22 | 2010-01-25 | 56 | 47d |  |  | 6h |  | medium | (2) Normal | Measurement PG1 |
| 1476 | 1.2.4.7.5.5.1 | Collect Information | 1d? | 2010-01-22 | 2010-01-22 |  | 47d | 0d | Polisano Riccardo [50%] | 4h |  | medium | (2) Normal |  |
| 1477 | 1.2.4.7.5.5.2 | Produce Report | 1d? | 2010-01-25 | 2010-01-25 | 1476 | 47d |  | Polisano Riccardo [25%] | 2h |  | medium | (2) Normal |  |

| ID | WBS | Task | Duration | Start | Finish | Predecessors | Total slack | Constraint | Resources | Work | Text20 | Text23 | Text30 |
| --- | --- | --- | --- | --- | --- | --- | --- | --- | --- | --- | --- | --- | --- |
| 1478 | 1.2.4.7.6 | **Lesson Learned Workshops** | 37.56d? | 2010-02-08 | 2010-03-31 |  | 0d |  |  | 225h |  |  |  |
| 1479 | 1.2.4.7.6.1 | Planning Meeting for Lessons Learned Workshops | 0.06d? | 2010-02-08 | 2010-02-08 |  | 0d | as late as possible | Scheidegger Ruedi; Polisano Riccardo | 1h |  |  |  |
| 1480 | 1.2.4.7.6.2 | Preparation and Invitation of Lessons Learned Workshops | 1d? | 2010-02-08 | 2010-02-09 | 1479 | 0d | as late as possible | Polisano Riccardo | 8h | Polisano Riccardo (KIRO 11) |  |  |
| 1481 | 1.2.4.7.6.3 | **Workshop 1** | 9.5d? | 2010-02-19 | 2010-03-04 | 1480FS+8d | 0d |  |  | 72h |  |  |  |
| 1482 | 1.2.4.7.6.3.1 | Hold Lessens Learned Protocol | 4h | 2010-02-19 | 2010-02-19 |  | 0d |  | Participans [800%]; Scheidegger Ruedi; Polisano Riccardo | 40h |  |  |  |
| 1483 | 1.2.4.7.6.3.2 | Create Lessons Learned Protocol | 1d? | 2010-02-22 | 2010-02-22 | 1482 | 0d |  | Polisano Riccardo | 8h | Polisano Riccardo (KIRO 11) |  |  |
| 1484 | 1.2.4.7.6.3.3 | Send Lessons Learned Protocol for Review | 1d? | 2010-02-23 | 2010-02-23 | 1483 | 0d |  | Polisano Riccardo | 8h | Polisano Riccardo (KIRO 11) |  |  |
| 1485 | 1.2.4.7.6.3.4 | Update Lessons Learned Protocol | 1d? | 2010-03-03 | 2010-03-03 | 1484FS+5d | 0d |  | Polisano Riccardo | 8h | Polisano Riccardo (KIRO 11) |  |  |
| 1486 | 1.2.4.7.6.3.5 | Save Lessons Learned Protocoll on Server | 1d? | 2010-03-04 | 2010-03-04 | 1485 | 0d |  | Polisano Riccardo | 8h | Polisano Riccardo (KIRO 11) |  |  |
| 1487 | 1.2.4.7.6.4 | **Workshop 2** | 9.5d? | 2010-03-05 | 2010-03-18 | 1481 | 0d |  |  | 72h |  |  |  |
| 1488 | 1.2.4.7.6.4.1 | Hold Lessons Learned Workshop | 4h | 2010-03-05 | 2010-03-05 |  | 0d |  | Participans [800%]; Scheidegger Ruedi; Polisano Riccardo | 40h |  |  |  |
| 1489 | 1.2.4.7.6.4.2 | Create Lessons Learned Protocol | 1d? | 2010-03-05 | 2010-03-08 | 1488 | 0d |  | Polisano Riccardo | 8h | Polisano Riccardo (KIRO 11) |  |  |
| 1490 | 1.2.4.7.6.4.3 | Send Lessons Learned Protocoll for Review | 1d? | 2010-03-08 | 2010-03-09 | 1489 | 0d |  | Polisano Riccardo | 8h | Polisano Riccardo (KIRO 11) |  |  |
| 1491 | 1.2.4.7.6.4.4 | Update Lessons Learned Protocol | 1d? | 2010-03-16 | 2010-03-17 | 1490FS+5d | 0d |  | Polisano Riccardo | 8h | Polisano Riccardo (KIRO 11) |  |  |
| 1492 | 1.2.4.7.6.4.5 | Save Lessons Learned Protocoll on Server | 1d? | 2010-03-17 | 2010-03-18 | 1491 | 0d |  | Polisano Riccardo | 8h | Polisano Riccardo (KIRO 11) |  |  |
| 1493 | 1.2.4.7.6.5 | **Workshop 3** | 9.5d? | 2010-03-18 | 2010-03-31 | 1487 | 0d |  |  | 72h |  |  |  |
| 1494 | 1.2.4.7.6.5.1 | Hold Lessons Learned Workshop | 4h | 2010-03-18 | 2010-03-18 |  | 0d |  | Participans [800%]; Scheidegger Ruedi; Polisano Riccardo | 40h |  |  |  |
| 1495 | 1.2.4.7.6.5.2 | Create Lessons Learned Protocol | 1d? | 2010-03-19 | 2010-03-19 | 1494 | 0d |  | Polisano Riccardo | 8h | Polisano Riccardo (KIRO 11) |  |  |
| 1496 | 1.2.4.7.6.5.3 | Send Lessons Learned Protocoll for Review | 1d? | 2010-03-22 | 2010-03-22 | 1495 | 0d |  | Polisano Riccardo | 8h | Polisano Riccardo (KIRO 11) |  |  |
| 1497 | 1.2.4.7.6.5.4 | Update Lessons Learned Protocol | 1d? | 2010-03-30 | 2010-03-30 | 1496FS+5d | 0d |  | Polisano Riccardo | 8h | Polisano Riccardo (KIRO 11) |  |  |
| 1498 | 1.2.4.7.6.5.5 | Save Lessons Learned Protocol on Server | 1d? | 2010-03-31 | 2010-03-31 | 1497 | 0d |  | Polisano Riccardo | 8h | Polisano Riccardo (KIRO 11) |  |  |
| 1499 | 1.2.4.8 | **Platform Design** | 131d? | 2009-09-28 | 2010-03-31 |  | 0d |  |  | 1243h |  | medium | (2) Normal |
| 1500 | 1.2.4.8.1 | **Reporting** | 129d? | 2009-09-28 | 2010-03-29 |  | 0d |  |  | 27h |  | medium | (2) Normal |
| 1501 | 1.2.4.8.1.1 | **Preparation Role Status Report** | 129d? | 2009-09-28 | 2010-03-29 |  | 0d |  |  | 27h |  | medium | (2) Normal |
| 1502 | 1.2.4.8.1.1.1 | Preparation Role Status Report W39 | 1d? | 2009-09-28 | 2009-09-28 |  | 0d | as late as possible | Kradolfer Markus [12.5%] | 1h |  | medium | (2) Normal |
| 1503 | 1.2.4.8.1.1.2 | Preparation Role Status Report W40 | 1d? | 2009-10-05 | 2009-10-05 |  | 0d | as late as possible | Kradolfer Markus [12.5%] | 1h |  | medium | (2) Normal |
| 1504 | 1.2.4.8.1.1.3 | Preparation Role Status Report W41 | 1d? | 2009-10-12 | 2009-10-12 |  | 0d | as late as possible | Kradolfer Markus [12.5%] | 1h |  | medium | (2) Normal |
| 1505 | 1.2.4.8.1.1.4 | Preparation Role Status Report W42 | 1d? | 2009-10-19 | 2009-10-19 |  | 0d | as late as possible | Kradolfer Markus [12.5%] | 1h |  | medium | (2) Normal |
| 1506 | 1.2.4.8.1.1.5 | Preparation Role Status Report W43 | 1d? | 2009-10-26 | 2009-10-26 |  | 0d | as late as possible | Kradolfer Markus [12.5%] | 1h |  | medium | (2) Normal |
| 1507 | 1.2.4.8.1.1.6 | Preparation Role Status Report W44 | 1d? | 2009-11-02 | 2009-11-02 |  | 0d | as late as possible | Kradolfer Markus [12.5%] | 1h |  | medium | (2) Normal |
| 1508 | 1.2.4.8.1.1.7 | Preparation Role Status Report W45 | 1d? | 2009-11-09 | 2009-11-09 |  | 0d | as late as possible | Kradolfer Markus [12.5%] | 1h |  | medium | (2) Normal |
| 1509 | 1.2.4.8.1.1.8 | Preparation Role Status Report W46 | 1d? | 2009-11-16 | 2009-11-16 |  | 0d | as late as possible | Kradolfer Markus [12.5%] | 1h |  | medium | (2) Normal |
| 1510 | 1.2.4.8.1.1.9 | Preparation Role Status Report W47 | 1d? | 2009-11-23 | 2009-11-23 |  | 0d | as late as possible | Kradolfer Markus [12.5%] | 1h |  | medium | (2) Normal |
| 1511 | 1.2.4.8.1.1.10 | Preparation Role Status Report W48 | 1d? | 2009-11-30 | 2009-11-30 |  | 0d | as late as possible | Kradolfer Markus [12.5%] | 1h |  | medium | (2) Normal |
| 1512 | 1.2.4.8.1.1.11 | Preparation Role Status Report W49 | 1d? | 2009-12-07 | 2009-12-07 |  | 0d | as late as possible | Kradolfer Markus [12.5%] | 1h |  | medium | (2) Normal |
| 1513 | 1.2.4.8.1.1.12 | Preparation Role Status Report W50 | 1d? | 2009-12-14 | 2009-12-14 |  | 0d | as late as possible | Kradolfer Markus [12.5%] | 1h |  | medium | (2) Normal |
| 1514 | 1.2.4.8.1.1.13 | Preparation Role Status Report W51 | 1d? | 2009-12-21 | 2009-12-21 |  | 0d | as late as possible | Kradolfer Markus [12.5%] | 1h |  | medium | (2) Normal |
| 1515 | 1.2.4.8.1.1.14 | Preparation Role Status Report W52 | 1d? | 2009-12-28 | 2009-12-28 |  | 0d | as late as possible | Kradolfer Markus [12.5%] | 1h |  | medium | (2) Normal |
| 1516 | 1.2.4.8.1.1.15 | Preparation Role Status Report W53 | 1d? | 2010-01-04 | 2010-01-04 |  | 0d | as late as possible | Kradolfer Markus [12.5%] | 1h |  | medium | (2) Normal |
| 1517 | 1.2.4.8.1.1.16 | Preparation Role Status Report W01 | 1d? | 2010-01-11 | 2010-01-11 |  | 0d | as late as possible | Kradolfer Markus [12.5%] | 1h |  | medium | (2) Normal |
| 1518 | 1.2.4.8.1.1.17 | Preparation Role Status Report W02 | 1d? | 2010-01-18 | 2010-01-18 |  | 0d | as late as possible | Kradolfer Markus [12.5%] | 1h |  | medium | (2) Normal |
| 1519 | 1.2.4.8.1.1.18 | Preparation Role Status Report W03 | 1d? | 2010-01-25 | 2010-01-25 |  | 0d | as late as possible | Kradolfer Markus [12.5%] | 1h |  | medium | (2) Normal |
| 1520 | 1.2.4.8.1.1.19 | Preparation Role Status Report W04 | 1d? | 2010-02-01 | 2010-02-01 |  | 0d | as late as possible | Kradolfer Markus [12.5%] | 1h |  | medium | (2) Normal |
| 1521 | 1.2.4.8.1.1.20 | Preparation Role Status Report W05 | 1d? | 2010-02-08 | 2010-02-08 |  | 0d | as late as possible | Kradolfer Markus [12.5%] | 1h |  | medium | (2) Normal |
| 1522 | 1.2.4.8.1.1.21 | Preparation Role Status Report W06 | 1d? | 2010-02-15 | 2010-02-15 |  | 0d | as late as possible | Kradolfer Markus [12.5%] | 1h |  | medium | (2) Normal |
| 1523 | 1.2.4.8.1.1.22 | Preparation Role Status Report W07 | 1d? | 2010-02-22 | 2010-02-22 |  | 0d | as late as possible | Kradolfer Markus [12.5%] | 1h |  | medium | (2) Normal |
| 1524 | 1.2.4.8.1.1.23 | Preparation Role Status Report W08 | 1d? | 2010-03-01 | 2010-03-01 |  | 0d | as late as possible | Kradolfer Markus [12.5%] | 1h |  | medium | (2) Normal |
| 1525 | 1.2.4.8.1.1.24 | Preparation Role Status Report W09 | 1d? | 2010-03-08 | 2010-03-08 |  | 0d | as late as possible | Kradolfer Markus [12.5%] | 1h |  | medium | (2) Normal |
| 1526 | 1.2.4.8.1.1.25 | Preparation Role Status Report W10 | 1d? | 2010-03-15 | 2010-03-15 |  | 0d | as late as possible | Kradolfer Markus [12.5%] | 1h |  | medium | (2) Normal |
| 1527 | 1.2.4.8.1.1.26 | Preparation Role Status Report W11 | 1d? | 2010-03-22 | 2010-03-22 |  | 0d | as late as possible | Kradolfer Markus [12.5%] | 1h |  | medium | (2) Normal |
| 1528 | 1.2.4.8.1.1.27 | Preparation Role Status Report W12 | 1d? | 2010-03-29 | 2010-03-29 |  | 0d | as late as possible | Kradolfer Markus [12.5%] | 1h |  | medium | (2) Normal |

| ID | WBS | Task | Duration | Start | Finish | Predecessors | Total slack | Constraint | Resources | Work | Text23 | Text30 | Text28 |
| --- | --- | --- | --- | --- | --- | --- | --- | --- | --- | --- | --- | --- | --- |
| 1529 | 1.2.4.8.2 | **Phase preparation stream** | 2d? | 2009-10-15 | 2009-10-19 |  | 114.88d |  |  | 16h | medium | (2) Normal |  |
| 1530 | 1.2.4.8.2.1 | Detail planning of the phase | 2d? | 2009-10-15 | 2009-10-19 | 1154 | 114.88d |  | Kradolfer Markus | 16h | medium | (2) Normal |  |
| 1531 | 1.2.4.8.3 | **Concepts** | 123d | 2009-10-08 | 2010-03-31 |  | 0d |  |  | 1200h | medium | (2) Normal |  |
| 1532 | 1.2.4.8.3.1 | Scheduler / Timer needed on JAP Platform | 123d | 2009-10-08 | 2010-03-31 |  | 0d | as late as possible | Trindler Markus [6.1%] | 60h | medium | (2) Normal | JAPREQM-1787 |
| 1533 | 1.2.4.8.3.2 | Concept for personalized Content Management | 123d | 2009-10-08 | 2010-03-31 |  | 0d | as late as possible | Neumann Gabriele [6.1%] | 60h | medium | (2) Normal | JAPREQM-1886 |
| 1534 | 1.2.4.8.3.3 | CoreContext propagation with MQ Messages | 123d | 2009-10-08 | 2010-03-31 |  | 0d | as late as possible | Bennek Robert [6.1%] | 60h | medium | (2) Normal | JAPREQM-1897 |
| 1535 | 1.2.4.8.3.4 | Portal DB - Concept for read-write scenario | 123d | 2009-10-08 | 2010-03-31 |  | 0d | as late as possible | Neumann Gabriele [6.1%] | 60h | medium | (2) Normal | JAPREQM-1958 |
| 1536 | 1.2.4.8.3.5 | Enhance the BCP Concept to include the TRX application and platform | 123d | 2009-10-08 | 2010-03-31 |  | 0d | as late as possible | Schreier Balz [6.1%] | 60h | medium | (2) Normal | JAPREQM-2189 |
| 1537 | 1.2.4.8.3.6 | Develop a monitoring strategy for JAP (including TRX) and implement it as part of JAPAR6 | 123d | 2009-10-08 | 2010-03-31 |  | 0d | as late as possible | Trindler Markus [6.1%] | 60h | medium | (2) Normal | JAPREQM-2191 |
| 1538 | 1.2.4.8.3.7 | Update Sec Design - Change Cipher Suite for Oracle Authentication | 123d | 2009-10-08 | 2010-03-31 |  | 0d | as late as possible | Trindler Markus [6.1%] | 60h | medium | (2) Normal | JAPREQM-2244 |
| 1539 | 1.2.4.8.3.8 | Portal integration into SOA environment - Update SOA Bpl. topic and prepare for US POC results | 123d | 2009-10-08 | 2010-03-31 |  | 0d | as late as possible | Trindler Markus [6.1%] | 60h | medium | (2) Normal | JAPREQM-2278 |
| 1540 | 1.2.4.8.3.9 | Portal Security Enhancement - Centralized authorization control for consumer | 123d | 2009-10-08 | 2010-03-31 |  | 0d | as late as possible | Neumann Gabriele [6.1%] | 60h | medium | (2) Normal | JAPREQM-2279 |
| 1541 | 1.2.4.8.3.10 | Hosting of Intranet (my.csintra.net) | 123d | 2009-10-08 | 2010-03-31 |  | 0d | as late as possible | Neumann Gabriele [6.1%] | 60h | medium | (2) Normal | JAPREQM-2281 |
| 1542 | 1.2.4.8.3.11 | Complete the current TRX (NZV + O4J) security concept | 123d | 2009-10-08 | 2010-03-31 |  | 0d | as late as possible | Trindler Markus [6.1%] | 60h | medium | (2) Normal | JAPREQM-2286 |
| 1543 | 1.2.4.8.3.12 | eWorkplace - Clustering of Portal Servers | 123d | 2009-10-08 | 2010-03-31 |  | 0d | as late as possible | Neumann Gabriele [6.1%] | 60h | medium | (2) Normal | JAPREQM-2288 |
| 1544 | 1.2.4.8.3.13 | eWorkplace - Portal Configuration and data staging | 123d | 2009-10-08 | 2010-03-31 |  | 0d | as late as possible | Neumann Gabriele [6.1%] | 60h | medium | (2) Normal | JAPREQM-2289 |
| 1545 | 1.2.4.8.3.14 | eWorkplace - Fast time-to-market administration | 123d | 2009-10-08 | 2010-03-31 |  | 0d | as late as possible | Neumann Gabriele [6.1%] | 60h | medium | (2) Normal | JAPREQM-2292 |
| 1546 | 1.2.4.8.3.15 | Update Sec Design - read-write scenario Portal DB | 123d | 2009-10-08 | 2010-03-31 |  | 0d | as late as possible | Trindler Markus [6.1%] | 60h | medium | (2) Normal | JAPREQM-2294 |
| 1547 | 1.2.4.8.3.16 | eWorkplace - User Customization | 123d | 2009-10-08 | 2010-03-31 |  | 0d | as late as possible | Neumann Gabriele [6.1%] | 60h | medium | (2) Normal | JAPREQM-2304 |
| 1548 | 1.2.4.8.3.17 | Integrate the WFI Security Concept into the JAP Security concept | 123d | 2009-10-08 | 2010-03-31 |  | 0d | as late as possible | Trindler Markus [6.1%] | 60h | medium | (2) Normal | JAPREQM-2308 |
| 1549 | 1.2.4.8.3.18 | Create a concept describing the use of the PKI Based Authentication for DB for the JAP plattform | 123d | 2009-10-08 | 2010-03-31 |  | 0d | as late as possible | Trindler Markus [6.1%] | 60h | medium | (2) Normal | JAPREQM-2377 |
| 1550 | 1.2.4.8.3.19 | Portal interoperability - concepts | 123d | 2009-10-08 | 2010-03-31 |  | 0d | as late as possible | Neumann Gabriele [6.1%] | 60h | medium | (2) Normal | JAPREQM-2464 |
| 1551 | 1.2.4.8.3.20 | Use and handling of PKI certificates | 123d | 2009-10-08 | 2010-03-31 |  | 0d | as late as possible | Trindler Markus [6.1%] | 60h | medium | (2) Normal | JAPREQM-2480 |
| 1552 | 1.2.4.9 | **JAP Integration** | 134d? | 2009-09-23 | 2010-03-31 |  | 0d |  |  | 3025.2h | medium | (2) Normal |  |
| 1553 | 1.2.4.9.1 | **Stream Reporting** | 129d? | 2009-09-28 | 2010-03-29 |  | 0d |  |  | 27h | medium | (2) Normal |  |
| 1554 | 1.2.4.9.1.1 | **Preparation Stream Status Report** | 129d? | 2009-09-28 | 2010-03-29 |  | 0d |  |  | 27h | medium | (2) Normal |  |
| 1555 | 1.2.4.9.1.1.1 | Preparation Stream Status Report W39 | 1d? | 2009-09-28 | 2009-09-28 |  | 0d | as late as possible | Lackmann Ralph [12.5%] | 1h | medium | (2) Normal |  |
| 1556 | 1.2.4.9.1.1.2 | Preparation Stream Status Report W40 | 1d? | 2009-10-05 | 2009-10-05 |  | 0d | as late as possible | Lackmann Ralph [12.5%] | 1h | medium | (2) Normal |  |
| 1557 | 1.2.4.9.1.1.3 | Preparation Stream Status Report W41 | 1d? | 2009-10-12 | 2009-10-12 |  | 0d | as late as possible | Lackmann Ralph [12.5%] | 1h | medium | (2) Normal |  |
| 1558 | 1.2.4.9.1.1.4 | Preparation Stream Status Report W42 | 1d? | 2009-10-19 | 2009-10-19 |  | 0d | as late as possible | Lackmann Ralph [12.5%] | 1h | medium | (2) Normal |  |
| 1559 | 1.2.4.9.1.1.5 | Preparation Stream Status Report W43 | 1d? | 2009-10-26 | 2009-10-26 |  | 0d | as late as possible | Lackmann Ralph [12.5%] | 1h | medium | (2) Normal |  |
| 1560 | 1.2.4.9.1.1.6 | Preparation Stream Status Report W44 | 1d? | 2009-11-02 | 2009-11-02 |  | 0d | as late as possible | Lackmann Ralph [12.5%] | 1h | medium | (2) Normal |  |
| 1561 | 1.2.4.9.1.1.7 | Preparation Stream Status Report W45 | 1d? | 2009-11-09 | 2009-11-09 |  | 0d | as late as possible | Lackmann Ralph [12.5%] | 1h | medium | (2) Normal |  |
| 1562 | 1.2.4.9.1.1.8 | Preparation Stream Status Report W46 | 1d? | 2009-11-16 | 2009-11-16 |  | 0d | as late as possible | Lackmann Ralph [12.5%] | 1h | medium | (2) Normal |  |
| 1563 | 1.2.4.9.1.1.9 | Preparation Stream Status Report W47 | 1d? | 2009-11-23 | 2009-11-23 |  | 0d | as late as possible | Lackmann Ralph [12.5%] | 1h | medium | (2) Normal |  |
| 1564 | 1.2.4.9.1.1.10 | Preparation Stream Status Report W48 | 1d? | 2009-11-30 | 2009-11-30 |  | 0d | as late as possible | Lackmann Ralph [12.5%] | 1h | medium | (2) Normal |  |
| 1565 | 1.2.4.9.1.1.11 | Preparation Stream Status Report W49 | 1d? | 2009-12-07 | 2009-12-07 |  | 0d | as late as possible | Lackmann Ralph [12.5%] | 1h | medium | (2) Normal |  |
| 1566 | 1.2.4.9.1.1.12 | Preparation Stream Status Report W50 | 1d? | 2009-12-14 | 2009-12-14 |  | 0d | as late as possible | Lackmann Ralph [12.5%] | 1h | medium | (2) Normal |  |
| 1567 | 1.2.4.9.1.1.13 | Preparation Stream Status Report W51 | 1d? | 2009-12-21 | 2009-12-21 |  | 0d | as late as possible | Lackmann Ralph [12.5%] | 1h | medium | (2) Normal |  |
| 1568 | 1.2.4.9.1.1.14 | Preparation Stream Status Report W52 | 1d? | 2009-12-28 | 2009-12-28 |  | 0d | as late as possible | Lackmann Ralph [12.5%] | 1h | medium | (2) Normal |  |
| 1569 | 1.2.4.9.1.1.15 | Preparation Stream Status Report W53 | 1d? | 2010-01-04 | 2010-01-04 |  | 0d | as late as possible | Lackmann Ralph [12.5%] | 1h | medium | (2) Normal |  |
| 1570 | 1.2.4.9.1.1.16 | Preparation Stream Status Report W01 | 1d? | 2010-01-11 | 2010-01-11 |  | 0d | as late as possible | Lackmann Ralph [12.5%] | 1h | medium | (2) Normal |  |
| 1571 | 1.2.4.9.1.1.17 | Preparation Stream Status Report W02 | 1d? | 2010-01-18 | 2010-01-18 |  | 0d | as late as possible | Lackmann Ralph [12.5%] | 1h | medium | (2) Normal |  |
| 1572 | 1.2.4.9.1.1.18 | Preparation Stream Status Report W03 | 1d? | 2010-01-25 | 2010-01-25 |  | 0d | as late as possible | Lackmann Ralph [12.5%] | 1h | medium | (2) Normal |  |
| 1573 | 1.2.4.9.1.1.19 | Preparation Stream Status Report W04 | 1d? | 2010-02-01 | 2010-02-01 |  | 0d | as late as possible | Lackmann Ralph [12.5%] | 1h | medium | (2) Normal |  |
| 1574 | 1.2.4.9.1.1.20 | Preparation Stream Status Report W05 | 1d? | 2010-02-08 | 2010-02-08 |  | 0d | as late as possible | Lackmann Ralph [12.5%] | 1h | medium | (2) Normal |  |
| 1575 | 1.2.4.9.1.1.21 | Preparation Stream Status Report W06 | 1d? | 2010-02-15 | 2010-02-15 |  | 0d | as late as possible | Lackmann Ralph [12.5%] | 1h | medium | (2) Normal |  |
| 1576 | 1.2.4.9.1.1.22 | Preparation Stream Status Report W07 | 1d? | 2010-02-22 | 2010-02-22 |  | 0d | as late as possible | Lackmann Ralph [12.5%] | 1h | medium | (2) Normal |  |
| 1577 | 1.2.4.9.1.1.23 | Preparation Stream Status Report W08 | 1d? | 2010-03-01 | 2010-03-01 |  | 0d | as late as possible | Lackmann Ralph [12.5%] | 1h | medium | (2) Normal |  |
| 1578 | 1.2.4.9.1.1.24 | Preparation Stream Status Report W09 | 1d? | 2010-03-08 | 2010-03-08 |  | 0d | as late as possible | Lackmann Ralph [12.5%] | 1h | medium | (2) Normal |  |
| 1579 | 1.2.4.9.1.1.25 | Preparation Stream Status Report W10 | 1d? | 2010-03-15 | 2010-03-15 |  | 0d | as late as possible | Lackmann Ralph [12.5%] | 1h | medium | (2) Normal |  |
| 1580 | 1.2.4.9.1.1.26 | Preparation Stream Status Report W11 | 1d? | 2010-03-22 | 2010-03-22 |  | 0d | as late as possible | Lackmann Ralph [12.5%] | 1h | medium | (2) Normal |  |
| 1581 | 1.2.4.9.1.1.27 | Preparation Stream Status Report W12 | 1d? | 2010-03-29 | 2010-03-29 |  | 0d | as late as possible | Lackmann Ralph [12.5%] | 1h | medium | (2) Normal |  |

| ID | WBS | Task | Duration | Start | Finish | Predecessors | Total slack | Constraint | Resources | Work | Text23 | Text30 |
| --- | --- | --- | --- | --- | --- | --- | --- | --- | --- | --- | --- | --- |
| 1582 | 1.2.4.9.2 | **Phase preparation stream** | 2d? | 2009-10-15 | 2009-10-19 |  | 114.88d |  |  | 16h | medium | (2) Normal |
| 1583 | 1.2.4.9.2.1 | Detail planning of the phase | 2d? | 2009-10-15 | 2009-10-19 | 1154 | 114.88d |  | Lackmann Ralph | 16h | medium | (2) Normal |
| 1584 | 1.2.4.9.3 | Stream Coordination | 120d | 2009-10-13 | 2010-03-31 |  | 0d | as late as possible | Lackmann Ralph [10%] | 96h | medium | (2) Normal |
| 1585 | 1.2.4.9.4 | Integration Management | 1d? | 2009-09-23 | 2009-09-23 |  | 133d |  |  |  | medium | (2) Normal |
| 1586 | 1.2.4.9.5 | **Supplier Management** | 120d | 2009-10-13 | 2010-03-31 |  | 0d |  |  | 163.2h | medium | (2) Normal |
| 1587 | 1.2.4.9.5.1 | Supplier Coordination | 120d | 2009-10-13 | 2010-03-31 |  | 0d | as late as possible | Lackmann Ralph [17%] | 163.2h | medium | (2) Normal |
| 1588 | 1.2.4.9.6 | **Test Management** | 132d? | 2009-09-23 | 2010-03-29 |  | 2d |  |  | 2723h | medium | (2) Normal |
| 1589 | 1.2.4.9.6.1 | **Reporting** | 129d? | 2009-09-28 | 2010-03-29 |  | 0d |  |  | 27h | medium | (2) Normal |
| 1590 | 1.2.4.9.6.1.1 | **Preparation Role Status Report** | 129d? | 2009-09-28 | 2010-03-29 |  | 0d |  |  | 27h | medium | (2) Normal |
| 1591 | 1.2.4.9.6.1.1.1 | Preparation Role Status Report W39 | 1d? | 2009-09-28 | 2009-09-28 |  | 0d | as late as possible | Oberndorfer Richard [12.5%] | 1h | medium | (2) Normal |
| 1592 | 1.2.4.9.6.1.1.2 | Preparation Role Status Report W40 | 1d? | 2009-10-05 | 2009-10-05 |  | 0d | as late as possible | Oberndorfer Richard [12.5%] | 1h | medium | (2) Normal |
| 1593 | 1.2.4.9.6.1.1.3 | Preparation Role Status Report W41 | 1d? | 2009-10-12 | 2009-10-12 |  | 0d | as late as possible | Oberndorfer Richard [12.5%] | 1h | medium | (2) Normal |
| 1594 | 1.2.4.9.6.1.1.4 | Preparation Role Status Report W42 | 1d? | 2009-10-19 | 2009-10-19 |  | 0d | as late as possible | Oberndorfer Richard [12.5%] | 1h | medium | (2) Normal |
| 1595 | 1.2.4.9.6.1.1.5 | Preparation Role Status Report W43 | 1d? | 2009-10-26 | 2009-10-26 |  | 0d | as late as possible | Oberndorfer Richard [12.5%] | 1h | medium | (2) Normal |
| 1596 | 1.2.4.9.6.1.1.6 | Preparation Role Status Report W44 | 1d? | 2009-11-02 | 2009-11-02 |  | 0d | as late as possible | Oberndorfer Richard [12.5%] | 1h | medium | (2) Normal |
| 1597 | 1.2.4.9.6.1.1.7 | Preparation Role Status Report W45 | 1d? | 2009-11-09 | 2009-11-09 |  | 0d | as late as possible | Oberndorfer Richard [12.5%] | 1h | medium | (2) Normal |
| 1598 | 1.2.4.9.6.1.1.8 | Preparation Role Status Report W46 | 1d? | 2009-11-16 | 2009-11-16 |  | 0d | as late as possible | Oberndorfer Richard [12.5%] | 1h | medium | (2) Normal |
| 1599 | 1.2.4.9.6.1.1.9 | Preparation Role Status Report W47 | 1d? | 2009-11-23 | 2009-11-23 |  | 0d | as late as possible | Oberndorfer Richard [12.5%] | 1h | medium | (2) Normal |
| 1600 | 1.2.4.9.6.1.1.10 | Preparation Role Status Report W48 | 1d? | 2009-11-30 | 2009-11-30 |  | 0d | as late as possible | Oberndorfer Richard [12.5%] | 1h | medium | (2) Normal |
| 1601 | 1.2.4.9.6.1.1.11 | Preparation Role Status Report W49 | 1d? | 2009-12-07 | 2009-12-07 |  | 0d | as late as possible | Oberndorfer Richard [12.5%] | 1h | medium | (2) Normal |
| 1602 | 1.2.4.9.6.1.1.12 | Preparation Role Status Report W50 | 1d? | 2009-12-14 | 2009-12-14 |  | 0d | as late as possible | Oberndorfer Richard [12.5%] | 1h | medium | (2) Normal |
| 1603 | 1.2.4.9.6.1.1.13 | Preparation Role Status Report W51 | 1d? | 2009-12-21 | 2009-12-21 |  | 0d | as late as possible | Oberndorfer Richard [12.5%] | 1h | medium | (2) Normal |
| 1604 | 1.2.4.9.6.1.1.14 | Preparation Role Status Report W52 | 1d? | 2009-12-28 | 2009-12-28 |  | 0d | as late as possible | Oberndorfer Richard [12.5%] | 1h | medium | (2) Normal |
| 1605 | 1.2.4.9.6.1.1.15 | Preparation Role Status Report W53 | 1d? | 2010-01-04 | 2010-01-04 |  | 0d | as late as possible | Oberndorfer Richard [12.5%] | 1h | medium | (2) Normal |
| 1606 | 1.2.4.9.6.1.1.16 | Preparation Role Status Report W01 | 1d? | 2010-01-11 | 2010-01-11 |  | 0d | as late as possible | Oberndorfer Richard [12.5%] | 1h | medium | (2) Normal |
| 1607 | 1.2.4.9.6.1.1.17 | Preparation Role Status Report W02 | 1d? | 2010-01-18 | 2010-01-18 |  | 0d | as late as possible | Oberndorfer Richard [12.5%] | 1h | medium | (2) Normal |
| 1608 | 1.2.4.9.6.1.1.18 | Preparation Role Status Report W03 | 1d? | 2010-01-25 | 2010-01-25 |  | 0d | as late as possible | Oberndorfer Richard [12.5%] | 1h | medium | (2) Normal |
| 1609 | 1.2.4.9.6.1.1.19 | Preparation Role Status Report W04 | 1d? | 2010-02-01 | 2010-02-01 |  | 0d | as late as possible | Oberndorfer Richard [12.5%] | 1h | medium | (2) Normal |
| 1610 | 1.2.4.9.6.1.1.20 | Preparation Role Status Report W05 | 1d? | 2010-02-08 | 2010-02-08 |  | 0d | as late as possible | Oberndorfer Richard [12.5%] | 1h | medium | (2) Normal |
| 1611 | 1.2.4.9.6.1.1.21 | Preparation Role Status Report W06 | 1d? | 2010-02-15 | 2010-02-15 |  | 0d | as late as possible | Oberndorfer Richard [12.5%] | 1h | medium | (2) Normal |
| 1612 | 1.2.4.9.6.1.1.22 | Preparation Role Status Report W07 | 1d? | 2010-02-22 | 2010-02-22 |  | 0d | as late as possible | Oberndorfer Richard [12.5%] | 1h | medium | (2) Normal |
| 1613 | 1.2.4.9.6.1.1.23 | Preparation Role Status Report W08 | 1d? | 2010-03-01 | 2010-03-01 |  | 0d | as late as possible | Oberndorfer Richard [12.5%] | 1h | medium | (2) Normal |
| 1614 | 1.2.4.9.6.1.1.24 | Preparation Role Status Report W09 | 1d? | 2010-03-08 | 2010-03-08 |  | 0d | as late as possible | Oberndorfer Richard [12.5%] | 1h | medium | (2) Normal |
| 1615 | 1.2.4.9.6.1.1.25 | Preparation Role Status Report W10 | 1d? | 2010-03-15 | 2010-03-15 |  | 0d | as late as possible | Oberndorfer Richard [12.5%] | 1h | medium | (2) Normal |
| 1616 | 1.2.4.9.6.1.1.26 | Preparation Role Status Report W11 | 1d? | 2010-03-22 | 2010-03-22 |  | 0d | as late as possible | Oberndorfer Richard [12.5%] | 1h | medium | (2) Normal |
| 1617 | 1.2.4.9.6.1.1.27 | Preparation Role Status Report W12 | 1d? | 2010-03-29 | 2010-03-29 |  | 0d | as late as possible | Oberndorfer Richard [12.5%] | 1h | medium | (2) Normal |

| ID | WBS | Task | Type | Duration | Start | Finish | Predecessors | Total slack | Free slack | Constraint | Resources | Work |
| --- | --- | --- | --- | --- | --- | --- | --- | --- | --- | --- | --- | --- |
| 1618 | 1.2.4.9.6.2 | **Planning Tasks** |  | 5d | 2009-09-23 | 2009-09-29 |  | 129d |  |  |  | 40h |
| 1619 | 1.2.4.9.6.2.1 | Change Requests (AR, CS, LPA) |  | 1d | 2009-09-23 | 2009-09-23 |  | 129d | 0d |  | Oberndorfer Richard | 8h |
| 1620 | 1.2.4.9.6.2.2 | Test Server Allocation/Assignment Plan |  | 2d | 2009-09-24 | 2009-09-25 | 1619 | 129d | 0d |  | Oberndorfer Richard | 16h |
| 1621 | 1.2.4.9.6.2.3 | Test Adjustment with Component Suppliers |  | 2d | 2009-09-28 | 2009-09-29 | 1620 | 129d |  |  | Oberndorfer Richard | 16h |
| 1622 | 1.2.4.9.6.3 | **Ordering Tasks** |  | 2d | 2009-09-23 | 2009-09-24 |  | 132d |  |  |  | 16h |
| 1623 | 1.2.4.9.6.3.1 | Monitoring |  | 0.5d | 2009-09-23 | 2009-09-23 |  | 132d | 0d |  | Matthes Andreas | 4h |
| 1624 | 1.2.4.9.6.3.2 | SOA Backplane |  | 0.5d | 2009-09-23 | 2009-09-23 | 1623 | 132d | 0d |  | Matthes Andreas | 4h |
| 1625 | 1.2.4.9.6.3.3 | WebEntryServer |  | 0.5d | 2009-09-24 | 2009-09-24 | 1624 | 132d | 0d |  | Matthes Andreas | 4h |
| 1626 | 1.2.4.9.6.3.4 | WFI |  | 0.5d | 2009-09-24 | 2009-09-24 | 1625 | 132d |  |  | Matthes Andreas | 4h |
| 1627 | 1.2.4.9.6.4 | **Definition of Test cases and environment** |  | 5d | 2009-09-23 | 2009-09-29 |  | 129d |  |  |  | 200h |
| 1628 | 1.2.4.9.6.4.1 | Workflow Integration |  | 1d | 2009-09-23 | 2009-09-23 |  | 133d |  |  | Oberndorfer Richard | 8h |
| 1629 | 1.2.4.9.6.4.2 | Business Rule Management System |  | 1d | 2009-09-23 | 2009-09-23 |  | 133d |  |  | Oberndorfer Richard | 8h |
| 1630 | 1.2.4.9.6.4.3 | JAP Platform Management |  | 3d | 2009-09-23 | 2009-09-25 |  | 131d |  |  | Oberndorfer Richard | 24h |
| 1631 | 1.2.4.9.6.4.4 | Common Enhancements |  | 2d | 2009-09-23 | 2009-09-24 |  | 132d |  |  | Oberndorfer Richard | 16h |
| 1632 | 1.2.4.9.6.4.5 | RTP & ECO System Enhancement |  | 2d | 2009-09-23 | 2009-09-24 |  | 132d |  |  | Oberndorfer Richard | 16h |
| 1633 | 1.2.4.9.6.4.6 | Transaction Platform |  | 5d | 2009-09-23 | 2009-09-29 |  | 129d |  |  | Oberndorfer Richard | 40h |
| 1634 | 1.2.4.9.6.4.7 | SOA enhancements |  | 4d | 2009-09-23 | 2009-09-28 |  | 130d |  |  | Oberndorfer Richard | 32h |
| 1635 | 1.2.4.9.6.4.8 | Portal Enhancements |  | 3d | 2009-09-23 | 2009-09-25 |  | 131d |  |  | Oberndorfer Richard | 24h |
| 1636 | 1.2.4.9.6.4.9 | Special Test cases |  | 4d | 2009-09-23 | 2009-09-28 |  | 130d |  |  | Oberndorfer Richard | 32h |
| 1637 | 1.2.4.9.6.5 | **PG1 (Based on CSS 2.0)** |  | 21d | 2009-09-23 | 2009-10-21 |  | 2d |  |  |  | 224h |
| 1638 | 1.2.4.9.6.5.1 | Installation CSS 2.0 |  | 2d | 2009-09-23 | 2009-09-24 |  | 114d | 1d |  | Bu Sigve | 16h |
| 1639 | 1.2.4.9.6.5.2 | Supplier Delivery | milestone | 0d | 2009-09-25 | 2009-09-25 |  | 0d |  | must start on 2009-09-25 |  |  |
| 1640 | 1.2.4.9.6.5.3 | **TIP-D** |  | 8d | 2009-09-28 | 2009-10-07 | 1639FS+1d | 115d |  |  |  | 64h |
| 1641 | 1.2.4.9.6.5.3.1 | Meetings |  | 0.5d | 2009-09-28 | 2009-09-28 |  | 115d | 0d |  | Oezgen Oya | 4h |
| 1642 | 1.2.4.9.6.5.3.2 | Build and Install Zip File |  | 0.5d | 2009-09-28 | 2009-09-28 | 1641 | 115d | 0d |  | Oezgen Oya | 4h |
| 1643 | 1.2.4.9.6.5.3.3 | T1 Tests |  | 3d | 2009-09-29 | 2009-10-01 | 1642 | 115d | 0d |  | Oezgen Oya | 24h |
| 1644 | 1.2.4.9.6.5.3.4 | T4 Tests |  | 4d | 2009-10-02 | 2009-10-07 | 1643 | 115d | 2d |  | Oezgen Oya | 32h |

| ID | WBS | Task | Type | Duration | Start | Finish | Predecessors | Total slack | Free slack | Resources | Work |
| --- | --- | --- | --- | --- | --- | --- | --- | --- | --- | --- | --- |
| 1645 | 1.2.4.9.6.5.4 | **Integration and Deploy** |  | 5d | 2009-09-28 | 2009-10-02 | 1638, 1639FS+1d | 113d | 0d |  | 40h |
| 1646 | 1.2.4.9.6.5.4.1 | Delivery Check |  | 0.5d | 2009-09-28 | 2009-09-28 |  | 113d | 0d | Bu Sigve | 4h |
| 1647 | 1.2.4.9.6.5.4.2 | SDSS Bundling |  | 0.5d | 2009-09-28 | 2009-09-28 | 1646 | 113d | 0d | Bu Sigve | 4h |
| 1648 | 1.2.4.9.6.5.4.3 | TIP Deploy for Remove Tests |  | 2d | 2009-09-29 | 2009-09-30 | 1647 | 113d | 0d | Bu Sigve | 16h |
| 1649 | 1.2.4.9.6.5.4.4 | TIP Remove Tests |  | 1d | 2009-10-01 | 2009-10-01 | 1648 | 113d | 0d | Bu Sigve | 8h |
| 1650 | 1.2.4.9.6.5.4.5 | TIP Deploy for Test Applications |  | 1d | 2009-10-02 | 2009-10-02 | 1649 | 113d |  | Bu Sigve | 8h |
| 1651 | 1.2.4.9.6.5.5 | **TIP Integration Test** |  | 5d | 2009-10-05 | 2009-10-09 | 1645 | 113d | 0d |  | 40h |
| 1652 | 1.2.4.9.6.5.5.1 | T1 |  | 1d | 2009-10-05 | 2009-10-05 |  | 113d | 0d | Matthes Andreas | 8h |
| 1653 | 1.2.4.9.6.5.5.2 | T4 |  | 4d | 2009-10-06 | 2009-10-09 | 1652 | 113d | 0d | Matthes Andreas | 32h |
| 1654 | 1.2.4.9.6.5.5.3 | T5 | milestone | 0d | 2009-10-09 | 2009-10-09 | 1653 | 113d | 0d |  |  |
| 1655 | 1.2.4.9.6.5.5.4 | Monitoring | milestone | 0d | 2009-10-09 | 2009-10-09 | 1654 | 113d | 0d |  |  |
| 1656 | 1.2.4.9.6.5.5.5 | Batch TA | milestone | 0d | 2009-10-09 | 2009-10-09 | 1655 | 113d |  |  |  |
| 1657 | 1.2.4.9.6.5.6 | **Release for Supplier** |  | 0d | 2009-10-09 | 2009-10-09 | 1644, 1651 | 113d | 0d |  |  |
| 1658 | 1.2.4.9.6.5.6.1 | Supplier Release Date | milestone | 0d | 2009-10-09 | 2009-10-09 |  | 113d |  |  |  |
| 1659 | 1.2.4.9.6.5.7 | **TIP Integration Test Continued** |  | 8d | 2009-10-12 | 2009-10-21 | 1657 | 113d |  |  | 64h |
| 1660 | 1.2.4.9.6.5.7.1 | T5 |  | 6d | 2009-10-12 | 2009-10-19 |  | 113d | 0d | Bu Sigve | 48h |
| 1661 | 1.2.4.9.6.5.7.2 | Special CSS related tests |  | 2d | 2009-10-20 | 2009-10-21 | 1660 | 113d |  | Bu Sigve | 16h |
| 1662 | 1.2.4.9.6.6 | **CSS 3.0 IT2 Tests (based on JAP AR5)** |  | 15d | 2009-10-19 | 2009-11-06 |  | 101d |  |  | 120h |
| 1663 | 1.2.4.9.6.6.1 | Installation CSS 3.0 (End of IT1 Release) |  | 2d | 2009-10-19 | 2009-10-20 | 96FS+1d | 101d | 0d | Oberndorfer Richard | 16h |
| 1664 | 1.2.4.9.6.6.2 | Check Eco Systems, Prepare |  | 2d | 2009-10-21 | 2009-10-22 | 1663 | 101d | 0d | Oberndorfer Richard | 16h |
| 1665 | 1.2.4.9.6.6.3 | **IT2-Tests** |  | 11d | 2009-10-22 | 2009-11-06 | 1664 | 101d |  |  | 88h |
| 1666 | 1.2.4.9.6.6.3.1 | **Integration and Deploy** |  | 4d | 2009-10-22 | 2009-10-28 |  | 101d | 0d |  | 32h |
| 1667 | 1.2.4.9.6.6.3.1.1 | Delivery Check | milestone | 0d | 2009-10-22 | 2009-10-22 |  | 101d | 0d |  |  |
| 1668 | 1.2.4.9.6.6.3.1.2 | SDSS Bundling | milestone | 0d | 2009-10-22 | 2009-10-22 | 1667 | 101d | 0d |  |  |
| 1669 | 1.2.4.9.6.6.3.1.3 | TIP Deploy for Remove Tests | milestone | 0d | 2009-10-22 | 2009-10-22 | 1668 | 101d | 0d |  |  |
| 1670 | 1.2.4.9.6.6.3.1.4 | TIP Remove Tests | milestone | 0d | 2009-10-22 | 2009-10-22 | 1669 | 101d | 0d |  |  |
| 1671 | 1.2.4.9.6.6.3.1.5 | TIP Deploy for Test Applications |  | 4d | 2009-10-23 | 2009-10-28 | 1670 | 101d |  | Bu Sigve | 32h |

Notes:
- 1652: This will be done for: / Scenario1: Single / Scenario2: Clone / Prepare Application: / - Generate Application with OT / - Build Application with QMB / Deploy/Remove Application: / - Deploy Application with SDSS / - Remove Application with SDSS / - Deploy Application with SDSS / Test Application: / - Activate Application (Central Manager or Local Command) / - Start Application (Central Manager or Local Command) / - Run JUNIT Tests for Application / - Stop Application (Central Manager or Local Command) / - De-Activate Application (Central Manager or Local Command) / Remove Application: / - Activate Application (Central Manager or Local Command) / - Start Application (Central Manager or Local Command) / - Remove Application with SDSS
- 1653: This will be done for: / Scenario1: PL: Single BL: Single / Scenario2: PL: Clone BL: Cluster / Prepare Application: / - Generate Application with OT / - Build Application with QMB / Deploy/Remove Application: / - Deploy Application with SDSS / - Remove Application with SDSS / - Deploy Application with SDSS / Test Application: / - Activate Application (Central Manager or Local Command) / - Start Application (Central Manager or Local Command) / - Run JUNIT Tests for Application / - Stop Application (Central Manager or Local Command) / - De-Activate Application (Central Manager or Local Command) / Remove Application: / - Activate Application (Central Manager or Local Command) / - Start Application (Central Manager or Local Command) / - Remove Application with SDSS
- 1654: This will be done for: / Scenario1: PL in Public DMZ: Single / Scenario2: PL in Customer DMZ: Single BL: Single / Scenario3: PL:in CustomerDMZ: Clone BL: Cluster / Prepare Application: / - Generate Application with OT / - Build Application with QMB / Deploy/Remove Application: / - Deploy Application with SDSS / - Remove Application with SDSS / - Deploy Application with SDSS / Test Application: / - Activate Application (Central Manager or Local Command) / - Start Application (Central Manager or Local Command) / - Run JUNIT Tests for Application / - Stop Application (Central Manager or Local Command) / - De-Activate Application (Central Manager or Local Command) / Remove Application: / - Activate Application (Central Manager or Local Command) / - Start Application (Central Manager or Local Command) / - Remove Application with SDSS
- 1655: - Logfile Monitoring / - Logtransport / - Process Monitoring
- 1656: Prepare Application: / - Generate Application with OT / - Build Application with QMB / Deploy/Remove Application: / - Deploy Application with SDSS / - Remove Application with SDSS / - Deploy Application with SDSS / Test Application: / - Activate Application (Central Manager or Local Command) / - Run Test Scripts / - Stop Application (Central Manager or Local Command) / Remove Application: / - Start Application (Central Manager or Local Command) / - Remove Application with SDSS

| ID | WBS | Task | Type | Duration | Start | Finish | Predecessors | Total slack | Free slack | Constraint | Resources | Work |
| --- | --- | --- | --- | --- | --- | --- | --- | --- | --- | --- | --- | --- |
| 1672 | 1.2.4.9.6.6.3.2 | **TIP Integration Test** |  | 7d | 2009-10-29 | 2009-11-06 | 1666 | 101d |  |  |  | 56h |
| 1673 | 1.2.4.9.6.6.3.2.1 | T1 |  | 3d | 2009-10-29 | 2009-11-02 |  | 101d | 0d |  | Matthes Andreas | 24h |
| 1674 | 1.2.4.9.6.6.3.2.2 | T4 |  | 4d | 2009-11-03 | 2009-11-06 | 1673 | 101d | 0d |  | Matthes Andreas | 32h |
| 1675 | 1.2.4.9.6.6.3.2.3 | T5 | milestone | 0d | 2009-11-06 | 2009-11-06 | 1674 | 101d | 0d |  |  |  |
| 1676 | 1.2.4.9.6.6.3.2.4 | Monitoring | milestone | 0d | 2009-11-06 | 2009-11-06 | 1675 | 101d | 0d |  |  |  |
| 1677 | 1.2.4.9.6.6.3.2.5 | Batch TA | milestone | 0d | 2009-11-06 | 2009-11-06 | 1676 | 101d |  |  |  |  |
| 1678 | 1.2.4.9.6.7 | **PG2 (Based on CSS 2.0 / CSS 3.0)** |  | 31d | 2009-10-23 | 2009-12-04 |  | 0d |  |  |  | 536h |
| 1679 | 1.2.4.9.6.7.1 | Supplier Delivery | milestone | 0d | 2009-10-23 | 2009-10-23 |  | 0d |  | must start on 2009-10-23 |  |  |
| 1680 | 1.2.4.9.6.7.2 | **TIP-D** |  | 8d | 2009-10-23 | 2009-11-03 | 1679 | 104d |  |  |  | 64h |
| 1681 | 1.2.4.9.6.7.2.1 | Meetings |  | 0.5d | 2009-10-23 | 2009-10-23 |  | 104d | 0d |  | Oezgen Oya | 4h |
| 1682 | 1.2.4.9.6.7.2.2 | Build and Install Zip File |  | 0.5d | 2009-10-23 | 2009-10-23 | 1681 | 104d | 0d |  | Oezgen Oya | 4h |
| 1683 | 1.2.4.9.6.7.2.3 | T1 Tests |  | 3d | 2009-10-26 | 2009-10-28 | 1682 | 104d | 0d |  | Oezgen Oya | 24h |
| 1684 | 1.2.4.9.6.7.2.4 | T4 Tests |  | 4d | 2009-10-29 | 2009-11-03 | 1683 | 104d |  |  | Oezgen Oya | 32h |
| 1685 | 1.2.4.9.6.7.3 | **PG2 on CSS 2.0** |  | 31d | 2009-10-23 | 2009-12-04 |  | 81d |  |  |  | 248h |
| 1686 | 1.2.4.9.6.7.3.1 | Installation CSS |  | 1d | 2009-10-23 | 2009-10-23 | 1679 | 111d |  |  | Bu Sigve | 8h |
| 1687 | 1.2.4.9.6.7.3.2 | **Integration and Deploy** |  | 3d | 2009-10-26 | 2009-10-28 | 1679FS+1d | 81d | 0d |  |  | 24h |
| 1688 | 1.2.4.9.6.7.3.2.1 | Delivery Check |  | 0.5d | 2009-10-26 | 2009-10-26 |  | 81d | 0d |  | Bu Sigve | 4h |
| 1689 | 1.2.4.9.6.7.3.2.2 | SDSS Bundling |  | 0.5d | 2009-10-26 | 2009-10-26 | 1688 | 81d | 0d |  | Bu Sigve | 4h |
| 1690 | 1.2.4.9.6.7.3.2.3 | TIP Deploy for Remove Tests |  | 1d | 2009-10-27 | 2009-10-27 | 1689 | 81d | 0d |  | Bu Sigve | 8h |
| 1691 | 1.2.4.9.6.7.3.2.4 | TIP Remove Tests |  | 0.5d | 2009-10-28 | 2009-10-28 | 1690 | 81d | 0d |  | Bu Sigve | 4h |
| 1692 | 1.2.4.9.6.7.3.2.5 | TIP Deploy for Test Applications |  | 0.5d | 2009-10-28 | 2009-10-28 | 1691 | 81d |  |  | Bu Sigve | 4h |
| 1693 | 1.2.4.9.6.7.3.3 | **TIP Integration Test** |  | 7d | 2009-10-29 | 2009-11-06 | 1687 | 81d | 0d |  |  | 56h |
| 1694 | 1.2.4.9.6.7.3.3.1 | T1 |  | 1d | 2009-10-29 | 2009-10-29 |  | 81d | 0d |  | Hermann René | 8h |
| 1695 | 1.2.4.9.6.7.3.3.2 | T4 |  | 2d | 2009-10-30 | 2009-11-02 | 1694 | 81d | 0d |  | Hermann René | 16h |
| 1696 | 1.2.4.9.6.7.3.3.3 | T5 |  | 2d | 2009-11-03 | 2009-11-04 | 1695 | 81d | 0d |  | Hermann René | 16h |
| 1697 | 1.2.4.9.6.7.3.3.4 | Monitoring |  | 1d | 2009-11-05 | 2009-11-05 | 1696 | 81d | 0d |  | Hermann René | 8h |
| 1698 | 1.2.4.9.6.7.3.3.5 | Batch TA |  | 1d | 2009-11-06 | 2009-11-06 | 1697 | 81d |  |  | Hermann René | 8h |

Notes:
- 1673: This will be done for: / Scenario1: Single / Scenario2: Clone / Prepare Application: / - Generate Application with OT / - Build Application with QMB / Deploy/Remove Application: / - Deploy Application with SDSS / - Remove Application with SDSS / - Deploy Application with SDSS / Test Application: / - Activate Application (Central Manager or Local Command) / - Start Application (Central Manager or Local Command) / - Run JUNIT Tests for Application / - Stop Application (Central Manager or Local Command) / - De-Activate Application (Central Manager or Local Command) / Remove Application: / - Activate Application (Central Manager or Local Command) / - Start Application (Central Manager or Local Command) / - Remove Application with SDSS
- 1674: This will be done for: / Scenario1: PL: Single BL: Single / Scenario2: PL: Clone BL: Cluster / Prepare Application: / - Generate Application with OT / - Build Application with QMB / Deploy/Remove Application: / - Deploy Application with SDSS / - Remove Application with SDSS / - Deploy Application with SDSS / Test Application: / - Activate Application (Central Manager or Local Command) / - Start Application (Central Manager or Local Command) / - Run JUNIT Tests for Application / - Stop Application (Central Manager or Local Command) / - De-Activate Application (Central Manager or Local Command) / Remove Application: / - Activate Application (Central Manager or Local Command) / - Start Application (Central Manager or Local Command) / - Remove Application with SDSS
- 1675: This will be done for: / Scenario1: PL in Public DMZ: Single / Scenario2: PL in Customer DMZ: Single BL: Single / Scenario3: PL:in CustomerDMZ: Clone BL: Cluster / Prepare Application: / - Generate Application with OT / - Build Application with QMB / Deploy/Remove Application: / - Deploy Application with SDSS / - Remove Application with SDSS / - Deploy Application with SDSS / Test Application: / - Activate Application (Central Manager or Local Command) / - Start Application (Central Manager or Local Command) / - Run JUNIT Tests for Application / - Stop Application (Central Manager or Local Command) / - De-Activate Application (Central Manager or Local Command) / Remove Application: / - Activate Application (Central Manager or Local Command) / - Start Application (Central Manager or Local Command) / - Remove Application with SDSS
- 1676: - Logfile Monitoring / - Logtransport / - Process Monitoring
- 1677: Prepare Application: / - Generate Application with OT / - Build Application with QMB / Deploy/Remove Application: / - Deploy Application with SDSS / - Remove Application with SDSS / - Deploy Application with SDSS / Test Application: / - Activate Application (Central Manager or Local Command) / - Run Test Scripts / - Stop Application (Central Manager or Local Command) / Remove Application: / - Start Application (Central Manager or Local Command) / - Remove Application with SDSS
- 1694: This will be done for: / Scenario1: Single / Scenario2: Clone / Prepare Application: / - Generate Application with OT / - Build Application with QMB / Deploy/Remove Application: / - Deploy Application with SDSS / - Remove Application with SDSS / - Deploy Application with SDSS / Test Application: / - Activate Application (Central Manager or Local Command) / - Start Application (Central Manager or Local Command) / - Run JUNIT Tests for Application / - Stop Application (Central Manager or Local Command) / - De-Activate Application (Central Manager or Local Command) / Remove Application: / - Activate Application (Central Manager or Local Command) / - Start Application (Central Manager or Local Command) / - Remove Application with SDSS
- 1695: This will be done for: / Scenario1: PL: Single BL: Single / Scenario2: PL: Clone BL: Cluster / Prepare Application: / - Generate Application with OT / - Build Application with QMB / Deploy/Remove Application: / - Deploy Application with SDSS / - Remove Application with SDSS / - Deploy Application with SDSS / Test Application: / - Activate Application (Central Manager or Local Command) / - Start Application (Central Manager or Local Command) / - Run JUNIT Tests for Application / - Stop Application (Central Manager or Local Command) / - De-Activate Application (Central Manager or Local Command) / Remove Application: / - Activate Application (Central Manager or Local Command) / - Start Application (Central Manager or Local Command) / - Remove Application with SDSS
- 1696: This will be done for: / Scenario1: PL in Public DMZ: Single / Scenario2: PL in Customer DMZ: Single BL: Single / Scenario3: PL:in CustomerDMZ: Clone BL: Cluster / Prepare Application: / - Generate Application with OT / - Build Application with QMB / Deploy/Remove Application: / - Deploy Application with SDSS / - Remove Application with SDSS / - Deploy Application with SDSS / Test Application: / - Activate Application (Central Manager or Local Command) / - Start Application (Central Manager or Local Command) / - Run JUNIT Tests for Application / - Stop Application (Central Manager or Local Command) / - De-Activate Application (Central Manager or Local Command) / Remove Application: / - Activate Application (Central Manager or Local Command) / - Start Application (Central Manager or Local Command) / - Remove Application with SDSS
- 1697: - Logfile Monitoring / - Logtransport / - Process Monitoring
- 1698: Prepare Application: / - Generate Application with OT / - Build Application with QMB / Deploy/Remove Application: / - Deploy Application with SDSS / - Remove Application with SDSS / - Deploy Application with SDSS / Test Application: / - Activate Application (Central Manager or Local Command) / - Run Test Scripts / - Stop Application (Central Manager or Local Command) / Remove Application: / - Start Application (Central Manager or Local Command) / - Remove Application with SDSS

| ID | WBS | Task | Type | Duration | Start | Finish | Predecessors | Total slack | Free slack | Resources | Work |
| --- | --- | --- | --- | --- | --- | --- | --- | --- | --- | --- | --- |
| 1699 | 1.2.4.9.6.7.3.4 | **Release for Supplier** |  | 0d | 2009-11-06 | 2009-11-06 | 1693 | 101d |  |  |  |
| 1700 | 1.2.4.9.6.7.3.4.1 | Supplier Release Date | milestone | 0d | 2009-11-06 | 2009-11-06 |  | 101d |  |  |  |
| 1701 | 1.2.4.9.6.7.3.5 | **TIP Platform Test** |  | 20d | 2009-11-09 | 2009-12-04 | 1693 | 81d |  |  | 160h |
| 1702 | 1.2.4.9.6.7.3.5.1 | Test1 |  | 5d | 2009-11-09 | 2009-11-13 |  | 81d | 0d | Hermann René | 40h |
| 1703 | 1.2.4.9.6.7.3.5.2 | Test2 |  | 5d | 2009-11-16 | 2009-11-20 | 1702 | 81d | 0d | Hermann René | 40h |
| 1704 | 1.2.4.9.6.7.3.5.3 | Test3 |  | 5d | 2009-11-23 | 2009-11-27 | 1703 | 81d | 0d | Hermann René | 40h |
| 1705 | 1.2.4.9.6.7.3.5.4 | Test4 |  | 5d | 2009-11-30 | 2009-12-04 | 1704 | 81d |  | Hermann René | 40h |
| 1706 | 1.2.4.9.6.7.4 | **PG2 on CSS 3.0** |  | 30d | 2009-10-23 | 2009-12-03 |  | 79d |  |  | 224h |
| 1707 | 1.2.4.9.6.7.4.1 | Installation CSS (End of IT Release) |  | 1d | 2009-10-23 | 2009-10-23 | 1679 | 111d |  | Bu Sigve | 8h |
| 1708 | 1.2.4.9.6.7.4.2 | **Integration and Deploy** |  | 3d | 2009-10-28 | 2009-10-30 | 1679FS+3d | 76d | 0d |  | 24h |
| 1709 | 1.2.4.9.6.7.4.2.1 | Delivery Check |  | 0.5d | 2009-10-28 | 2009-10-28 |  | 76d | 0d | Bu Sigve | 4h |
| 1710 | 1.2.4.9.6.7.4.2.2 | SDSS Bundling |  | 0.5d | 2009-10-28 | 2009-10-28 | 1709 | 76d | 0d | Bu Sigve | 4h |
| 1711 | 1.2.4.9.6.7.4.2.3 | TIP Deploy for Remove Tests |  | 1d | 2009-10-29 | 2009-10-29 | 1710 | 76d | 0d | Bu Sigve | 8h |
| 1712 | 1.2.4.9.6.7.4.2.4 | TIP Remove Tests |  | 0.5d | 2009-10-30 | 2009-10-30 | 1711 | 76d | 0d | Bu Sigve | 4h |
| 1713 | 1.2.4.9.6.7.4.2.5 | TIP Deploy for Test Applications |  | 0.5d | 2009-10-30 | 2009-10-30 | 1712 | 76d |  | Bu Sigve | 4h |
| 1714 | 1.2.4.9.6.7.4.3 | **TIP Integration Test** |  | 5d | 2009-11-02 | 2009-11-06 | 1708 | 76d | 0d |  | 40h |
| 1715 | 1.2.4.9.6.7.4.3.1 | T1 |  | 1d | 2009-11-02 | 2009-11-02 |  | 76d | 0d | Lutzenberger Wilhelm | 8h |
| 1716 | 1.2.4.9.6.7.4.3.2 | T4 |  | 2d | 2009-11-03 | 2009-11-04 | 1715 | 76d | 0d | Lutzenberger Wilhelm | 16h |
| 1717 | 1.2.4.9.6.7.4.3.3 | T5 | milestone | 0d | 2009-11-04 | 2009-11-04 | 1716 | 76d | 0d |  |  |
| 1718 | 1.2.4.9.6.7.4.3.4 | Monitoring |  | 1d | 2009-11-05 | 2009-11-05 | 1717 | 76d | 0d | Lutzenberger Wilhelm | 8h |
| 1719 | 1.2.4.9.6.7.4.3.5 | Batch TA |  | 1d | 2009-11-06 | 2009-11-06 | 1718 | 76d |  | Lutzenberger Wilhelm | 8h |
| 1720 | 1.2.4.9.6.7.4.4 | Release for Supplier | milestone | 0d | 2009-11-06 | 2009-11-06 | 1714 | 101d |  |  |  |
| 1721 | 1.2.4.9.6.7.4.5 | **TIP Platform Test P1** |  | 7d | 2009-11-09 | 2009-11-17 | 1714 | 76d | 0d |  | 56h |
| 1722 | 1.2.4.9.6.7.4.5.1 | Test1 |  | 2d | 2009-11-09 | 2009-11-10 |  | 76d | 0d | Bu Sigve | 16h |
| 1723 | 1.2.4.9.6.7.4.5.2 | Test2 |  | 2d | 2009-11-11 | 2009-11-12 | 1722 | 76d | 0d | Bu Sigve | 16h |
| 1724 | 1.2.4.9.6.7.4.5.3 | Test3 |  | 2d | 2009-11-13 | 2009-11-16 | 1723 | 76d | 0d | Bu Sigve | 16h |
| 1725 | 1.2.4.9.6.7.4.5.4 | Test4 |  | 1d | 2009-11-17 | 2009-11-17 | 1724 | 76d |  | Bu Sigve | 8h |

Notes:
- 1715: This will be done for: / Scenario1: Single / Scenario2: Clone / Prepare Application: / - Generate Application with OT / - Build Application with QMB / Deploy/Remove Application: / - Deploy Application with SDSS / - Remove Application with SDSS / - Deploy Application with SDSS / Test Application: / - Activate Application (Central Manager or Local Command) / - Start Application (Central Manager or Local Command) / - Run JUNIT Tests for Application / - Stop Application (Central Manager or Local Command) / - De-Activate Application (Central Manager or Local Command) / Remove Application: / - Activate Application (Central Manager or Local Command) / - Start Application (Central Manager or Local Command) / - Remove Application with SDSS
- 1716: This will be done for: / Scenario1: PL: Single BL: Single / Scenario2: PL: Clone BL: Cluster / Prepare Application: / - Generate Application with OT / - Build Application with QMB / Deploy/Remove Application: / - Deploy Application with SDSS / - Remove Application with SDSS / - Deploy Application with SDSS / Test Application: / - Activate Application (Central Manager or Local Command) / - Start Application (Central Manager or Local Command) / - Run JUNIT Tests for Application / - Stop Application (Central Manager or Local Command) / - De-Activate Application (Central Manager or Local Command) / Remove Application: / - Activate Application (Central Manager or Local Command) / - Start Application (Central Manager or Local Command) / - Remove Application with SDSS
- 1717: This will be done for: / Scenario1: PL in Public DMZ: Single / Scenario2: PL in Customer DMZ: Single BL: Single / Scenario3: PL:in CustomerDMZ: Clone BL: Cluster / Prepare Application: / - Generate Application with OT / - Build Application with QMB / Deploy/Remove Application: / - Deploy Application with SDSS / - Remove Application with SDSS / - Deploy Application with SDSS / Test Application: / - Activate Application (Central Manager or Local Command) / - Start Application (Central Manager or Local Command) / - Run JUNIT Tests for Application / - Stop Application (Central Manager or Local Command) / - De-Activate Application (Central Manager or Local Command) / Remove Application: / - Activate Application (Central Manager or Local Command) / - Start Application (Central Manager or Local Command) / - Remove Application with SDSS
- 1718: - Logfile Monitoring / - Logtransport / - Process Monitoring
- 1719: Prepare Application: / - Generate Application with OT / - Build Application with QMB / Deploy/Remove Application: / - Deploy Application with SDSS / - Remove Application with SDSS / - Deploy Application with SDSS / Test Application: / - Activate Application (Central Manager or Local Command) / - Run Test Scripts / - Stop Application (Central Manager or Local Command) / Remove Application: / - Start Application (Central Manager or Local Command) / - Remove Application with SDSS

| ID | WBS | Task | Type | Duration | Start | Finish | Predecessors | Total slack | Free slack | Resources | Work |
| --- | --- | --- | --- | --- | --- | --- | --- | --- | --- | --- | --- |
| 1726 | 1.2.4.9.6.7.4.6 | **Release for CSS PTA** |  | 0d | 2009-11-17 | 2009-11-17 | 1721 | 76d | 0d |  |  |
| 1727 | 1.2.4.9.6.7.4.6.1 | Supplier Release Date | milestone | 0d | 2009-11-17 | 2009-11-17 |  | 76d |  |  |  |
| 1728 | 1.2.4.9.6.7.4.7 | **TIP Platform Test P2** |  | 12d | 2009-11-18 | 2009-12-03 | 1721 | 82d |  |  | 96h |
| 1729 | 1.2.4.9.6.7.4.7.1 | Test1 |  | 3d | 2009-11-18 | 2009-11-20 |  | 82d | 0d | Oberndorfer Richard | 24h |
| 1730 | 1.2.4.9.6.7.4.7.2 | Test2 |  | 4d | 2009-11-23 | 2009-11-26 | 1729 | 82d | 0d | Bu Sigve | 32h |
| 1731 | 1.2.4.9.6.7.4.7.3 | Test3 |  | 2d | 2009-11-27 | 2009-11-30 | 1730 | 82d | 0d | Bu Sigve | 16h |
| 1732 | 1.2.4.9.6.7.4.7.4 | Test4 |  | 3d | 2009-12-01 | 2009-12-03 | 1731 | 82d |  | Bu Sigve | 24h |
| 1733 | 1.2.4.9.6.8 | **CSS 3.0 PTA Tests (based on AR5 / PG2)** |  | 20d | 2009-11-16 | 2009-12-11 |  | 76d |  |  | 160h |
| 1734 | 1.2.4.9.6.8.1 | Installation CSS 3.0 (Start PT Release) |  | 1d | 2009-11-16 | 2009-11-16 | 97FS+1d | 76d | 0d | Bu Sigve | 8h |
| 1735 | 1.2.4.9.6.8.2 | Check Eco Systems, Prepare |  | 1d | 2009-11-17 | 2009-11-17 | 1734 | 76d | 0d | Bu Sigve | 8h |
| 1736 | 1.2.4.9.6.8.3 | **Integration and Deploy** |  | 4d | 2009-11-17 | 2009-11-23 | 1726, 1735 | 76d | 0d |  | 32h |
| 1737 | 1.2.4.9.6.8.3.1 | Delivery Check | milestone | 0d | 2009-11-17 | 2009-11-17 |  | 76d | 0d |  |  |
| 1738 | 1.2.4.9.6.8.3.2 | SDSS Bundling | milestone | 0d | 2009-11-17 | 2009-11-17 | 1737 | 76d | 0d |  |  |
| 1739 | 1.2.4.9.6.8.3.3 | TIP Deploy for Remove Tests |  | 2d | 2009-11-18 | 2009-11-19 | 1738 | 76d | 0d | Lutzenberger Wilhelm | 16h |
| 1740 | 1.2.4.9.6.8.3.4 | TIP Remove Tests |  | 1d | 2009-11-20 | 2009-11-20 | 1739 | 76d | 0d | Lutzenberger Wilhelm | 8h |
| 1741 | 1.2.4.9.6.8.3.5 | TIP Deploy for Test Applications |  | 1d | 2009-11-23 | 2009-11-23 | 1740 | 76d |  | Lutzenberger Wilhelm | 8h |
| 1742 | 1.2.4.9.6.8.4 | **CSS PTA Tests** |  | 14d | 2009-11-24 | 2009-12-11 | 1736 | 76d |  |  | 112h |
| 1743 | 1.2.4.9.6.8.4.1 | T1 |  | 1d | 2009-11-24 | 2009-11-24 |  | 76d | 0d | Bu Sigve | 8h |
| 1744 | 1.2.4.9.6.8.4.2 | T4 |  | 2d | 2009-11-25 | 2009-11-26 | 1743 | 76d | 0d | Bu Sigve | 16h |
| 1745 | 1.2.4.9.6.8.4.3 | T5 |  | 2d | 2009-11-27 | 2009-11-30 | 1744 | 76d | 0d | Bu Sigve | 16h |
| 1746 | 1.2.4.9.6.8.4.4 | Monitoring |  | 2d | 2009-12-01 | 2009-12-02 | 1745 | 76d | 0d | Bu Sigve | 16h |
| 1747 | 1.2.4.9.6.8.4.5 | Batch TA |  | 1d | 2009-12-03 | 2009-12-03 | 1746 | 76d | 0d | Bu Sigve | 8h |
| 1748 | 1.2.4.9.6.8.4.6 | LDOM Move |  | 1d | 2009-12-04 | 2009-12-04 | 1747 | 76d | 0d | Bu Sigve | 8h |
| 1749 | 1.2.4.9.6.8.4.7 | LDOM compatibilty |  | 2d | 2009-12-07 | 2009-12-08 | 1748 | 76d | 0d | Bu Sigve | 16h |
| 1750 | 1.2.4.9.6.8.4.8 | Others |  | 3d | 2009-12-09 | 2009-12-11 | 1749 | 76d |  | Bu Sigve | 24h |

Notes:
- 1743: This will be done for: / Scenario1: Single / Scenario2: Clone / Prepare Application: / - Generate Application with OT / - Build Application with QMB / Deploy/Remove Application: / - Deploy Application with SDSS / - Remove Application with SDSS / - Deploy Application with SDSS / Test Application: / - Activate Application (Central Manager or Local Command) / - Start Application (Central Manager or Local Command) / - Run JUNIT Tests for Application / - Stop Application (Central Manager or Local Command) / - De-Activate Application (Central Manager or Local Command) / Remove Application: / - Activate Application (Central Manager or Local Command) / - Start Application (Central Manager or Local Command) / - Remove Application with SDSS
- 1744: This will be done for: / Scenario1: PL: Single BL: Single / Scenario2: PL: Clone BL: Cluster / Prepare Application: / - Generate Application with OT / - Build Application with QMB / Deploy/Remove Application: / - Deploy Application with SDSS / - Remove Application with SDSS / - Deploy Application with SDSS / Test Application: / - Activate Application (Central Manager or Local Command) / - Start Application (Central Manager or Local Command) / - Run JUNIT Tests for Application / - Stop Application (Central Manager or Local Command) / - De-Activate Application (Central Manager or Local Command) / Remove Application: / - Activate Application (Central Manager or Local Command) / - Start Application (Central Manager or Local Command) / - Remove Application with SDSS
- 1745: This will be done for: / Scenario1: PL in Public DMZ: Single / Scenario2: PL in Customer DMZ: Single BL: Single / Scenario3: PL:in CustomerDMZ: Clone BL: Cluster / Prepare Application: / - Generate Application with OT / - Build Application with QMB / Deploy/Remove Application: / - Deploy Application with SDSS / - Remove Application with SDSS / - Deploy Application with SDSS / Test Application: / - Activate Application (Central Manager or Local Command) / - Start Application (Central Manager or Local Command) / - Run JUNIT Tests for Application / - Stop Application (Central Manager or Local Command) / - De-Activate Application (Central Manager or Local Command) / Remove Application: / - Activate Application (Central Manager or Local Command) / - Start Application (Central Manager or Local Command) / - Remove Application with SDSS
- 1746: - Logfile Monitoring / - Logtransport / - Process Monitoring
- 1747: Prepare Application: / - Generate Application with OT / - Build Application with QMB / Deploy/Remove Application: / - Deploy Application with SDSS / - Remove Application with SDSS / - Deploy Application with SDSS / Test Application: / - Activate Application (Central Manager or Local Command) / - Run Test Scripts / - Stop Application (Central Manager or Local Command) / Remove Application: / - Start Application (Central Manager or Local Command) / - Remove Application with SDSS

| ID | WBS | Task | Type | Duration | Start | Finish | Predecessors | Total slack | Free slack | Constraint | Resources | Work |
| --- | --- | --- | --- | --- | --- | --- | --- | --- | --- | --- | --- | --- |
| 1751 | 1.2.4.9.6.9 | **PG3 (based on 3.0)** |  | 35d | 2009-11-20 | 2010-01-11 |  | 0d |  |  |  | 416h |
| 1752 | 1.2.4.9.6.9.1 | Supplier Delivery | milestone | 0d | 2009-11-20 | 2009-11-20 |  | 0d |  | must start on 2009-11-20 |  |  |
| 1753 | 1.2.4.9.6.9.2 | Installation CSS 3.0 (Start PT Release) |  | 1d | 2009-11-20 | 2009-11-20 | 97FS+1d, 1752 | 91d |  |  | Bu Sigve | 8h |
| 1754 | 1.2.4.9.6.9.3 | **TIP-D** |  | 8d | 2009-11-20 | 2009-12-01 | 1752 | 84d |  |  |  | 64h |
| 1755 | 1.2.4.9.6.9.3.1 | Meetings |  | 0.5d | 2009-11-20 | 2009-11-20 |  | 84d | 0d |  | Oezgen Oya | 4h |
| 1756 | 1.2.4.9.6.9.3.2 | Build and Install ZipFile |  | 0.5d | 2009-11-20 | 2009-11-20 | 1755 | 84d | 0d |  | Oezgen Oya | 4h |
| 1757 | 1.2.4.9.6.9.3.3 | T1 Tests |  | 3d | 2009-11-23 | 2009-11-25 | 1756 | 84d | 0d |  | Oezgen Oya | 24h |
| 1758 | 1.2.4.9.6.9.3.4 | T4 Tests |  | 4d | 2009-11-26 | 2009-12-01 | 1757 | 84d |  |  | Oezgen Oya | 32h |
| 1759 | 1.2.4.9.6.9.4 | **Install on IAT Environment** |  | 30d | 2009-11-23 | 2010-01-05 |  | 61d |  |  |  | 240h |
| 1760 | 1.2.4.9.6.9.4.1 | **Integration and Deploy** |  | 3d | 2009-11-23 | 2009-11-25 | 1752FS+1d | 61d | 0d |  |  | 24h |
| 1761 | 1.2.4.9.6.9.4.1.1 | Delivery Check |  | 0.5d | 2009-11-23 | 2009-11-23 |  | 61d | 0d |  | Bu Sigve | 4h |
| 1762 | 1.2.4.9.6.9.4.1.2 | SDSS Bundling |  | 0.5d | 2009-11-23 | 2009-11-23 | 1761 | 61d | 0d |  | Bu Sigve | 4h |
| 1763 | 1.2.4.9.6.9.4.1.3 | TIP Deploy for Remove Tests |  | 1d | 2009-11-24 | 2009-11-24 | 1762 | 61d | 0d |  | Bu Sigve | 8h |
| 1764 | 1.2.4.9.6.9.4.1.4 | TIP Remove Tests |  | 0.5d | 2009-11-25 | 2009-11-25 | 1763 | 61d | 0d |  | Bu Sigve | 4h |
| 1765 | 1.2.4.9.6.9.4.1.5 | TIP Deploy for Test Applications |  | 0.5d | 2009-11-25 | 2009-11-25 | 1764 | 61d |  |  | Bu Sigve | 4h |
| 1766 | 1.2.4.9.6.9.4.2 | **TIP Integration Test** |  | 7d | 2009-11-26 | 2009-12-04 | 1760 | 61d | 0d |  |  | 56h |
| 1767 | 1.2.4.9.6.9.4.2.1 | T1 |  | 1d | 2009-11-26 | 2009-11-26 |  | 61d | 0d |  | Lutzenberger Wilhelm | 8h |
| 1768 | 1.2.4.9.6.9.4.2.2 | T4 |  | 2d | 2009-11-27 | 2009-11-30 | 1767 | 61d | 0d |  | Lutzenberger Wilhelm | 16h |
| 1769 | 1.2.4.9.6.9.4.2.3 | T5 |  | 2d | 2009-12-01 | 2009-12-02 | 1768 | 61d | 0d |  | Lutzenberger Wilhelm | 16h |
| 1770 | 1.2.4.9.6.9.4.2.4 | Monitoring |  | 1d | 2009-12-03 | 2009-12-03 | 1769 | 61d | 0d |  | Lutzenberger Wilhelm | 8h |
| 1771 | 1.2.4.9.6.9.4.2.5 | Batch TA |  | 1d | 2009-12-04 | 2009-12-04 | 1770 | 61d |  |  | Lutzenberger Wilhelm | 8h |
| 1772 | 1.2.4.9.6.9.4.3 | **Release for Supplier** |  | 0d | 2009-12-04 | 2009-12-04 | 1766 | 61d | 0d |  |  |  |
| 1773 | 1.2.4.9.6.9.4.3.1 | Supplier Release Date | milestone | 0d | 2009-12-04 | 2009-12-04 |  | 61d |  |  |  |  |
| 1774 | 1.2.4.9.6.9.4.4 | **TIP Platform Test P1** |  | 10d | 2009-12-07 | 2009-12-18 | 1772 | 61d | 0d |  |  | 80h |
| 1775 | 1.2.4.9.6.9.4.4.1 | Test1 |  | 2d | 2009-12-07 | 2009-12-08 |  | 61d | 0d |  | Hermann René | 16h |
| 1776 | 1.2.4.9.6.9.4.4.2 | Test2 |  | 2d | 2009-12-09 | 2009-12-10 | 1775 | 61d | 0d |  | Hermann René | 16h |
| 1777 | 1.2.4.9.6.9.4.4.3 | Test3 |  | 2d | 2009-12-11 | 2009-12-14 | 1776 | 61d | 0d |  | Hermann René | 16h |
| 1778 | 1.2.4.9.6.9.4.4.4 | Test4 |  | 4d | 2009-12-15 | 2009-12-18 | 1777 | 61d |  |  | Hermann René | 32h |

Notes:
- 1767: This will be done for: / Scenario1: Single / Scenario2: Clone / Prepare Application: / - Generate Application with OT / - Build Application with QMB / Deploy/Remove Application: / - Deploy Application with SDSS / - Remove Application with SDSS / - Deploy Application with SDSS / Test Application: / - Activate Application (Central Manager or Local Command) / - Start Application (Central Manager or Local Command) / - Run JUNIT Tests for Application / - Stop Application (Central Manager or Local Command) / - De-Activate Application (Central Manager or Local Command) / Remove Application: / - Activate Application (Central Manager or Local Command) / - Start Application (Central Manager or Local Command) / - Remove Application with SDSS
- 1768: This will be done for: / Scenario1: PL: Single BL: Single / Scenario2: PL: Clone BL: Cluster / Prepare Application: / - Generate Application with OT / - Build Application with QMB / Deploy/Remove Application: / - Deploy Application with SDSS / - Remove Application with SDSS / - Deploy Application with SDSS / Test Application: / - Activate Application (Central Manager or Local Command) / - Start Application (Central Manager or Local Command) / - Run JUNIT Tests for Application / - Stop Application (Central Manager or Local Command) / - De-Activate Application (Central Manager or Local Command) / Remove Application: / - Activate Application (Central Manager or Local Command) / - Start Application (Central Manager or Local Command) / - Remove Application with SDSS
- 1769: This will be done for: / Scenario1: PL in Public DMZ: Single / Scenario2: PL in Customer DMZ: Single BL: Single / Scenario3: PL:in CustomerDMZ: Clone BL: Cluster / Prepare Application: / - Generate Application with OT / - Build Application with QMB / Deploy/Remove Application: / - Deploy Application with SDSS / - Remove Application with SDSS / - Deploy Application with SDSS / Test Application: / - Activate Application (Central Manager or Local Command) / - Start Application (Central Manager or Local Command) / - Run JUNIT Tests for Application / - Stop Application (Central Manager or Local Command) / - De-Activate Application (Central Manager or Local Command) / Remove Application: / - Activate Application (Central Manager or Local Command) / - Start Application (Central Manager or Local Command) / - Remove Application with SDSS
- 1770: - Logfile Monitoring / - Logtransport / - Process Monitoring
- 1771: Prepare Application: / - Generate Application with OT / - Build Application with QMB / Deploy/Remove Application: / - Deploy Application with SDSS / - Remove Application with SDSS / - Deploy Application with SDSS / Test Application: / - Activate Application (Central Manager or Local Command) / - Run Test Scripts / - Stop Application (Central Manager or Local Command) / Remove Application: / - Start Application (Central Manager or Local Command) / - Remove Application with SDSS

| ID | WBS | Task | Type | Duration | Start | Finish | Predecessors | Total slack | Free slack | Constraint | Resources | Work |
| --- | --- | --- | --- | --- | --- | --- | --- | --- | --- | --- | --- | --- |
| 1779 | 1.2.4.9.6.9.4.5 | **Release for CSS PTA** |  | 0d | 2009-12-18 | 2009-12-18 | 1774 | 71d |  |  |  |  |
| 1780 | 1.2.4.9.6.9.4.5.1 | Supplier Release Date | milestone | 0d | 2009-12-18 | 2009-12-18 |  | 71d |  |  |  |  |
| 1781 | 1.2.4.9.6.9.4.6 | **TIP Platform Test P1** |  | 10d | 2009-12-21 | 2010-01-05 | 1774 | 61d |  |  |  | 80h |
| 1782 | 1.2.4.9.6.9.4.6.1 | Test1 |  | 2d | 2009-12-21 | 2009-12-22 |  | 61d | 0d |  | Lutzenberger Wilhelm | 16h |
| 1783 | 1.2.4.9.6.9.4.6.2 | Test2 |  | 2d | 2009-12-23 | 2009-12-24 | 1782 | 61d | 0d |  | Lutzenberger Wilhelm | 16h |
| 1784 | 1.2.4.9.6.9.4.6.3 | Test3 |  | 3d | 2009-12-28 | 2009-12-30 | 1783 | 61d | 0d |  | Lutzenberger Wilhelm | 24h |
| 1785 | 1.2.4.9.6.9.4.6.4 | Test4 |  | 3d | 2009-12-31 | 2010-01-05 | 1784 | 61d |  |  | Lutzenberger Wilhelm | 24h |
| 1786 | 1.2.4.9.6.9.5 | **Install on IT Environment** |  | 14d | 2009-12-21 | 2010-01-11 |  | 57d |  |  |  | 104h |
| 1787 | 1.2.4.9.6.9.5.1 | Install CSS 3.0 (Start PA Release) |  | 1d | 2009-12-21 | 2009-12-21 | 98FS+1d | 57d | 0d |  | Bu Sigve | 8h |
| 1788 | 1.2.4.9.6.9.5.2 | Deploy |  | 2d | 2009-12-22 | 2009-12-23 | 1787 | 57d | 0d |  | Bu Sigve | 16h |
| 1789 | 1.2.4.9.6.9.5.3 | **Pilot readiness tests** |  | 10d | 2009-12-24 | 2010-01-08 | 1788 | 57d | 0d |  |  | 80h |
| 1790 | 1.2.4.9.6.9.5.3.1 | Test1 |  | 2d | 2009-12-24 | 2009-12-28 |  | 57d | 0d |  | Hermann René | 16h |
| 1791 | 1.2.4.9.6.9.5.3.2 | Test2 |  | 2d | 2009-12-29 | 2009-12-30 | 1790 | 57d | 0d |  | Hermann René | 16h |
| 1792 | 1.2.4.9.6.9.5.3.3 | Test3 |  | 3d | 2009-12-31 | 2010-01-05 | 1791 | 57d | 0d |  | Hermann René | 24h |
| 1793 | 1.2.4.9.6.9.5.3.4 | Test4 |  | 3d | 2010-01-06 | 2010-01-08 | 1792 | 57d |  |  | Hermann René | 24h |
| 1794 | 1.2.4.9.6.9.5.4 | **Release for PILOT (EXCEPTION)** |  | 0d | 2010-01-11 | 2010-01-11 | 1789FS+1d | 57d |  |  |  |  |
| 1795 | 1.2.4.9.6.9.5.4.1 | Pilot Release Date for TC1 | milestone | 0d | 2010-01-11 | 2010-01-11 |  | 57d |  |  |  |  |
| 1796 | 1.2.4.9.6.10 | **RC1 (based on 3.0)** |  | 39d | 2009-12-18 | 2010-02-12 |  | 0d |  |  |  | 440h |
| 1797 | 1.2.4.9.6.10.1 | Supplier Delivery | milestone | 0d | 2009-12-18 | 2009-12-18 |  | 0d |  | must start on 2009-12-18 |  |  |
| 1798 | 1.2.4.9.6.10.2 | **TIP-D** |  | 8d | 2009-12-18 | 2009-12-30 | 1797 | 64d |  |  |  | 64h |
| 1799 | 1.2.4.9.6.10.2.1 | Meetings |  | 0.5d | 2009-12-18 | 2009-12-18 |  | 64d | 0d |  | Oezgen Oya | 4h |
| 1800 | 1.2.4.9.6.10.2.2 | Build and Install Setup.exe |  | 0.5d | 2009-12-18 | 2009-12-18 | 1799 | 64d | 0d |  | Oezgen Oya | 4h |
| 1801 | 1.2.4.9.6.10.2.3 | T1 Tests |  | 3d | 2009-12-21 | 2009-12-23 | 1800 | 64d | 0d |  | Oezgen Oya | 24h |
| 1802 | 1.2.4.9.6.10.2.4 | T4 Tests |  | 4d | 2009-12-24 | 2009-12-30 | 1801 | 64d |  |  | Oezgen Oya | 32h |

| ID | WBS | Task | Type | Duration | Start | Finish | Predecessors | Total slack | Free slack | Resources | Work | Text23 | Text30 |
| --- | --- | --- | --- | --- | --- | --- | --- | --- | --- | --- | --- | --- | --- |
| 1803 | 1.2.4.9.6.10.3 | **Install on IAT Environment** |  | 39d | 2009-12-18 | 2010-02-12 | 1797 | 33d |  |  | 304h |  |  |
| 1804 | 1.2.4.9.6.10.3.1 | Install CSS 3.0 (Start PA Release) |  | 1d | 2009-12-18 | 2009-12-18 |  | 33d | 0d |  |  |  |  |
| 1805 | 1.2.4.9.6.10.3.2 | **Integration and Deploy** |  | 3d | 2009-12-21 | 2009-12-23 | 1797FS+1d, 1804 | 33d | 0d |  | 24h |  |  |
| 1806 | 1.2.4.9.6.10.3.2.1 | Delivery Check |  | 0.5d | 2009-12-21 | 2009-12-21 |  | 33d | 0d | Bu Sigve | 4h |  |  |
| 1807 | 1.2.4.9.6.10.3.2.2 | SDSS Bundling | milestone | 0d | 2009-12-21 | 2009-12-21 | 1806 | 33d | 0d |  |  |  |  |
| 1808 | 1.2.4.9.6.10.3.2.3 | TIP Deploy for Remove Tests |  | 1d | 2009-12-21 | 2009-12-22 | 1807 | 33d | 0d | Bu Sigve | 8h |  |  |
| 1809 | 1.2.4.9.6.10.3.2.4 | TIP Remove Tests |  | 1d | 2009-12-22 | 2009-12-23 | 1808 | 33d | 0d | Bu Sigve | 8h |  |  |
| 1810 | 1.2.4.9.6.10.3.2.5 | TIP Deploy for Test Applications |  | 0.5d | 2009-12-23 | 2009-12-23 | 1809 | 33d |  | Bu Sigve | 4h |  |  |
| 1811 | 1.2.4.9.6.10.3.3 | QG3 | milestone | 0d | 2009-12-23 | 2009-12-23 | 1805 | 33d | 0d |  |  | medium | (2) Normal |
| 1812 | 1.2.4.9.6.10.3.4 | **TIP Integration Test** |  | 7d | 2009-12-24 | 2010-01-05 | 1811 | 33d | 0d |  | 56h |  |  |
| 1813 | 1.2.4.9.6.10.3.4.1 | T1 |  | 1d | 2009-12-24 | 2009-12-24 |  | 33d | 0d | Oberndorfer Richard | 8h |  |  |
| 1814 | 1.2.4.9.6.10.3.4.2 | T4 |  | 2d | 2009-12-28 | 2009-12-29 | 1813 | 33d | 0d | Oberndorfer Richard | 16h |  |  |
| 1815 | 1.2.4.9.6.10.3.4.3 | T5 |  | 2d | 2009-12-30 | 2009-12-31 | 1814 | 33d | 0d | Oberndorfer Richard | 16h |  |  |
| 1816 | 1.2.4.9.6.10.3.4.4 | Monitoring |  | 1d | 2010-01-04 | 2010-01-04 | 1815 | 33d | 0d | Oberndorfer Richard | 8h |  |  |
| 1817 | 1.2.4.9.6.10.3.4.5 | Batch TA |  | 1d | 2010-01-05 | 2010-01-05 | 1816 | 33d |  | Oberndorfer Richard | 8h |  |  |
| 1818 | 1.2.4.9.6.10.3.5 | **Release for Supplier** |  | 0d | 2010-01-05 | 2010-01-05 |  | 53d |  |  |  |  |  |
| 1819 | 1.2.4.9.6.10.3.5.1 | Supplier Release Date | milestone | 0d | 2010-01-05 | 2010-01-05 | 1812 | 53d | 4d |  |  |  |  |
| 1820 | 1.2.4.9.6.10.3.6 | **TIP Platform Test P1** |  | 18d | 2010-01-06 | 2010-01-29 | 1812 | 33d | 0d |  | 144h |  |  |
| 1821 | 1.2.4.9.6.10.3.6.1 | Test1 |  | 4d | 2010-01-06 | 2010-01-11 |  | 33d | 0d | Hermann René | 32h |  |  |
| 1822 | 1.2.4.9.6.10.3.6.2 | Test2 |  | 5d | 2010-01-12 | 2010-01-18 | 1821 | 33d | 0d | Hermann René | 40h |  |  |
| 1823 | 1.2.4.9.6.10.3.6.3 | Test3 |  | 4d | 2010-01-19 | 2010-01-22 | 1822 | 33d | 0d | Hermann René | 32h |  |  |
| 1824 | 1.2.4.9.6.10.3.6.4 | Test4 |  | 5d | 2010-01-25 | 2010-01-29 | 1823 | 33d |  | Hermann René | 40h |  |  |
| 1825 | 1.2.4.9.6.10.3.7 | **International Tests** |  | 10d | 2010-02-01 | 2010-02-12 | 1820 | 33d |  |  | 80h |  |  |
| 1826 | 1.2.4.9.6.10.3.7.1 | Test1 |  | 3d | 2010-02-01 | 2010-02-03 |  | 33d | 0d | Hermann René | 24h |  |  |
| 1827 | 1.2.4.9.6.10.3.7.2 | Test2 |  | 3d | 2010-02-04 | 2010-02-08 | 1826 | 33d | 0d | Hermann René | 24h |  |  |
| 1828 | 1.2.4.9.6.10.3.7.3 | Test3 |  | 2d | 2010-02-09 | 2010-02-10 | 1827 | 33d | 0d | Hermann René | 16h |  |  |
| 1829 | 1.2.4.9.6.10.3.7.4 | Test4 |  | 2d | 2010-02-11 | 2010-02-12 | 1828 | 33d |  | Hermann René | 16h |  |  |

Notes:
- 1813: This will be done for: / Scenario1: Single / Scenario2: Clone / Prepare Application: / - Generate Application with OT / - Build Application with QMB / Deploy/Remove Application: / - Deploy Application with SDSS / - Remove Application with SDSS / - Deploy Application with SDSS / Test Application: / - Activate Application (Central Manager or Local Command) / - Start Application (Central Manager or Local Command) / - Run JUNIT Tests for Application / - Stop Application (Central Manager or Local Command) / - De-Activate Application (Central Manager or Local Command) / Remove Application: / - Activate Application (Central Manager or Local Command) / - Start Application (Central Manager or Local Command) / - Remove Application with SDSS
- 1814: This will be done for: / Scenario1: PL: Single BL: Single / Scenario2: PL: Clone BL: Cluster / Prepare Application: / - Generate Application with OT / - Build Application with QMB / Deploy/Remove Application: / - Deploy Application with SDSS / - Remove Application with SDSS / - Deploy Application with SDSS / Test Application: / - Activate Application (Central Manager or Local Command) / - Start Application (Central Manager or Local Command) / - Run JUNIT Tests for Application / - Stop Application (Central Manager or Local Command) / - De-Activate Application (Central Manager or Local Command) / Remove Application: / - Activate Application (Central Manager or Local Command) / - Start Application (Central Manager or Local Command) / - Remove Application with SDSS
- 1815: This will be done for: / Scenario1: PL in Public DMZ: Single / Scenario2: PL in Customer DMZ: Single BL: Single / Scenario3: PL:in CustomerDMZ: Clone BL: Cluster / Prepare Application: / - Generate Application with OT / - Build Application with QMB / Deploy/Remove Application: / - Deploy Application with SDSS / - Remove Application with SDSS / - Deploy Application with SDSS / Test Application: / - Activate Application (Central Manager or Local Command) / - Start Application (Central Manager or Local Command) / - Run JUNIT Tests for Application / - Stop Application (Central Manager or Local Command) / - De-Activate Application (Central Manager or Local Command) / Remove Application: / - Activate Application (Central Manager or Local Command) / - Start Application (Central Manager or Local Command) / - Remove Application with SDSS
- 1816: - Logfile Monitoring / - Logtransport / - Process Monitoring
- 1817: Prepare Application: / - Generate Application with OT / - Build Application with QMB / Deploy/Remove Application: / - Deploy Application with SDSS / - Remove Application with SDSS / - Deploy Application with SDSS / Test Application: / - Activate Application (Central Manager or Local Command) / - Run Test Scripts / - Stop Application (Central Manager or Local Command) / Remove Application: / - Start Application (Central Manager or Local Command) / - Remove Application with SDSS

| ID | WBS | Task | Type | Duration | Start | Finish | Predecessors | Total slack | Free slack | Constraint | Resources | Work |
| --- | --- | --- | --- | --- | --- | --- | --- | --- | --- | --- | --- | --- |
| 1830 | 1.2.4.9.6.10.4 | **Install on IT Environment** |  | 9d | 2010-01-11 | 2010-01-21 |  | 49d |  |  |  | 72h |
| 1831 | 1.2.4.9.6.10.4.1 | Install CSS 3.0 (GA Release) |  | 1d | 2010-01-11 | 2010-01-11 | 99FS+1d | 49d | 0d |  | Bu Sigve | 8h |
| 1832 | 1.2.4.9.6.10.4.2 | Deploy |  | 2d | 2010-01-12 | 2010-01-13 | 1819, 1831 | 49d | 0d |  | Bu Sigve | 16h |
| 1833 | 1.2.4.9.6.10.4.3 | **Pilot readiness tests** |  | 6d | 2010-01-14 | 2010-01-21 | 1832 | 49d | 0d |  |  | 48h |
| 1834 | 1.2.4.9.6.10.4.3.1 | Test1 |  | 1d | 2010-01-14 | 2010-01-14 |  | 49d | 0d |  | Lutzenberger Wilhelm | 8h |
| 1835 | 1.2.4.9.6.10.4.3.2 | Test2 |  | 2d | 2010-01-15 | 2010-01-18 | 1834 | 49d | 0d |  | Lutzenberger Wilhelm | 16h |
| 1836 | 1.2.4.9.6.10.4.3.3 | Test3 |  | 1d | 2010-01-19 | 2010-01-19 | 1835 | 49d | 0d |  | Lutzenberger Wilhelm | 8h |
| 1837 | 1.2.4.9.6.10.4.3.4 | Test4 |  | 2d | 2010-01-20 | 2010-01-21 | 1836 | 49d |  |  | Lutzenberger Wilhelm | 16h |
| 1838 | 1.2.4.9.6.10.4.4 | **Release for PILOT (EXCEPTION)** |  | 0d | 2010-01-21 | 2010-01-21 | 1833 | 49d |  |  |  |  |
| 1839 | 1.2.4.9.6.10.4.4.1 | Pilot Release Date for RC1 | milestone | 0d | 2010-01-21 | 2010-01-21 |  | 49d |  |  |  |  |
| 1840 | 1.2.4.9.6.11 | **RC2 (based on 3.0)** |  | 41d | 2010-01-22 | 2010-03-19 |  | 0d |  |  |  | 544h |
| 1841 | 1.2.4.9.6.11.1 | Supplier Delivery | milestone | 0d | 2010-01-22 | 2010-01-22 |  | 0d |  | must start on 2010-01-22 |  |  |
| 1842 | 1.2.4.9.6.11.2 | **TIP-D** |  | 8d | 2010-01-25 | 2010-02-03 | 1841FS+1d | 40d |  |  |  | 64h |
| 1843 | 1.2.4.9.6.11.2.1 | Meetings |  | 0.5d | 2010-01-25 | 2010-01-25 |  | 40d | 0d |  | Oezgen Oya | 4h |
| 1844 | 1.2.4.9.6.11.2.2 | Build and Install Setup.exe |  | 0.5d | 2010-01-25 | 2010-01-25 | 1843 | 40d | 0d |  | Oezgen Oya | 4h |
| 1845 | 1.2.4.9.6.11.2.3 | T1 Tests |  | 3d | 2010-01-26 | 2010-01-28 | 1844 | 40d | 0d |  | Oezgen Oya | 24h |
| 1846 | 1.2.4.9.6.11.2.4 | T4 Tests |  | 4d | 2010-01-29 | 2010-02-03 | 1845 | 40d |  |  | Oezgen Oya | 32h |
| 1847 | 1.2.4.9.6.11.3 | **Install on IAT Environment** |  | 41d | 2010-01-22 | 2010-03-19 | 1841 | 8d |  |  |  | 320h |
| 1848 | 1.2.4.9.6.11.3.1 | Install CSS 3.0 (GA Release) |  | 1d | 2010-01-22 | 2010-01-22 |  | 8d | 0d |  |  |  |
| 1849 | 1.2.4.9.6.11.3.2 | **Integration and Deploy** |  | 3d | 2010-01-25 | 2010-01-27 | 1841FS+1d, 1848 | 8d | 0d |  |  | 24h |
| 1850 | 1.2.4.9.6.11.3.2.1 | Delivery Check |  | 0.5d | 2010-01-25 | 2010-01-25 |  | 8d | 0d |  | Bu Sigve | 4h |
| 1851 | 1.2.4.9.6.11.3.2.2 | SDSS Bundling | milestone | 0d | 2010-01-25 | 2010-01-25 | 1850 | 8d | 0d |  |  |  |
| 1852 | 1.2.4.9.6.11.3.2.3 | TIP Deploy for Remove Tests |  | 1d | 2010-01-25 | 2010-01-26 | 1851 | 8d | 0d |  | Bu Sigve | 8h |
| 1853 | 1.2.4.9.6.11.3.2.4 | TIP Remove Tests |  | 1d | 2010-01-26 | 2010-01-27 | 1852 | 8d | 0d |  | Bu Sigve | 8h |
| 1854 | 1.2.4.9.6.11.3.2.5 | TIP Deploy for Test Applications |  | 0.5d | 2010-01-27 | 2010-01-27 | 1853 | 8d |  |  | Bu Sigve | 4h |

| ID | WBS | Task | Type | Duration | Start | Finish | Predecessors | Total slack | Free slack | Resources | Work |
| --- | --- | --- | --- | --- | --- | --- | --- | --- | --- | --- | --- |
| 1855 | 1.2.4.9.6.11.3.3 | **TIP Integration Test** |  | 7d | 2010-01-28 | 2010-02-05 | 1849 | 8d | 0d |  | 56h |
| 1856 | 1.2.4.9.6.11.3.3.1 | T1 |  | 1d | 2010-01-28 | 2010-01-28 |  | 8d | 0d | Lutzenberger Wilhelm | 8h |
| 1857 | 1.2.4.9.6.11.3.3.2 | T4 |  | 2d | 2010-01-29 | 2010-02-01 | 1856 | 8d | 0d | Lutzenberger Wilhelm | 16h |
| 1858 | 1.2.4.9.6.11.3.3.3 | T5 |  | 2d | 2010-02-02 | 2010-02-03 | 1857 | 8d | 0d | Lutzenberger Wilhelm | 16h |
| 1859 | 1.2.4.9.6.11.3.3.4 | Monitoring |  | 1d | 2010-02-04 | 2010-02-04 | 1858 | 8d | 0d | Lutzenberger Wilhelm | 8h |
| 1860 | 1.2.4.9.6.11.3.3.5 | Batch TA |  | 1d | 2010-02-05 | 2010-02-05 | 1859 | 8d |  | Lutzenberger Wilhelm | 8h |
| 1861 | 1.2.4.9.6.11.3.4 | **Release for Supplier** |  | 0d | 2010-02-05 | 2010-02-05 | 1855 | 23d | 5d |  |  |
| 1862 | 1.2.4.9.6.11.3.4.1 | Supplier Release Date | milestone | 0d | 2010-02-05 | 2010-02-05 |  | 23d | 0d |  |  |
| 1863 | 1.2.4.9.6.11.3.5 | **TIP Platform Test P1** |  | 20d | 2010-02-08 | 2010-03-05 | 1855 | 8d | 0d |  | 160h |
| 1864 | 1.2.4.9.6.11.3.5.1 | Test1 |  | 5d | 2010-02-08 | 2010-02-12 |  | 8d | 0d | Oberndorfer Richard | 40h |
| 1865 | 1.2.4.9.6.11.3.5.2 | Test2 |  | 5d | 2010-02-15 | 2010-02-19 | 1864 | 8d | 0d | Oberndorfer Richard | 40h |
| 1866 | 1.2.4.9.6.11.3.5.3 | Test3 |  | 5d | 2010-02-22 | 2010-02-26 | 1865 | 8d | 0d | Oberndorfer Richard | 40h |
| 1867 | 1.2.4.9.6.11.3.5.4 | Test4 |  | 5d | 2010-03-01 | 2010-03-05 | 1866 | 8d |  | Oberndorfer Richard | 40h |
| 1868 | 1.2.4.9.6.11.3.6 | **International Tests** |  | 10d | 2010-03-08 | 2010-03-19 | 1863 | 8d |  |  | 80h |
| 1869 | 1.2.4.9.6.11.3.6.1 | Test1 |  | 3d | 2010-03-08 | 2010-03-10 |  | 8d | 0d | Oberndorfer Richard | 24h |
| 1870 | 1.2.4.9.6.11.3.6.2 | Test2 |  | 3d | 2010-03-11 | 2010-03-15 | 1869 | 8d | 0d | Oberndorfer Richard | 24h |
| 1871 | 1.2.4.9.6.11.3.6.3 | Test3 |  | 2d | 2010-03-16 | 2010-03-17 | 1870 | 8d | 0d | Oberndorfer Richard | 16h |
| 1872 | 1.2.4.9.6.11.3.6.4 | Test4 |  | 2d | 2010-03-18 | 2010-03-19 | 1871 | 8d |  | Oberndorfer Richard | 16h |
| 1873 | 1.2.4.9.6.11.4 | **Install on IT Environment** |  | 10d | 2010-02-08 | 2010-02-19 | 1855 | 23d |  |  | 80h |
| 1874 | 1.2.4.9.6.11.4.1 | **ZRH** |  | 5d | 2010-02-08 | 2010-02-12 |  | 23d | 0d |  | 40h |
| 1875 | 1.2.4.9.6.11.4.1.1 | Deploy |  | 1d | 2010-02-08 | 2010-02-08 | 1862 | 23d | 0d | Bu Sigve | 8h |
| 1876 | 1.2.4.9.6.11.4.1.2 | **Pilot readiness tests** |  | 4d | 2010-02-09 | 2010-02-12 | 1875 | 23d | 0d |  | 32h |
| 1877 | 1.2.4.9.6.11.4.1.2.1 | Test1 |  | 1d | 2010-02-09 | 2010-02-09 |  | 23d | 0d | Lutzenberger Wilhelm | 8h |
| 1878 | 1.2.4.9.6.11.4.1.2.2 | Test2 |  | 1d | 2010-02-10 | 2010-02-10 | 1877 | 23d | 0d | Lutzenberger Wilhelm | 8h |
| 1879 | 1.2.4.9.6.11.4.1.2.3 | Test3 |  | 1d | 2010-02-11 | 2010-02-11 | 1878 | 23d | 0d | Lutzenberger Wilhelm | 8h |
| 1880 | 1.2.4.9.6.11.4.1.2.4 | Test4 |  | 1d | 2010-02-12 | 2010-02-12 | 1879 | 23d |  | Lutzenberger Wilhelm | 8h |

Notes:
- 1856: This will be done for: / Scenario1: Single / Scenario2: Clone / Prepare Application: / - Generate Application with OT / - Build Application with QMB / Deploy/Remove Application: / - Deploy Application with SDSS / - Remove Application with SDSS / - Deploy Application with SDSS / Test Application: / - Activate Application (Central Manager or Local Command) / - Start Application (Central Manager or Local Command) / - Run JUNIT Tests for Application / - Stop Application (Central Manager or Local Command) / - De-Activate Application (Central Manager or Local Command) / Remove Application: / - Activate Application (Central Manager or Local Command) / - Start Application (Central Manager or Local Command) / - Remove Application with SDSS
- 1857: This will be done for: / Scenario1: PL: Single BL: Single / Scenario2: PL: Clone BL: Cluster / Prepare Application: / - Generate Application with OT / - Build Application with QMB / Deploy/Remove Application: / - Deploy Application with SDSS / - Remove Application with SDSS / - Deploy Application with SDSS / Test Application: / - Activate Application (Central Manager or Local Command) / - Start Application (Central Manager or Local Command) / - Run JUNIT Tests for Application / - Stop Application (Central Manager or Local Command) / - De-Activate Application (Central Manager or Local Command) / Remove Application: / - Activate Application (Central Manager or Local Command) / - Start Application (Central Manager or Local Command) / - Remove Application with SDSS
- 1858: This will be done for: / Scenario1: PL in Public DMZ: Single / Scenario2: PL in Customer DMZ: Single BL: Single / Scenario3: PL:in CustomerDMZ: Clone BL: Cluster / Prepare Application: / - Generate Application with OT / - Build Application with QMB / Deploy/Remove Application: / - Deploy Application with SDSS / - Remove Application with SDSS / - Deploy Application with SDSS / Test Application: / - Activate Application (Central Manager or Local Command) / - Start Application (Central Manager or Local Command) / - Run JUNIT Tests for Application / - Stop Application (Central Manager or Local Command) / - De-Activate Application (Central Manager or Local Command) / Remove Application: / - Activate Application (Central Manager or Local Command) / - Start Application (Central Manager or Local Command) / - Remove Application with SDSS
- 1859: - Logfile Monitoring / - Logtransport / - Process Monitoring
- 1860: Prepare Application: / - Generate Application with OT / - Build Application with QMB / Deploy/Remove Application: / - Deploy Application with SDSS / - Remove Application with SDSS / - Deploy Application with SDSS / Test Application: / - Activate Application (Central Manager or Local Command) / - Run Test Scripts / - Stop Application (Central Manager or Local Command) / Remove Application: / - Start Application (Central Manager or Local Command) / - Remove Application with SDSS

| ID | WBS | Task | Type | Duration | Start | Finish | Predecessors | Total slack | Free slack | Resources | Work | Text23 | Text30 |
| --- | --- | --- | --- | --- | --- | --- | --- | --- | --- | --- | --- | --- | --- |
| 1881 | 1.2.4.9.6.11.4.1.3 | **Release for PILOT** |  | 0d | 2010-02-12 | 2010-02-12 | 1876 | 23d | 0d |  |  |  |  |
| 1882 | 1.2.4.9.6.11.4.1.3.1 | Pilot Release Date for RC2 | milestone | 0d | 2010-02-12 | 2010-02-12 |  | 23d |  |  |  |  |  |
| 1883 | 1.2.4.9.6.11.4.2 | **International** |  | 5d | 2010-02-15 | 2010-02-19 | 1874 | 28d |  |  | 40h |  |  |
| 1884 | 1.2.4.9.6.11.4.2.1 | Deploy |  | 1d | 2010-02-15 | 2010-02-15 |  | 28d | 0d | Bu Sigve | 8h |  |  |
| 1885 | 1.2.4.9.6.11.4.2.2 | **Pilot readiness tests** |  | 4d | 2010-02-16 | 2010-02-19 | 1884 | 28d | 0d |  | 32h |  |  |
| 1886 | 1.2.4.9.6.11.4.2.2.1 | Test1 |  | 1d | 2010-02-16 | 2010-02-16 |  | 28d | 0d | Hermann René | 8h |  |  |
| 1887 | 1.2.4.9.6.11.4.2.2.2 | Test2 |  | 1d | 2010-02-17 | 2010-02-17 | 1886 | 28d | 0d | Hermann René | 8h |  |  |
| 1888 | 1.2.4.9.6.11.4.2.2.3 | Test3 |  | 1d | 2010-02-18 | 2010-02-18 | 1887 | 28d | 0d | Hermann René | 8h |  |  |
| 1889 | 1.2.4.9.6.11.4.2.2.4 | Test4 |  | 1d | 2010-02-19 | 2010-02-19 | 1888 | 28d |  | Hermann René | 8h |  |  |
| 1890 | 1.2.4.9.6.11.4.2.3 | **Release for PILOT** |  | 0d | 2010-02-19 | 2010-02-19 | 1885 | 28d |  |  |  |  |  |
| 1891 | 1.2.4.9.6.11.4.2.3.1 | Pilot Release Date for RC2 | milestone | 0d | 2010-02-19 | 2010-02-19 |  | 28d |  |  |  |  |  |
| 1892 | 1.2.4.9.6.11.5 | **Install on PTA Environment** |  | 10d | 2010-02-12 | 2010-02-26 | 1881 | 23d |  |  | 80h |  |  |
| 1893 | 1.2.4.9.6.11.5.1 | QG4 | milestone | 0d | 2010-02-12 | 2010-02-12 |  | 23d | 0d |  |  | medium | (2) Normal |
| 1894 | 1.2.4.9.6.11.5.2 | **ZRH** |  | 5d | 2010-02-15 | 2010-02-19 | 1893 | 23d |  |  | 40h |  |  |
| 1895 | 1.2.4.9.6.11.5.2.1 | Deploy |  | 1d | 2010-02-15 | 2010-02-15 | 1861 | 23d | 0d | Bu Sigve | 8h |  |  |
| 1896 | 1.2.4.9.6.11.5.2.2 | **Pilot readiness tests** |  | 4d | 2010-02-16 | 2010-02-19 | 1895 | 23d | 0d |  | 32h |  |  |
| 1897 | 1.2.4.9.6.11.5.2.2.1 | Test1 |  | 1d | 2010-02-16 | 2010-02-16 |  | 23d | 0d | Lutzenberger Wilhelm | 8h |  |  |
| 1898 | 1.2.4.9.6.11.5.2.2.2 | Test2 |  | 1d | 2010-02-17 | 2010-02-17 | 1897 | 23d | 0d | Lutzenberger Wilhelm | 8h |  |  |
| 1899 | 1.2.4.9.6.11.5.2.2.3 | Test3 |  | 1d | 2010-02-18 | 2010-02-18 | 1898 | 23d | 0d | Lutzenberger Wilhelm | 8h |  |  |
| 1900 | 1.2.4.9.6.11.5.2.2.4 | Test4 |  | 1d | 2010-02-19 | 2010-02-19 | 1899 | 23d |  | Lutzenberger Wilhelm | 8h |  |  |
| 1901 | 1.2.4.9.6.11.5.2.3 | **Release for PILOT** |  | 0d | 2010-02-19 | 2010-02-19 | 1896 | 23d | 0d |  |  |  |  |
| 1902 | 1.2.4.9.6.11.5.2.3.1 | Pilot Release Date for RC2 | milestone | 0d | 2010-02-19 | 2010-02-19 |  | 23d |  |  |  |  |  |
| 1903 | 1.2.4.9.6.11.5.3 | **International** |  | 5d | 2010-02-22 | 2010-02-26 | 1901, 1893 | 23d |  |  | 40h |  |  |
| 1904 | 1.2.4.9.6.11.5.3.1 | Deploy |  | 1d | 2010-02-22 | 2010-02-22 |  | 23d | 0d | Bu Sigve | 8h |  |  |

| ID | WBS | Task | Type | Duration | Start | Finish | Predecessors | Total slack | Free slack | Constraint | Resources | Work | Text23 | Text30 |
| --- | --- | --- | --- | --- | --- | --- | --- | --- | --- | --- | --- | --- | --- | --- |
| 1905 | 1.2.4.9.6.11.5.3.2 | **Pilot readiness tests** |  | 4d | 2010-02-23 | 2010-02-26 | 1904 | 23d | 0d |  |  | 32h |  |  |
| 1906 | 1.2.4.9.6.11.5.3.2.1 | Test1 |  | 1d | 2010-02-23 | 2010-02-23 |  | 23d | 0d |  | Hermann René | 8h |  |  |
| 1907 | 1.2.4.9.6.11.5.3.2.2 | Test2 |  | 1d | 2010-02-24 | 2010-02-24 | 1906 | 23d | 0d |  | Hermann René | 8h |  |  |
| 1908 | 1.2.4.9.6.11.5.3.2.3 | Test3 |  | 1d | 2010-02-25 | 2010-02-25 | 1907 | 23d | 0d |  | Hermann René | 8h |  |  |
| 1909 | 1.2.4.9.6.11.5.3.2.4 | Test4 |  | 1d | 2010-02-26 | 2010-02-26 | 1908 | 23d |  |  | Hermann René | 8h |  |  |
| 1910 | 1.2.4.9.6.11.5.3.3 | **Release for PILOT** |  | 0d | 2010-02-26 | 2010-02-26 | 1905 | 23d |  |  |  |  |  |  |
| 1911 | 1.2.4.9.6.11.5.3.3.1 | Pilot Release Date for RC2 | milestone | 0d | 2010-02-26 | 2010-02-26 |  | 23d | 0d |  |  |  |  |  |
| 1912 | 1.2.4.9.6.11.5.3.4 | QG5 | milestone | 0d | 2010-02-26 | 2010-02-26 | 1911 | 23d |  |  |  |  | medium | (2) Normal |
| 1913 | 1.2.4.10 | **JAP Engineering** |  | 132d? | 2009-09-23 | 2010-03-29 |  | 2d |  |  |  | 6539h | medium | (2) Normal |
| 1914 | 1.2.4.10.1 | **Reporting** |  | 129d? | 2009-09-28 | 2010-03-29 |  | 0d |  |  |  | 27h | medium | (2) Normal |
| 1915 | 1.2.4.10.1.1 | **Preparation Stream Status Report** |  | 129d? | 2009-09-28 | 2010-03-29 |  | 0d |  |  |  | 27h | medium | (2) Normal |
| 1916 | 1.2.4.10.1.1.1 | Preparation Stream Status Report W39 |  | 1d? | 2009-09-28 | 2009-09-28 |  | 0d |  | as late as possible | Telgheider Jörg [12.5%] | 1h | medium | (2) Normal |
| 1917 | 1.2.4.10.1.1.2 | Preparation Stream Status Report W40 |  | 1d? | 2009-10-05 | 2009-10-05 |  | 0d |  | as late as possible | Telgheider Jörg [12.5%] | 1h | medium | (2) Normal |
| 1918 | 1.2.4.10.1.1.3 | Preparation Stream Status Report W41 |  | 1d? | 2009-10-12 | 2009-10-12 |  | 0d |  | as late as possible | Telgheider Jörg [12.5%] | 1h | medium | (2) Normal |
| 1919 | 1.2.4.10.1.1.4 | Preparation Stream Status Report W42 |  | 1d? | 2009-10-19 | 2009-10-19 |  | 0d |  | as late as possible | Telgheider Jörg [12.5%] | 1h | medium | (2) Normal |
| 1920 | 1.2.4.10.1.1.5 | Preparation Stream Status Report W43 |  | 1d? | 2009-10-26 | 2009-10-26 |  | 0d |  | as late as possible | Telgheider Jörg [12.5%] | 1h | medium | (2) Normal |
| 1921 | 1.2.4.10.1.1.6 | Preparation Stream Status Report W44 |  | 1d? | 2009-11-02 | 2009-11-02 |  | 0d |  | as late as possible | Telgheider Jörg [12.5%] | 1h | medium | (2) Normal |
| 1922 | 1.2.4.10.1.1.7 | Preparation Stream Status Report W45 |  | 1d? | 2009-11-09 | 2009-11-09 |  | 0d |  | as late as possible | Telgheider Jörg [12.5%] | 1h | medium | (2) Normal |
| 1923 | 1.2.4.10.1.1.8 | Preparation Stream Status Report W46 |  | 1d? | 2009-11-16 | 2009-11-16 |  | 0d |  | as late as possible | Telgheider Jörg [12.5%] | 1h | medium | (2) Normal |
| 1924 | 1.2.4.10.1.1.9 | Preparation Stream Status Report W47 |  | 1d? | 2009-11-23 | 2009-11-23 |  | 0d |  | as late as possible | Telgheider Jörg [12.5%] | 1h | medium | (2) Normal |
| 1925 | 1.2.4.10.1.1.10 | Preparation Stream Status Report W48 |  | 1d? | 2009-11-30 | 2009-11-30 |  | 0d |  | as late as possible | Telgheider Jörg [12.5%] | 1h | medium | (2) Normal |
| 1926 | 1.2.4.10.1.1.11 | Preparation Stream Status Report W49 |  | 1d? | 2009-12-07 | 2009-12-07 |  | 0d |  | as late as possible | Telgheider Jörg [12.5%] | 1h | medium | (2) Normal |
| 1927 | 1.2.4.10.1.1.12 | Preparation Stream Status Report W50 |  | 1d? | 2009-12-14 | 2009-12-14 |  | 0d |  | as late as possible | Telgheider Jörg [12.5%] | 1h | medium | (2) Normal |
| 1928 | 1.2.4.10.1.1.13 | Preparation Stream Status Report W51 |  | 1d? | 2009-12-21 | 2009-12-21 |  | 0d |  | as late as possible | Telgheider Jörg [12.5%] | 1h | medium | (2) Normal |
| 1929 | 1.2.4.10.1.1.14 | Preparation Stream Status Report W52 |  | 1d? | 2009-12-28 | 2009-12-28 |  | 0d |  | as late as possible | Telgheider Jörg [12.5%] | 1h | medium | (2) Normal |
| 1930 | 1.2.4.10.1.1.15 | Preparation Stream Status Report W53 |  | 1d? | 2010-01-04 | 2010-01-04 |  | 0d |  | as late as possible | Telgheider Jörg [12.5%] | 1h | medium | (2) Normal |
| 1931 | 1.2.4.10.1.1.16 | Preparation Stream Status Report W01 |  | 1d? | 2010-01-11 | 2010-01-11 |  | 0d |  | as late as possible | Telgheider Jörg [12.5%] | 1h | medium | (2) Normal |
| 1932 | 1.2.4.10.1.1.17 | Preparation Stream Status Report W02 |  | 1d? | 2010-01-18 | 2010-01-18 |  | 0d |  | as late as possible | Telgheider Jörg [12.5%] | 1h | medium | (2) Normal |
| 1933 | 1.2.4.10.1.1.18 | Preparation Stream Status Report W03 |  | 1d? | 2010-01-25 | 2010-01-25 |  | 0d |  | as late as possible | Telgheider Jörg [12.5%] | 1h | medium | (2) Normal |
| 1934 | 1.2.4.10.1.1.19 | Preparation Stream Status Report W04 |  | 1d? | 2010-02-01 | 2010-02-01 |  | 0d |  | as late as possible | Telgheider Jörg [12.5%] | 1h | medium | (2) Normal |
| 1935 | 1.2.4.10.1.1.20 | Preparation Stream Status Report W05 |  | 1d? | 2010-02-08 | 2010-02-08 |  | 0d |  | as late as possible | Telgheider Jörg [12.5%] | 1h | medium | (2) Normal |
| 1936 | 1.2.4.10.1.1.21 | Preparation Stream Status Report W06 |  | 1d? | 2010-02-15 | 2010-02-15 |  | 0d |  | as late as possible | Telgheider Jörg [12.5%] | 1h | medium | (2) Normal |
| 1937 | 1.2.4.10.1.1.22 | Preparation Stream Status Report W07 |  | 1d? | 2010-02-22 | 2010-02-22 |  | 0d |  | as late as possible | Telgheider Jörg [12.5%] | 1h | medium | (2) Normal |
| 1938 | 1.2.4.10.1.1.23 | Preparation Stream Status Report W08 |  | 1d? | 2010-03-01 | 2010-03-01 |  | 0d |  | as late as possible | Telgheider Jörg [12.5%] | 1h | medium | (2) Normal |
| 1939 | 1.2.4.10.1.1.24 | Preparation Stream Status Report W09 |  | 1d? | 2010-03-08 | 2010-03-08 |  | 0d |  | as late as possible | Telgheider Jörg [12.5%] | 1h | medium | (2) Normal |
| 1940 | 1.2.4.10.1.1.25 | Preparation Stream Status Report W10 |  | 1d? | 2010-03-15 | 2010-03-15 |  | 0d |  | as late as possible | Telgheider Jörg [12.5%] | 1h | medium | (2) Normal |
| 1941 | 1.2.4.10.1.1.26 | Preparation Stream Status Report W11 |  | 1d? | 2010-03-22 | 2010-03-22 |  | 0d |  | as late as possible | Telgheider Jörg [12.5%] | 1h | medium | (2) Normal |
| 1942 | 1.2.4.10.1.1.27 | Preparation Stream Status Report W12 |  | 1d? | 2010-03-29 | 2010-03-29 |  | 0d |  | as late as possible | Telgheider Jörg [12.5%] | 1h | medium | (2) Normal |

| ID | WBS | Task | Duration | Start | Finish | Predecessors | Total slack | Constraint | Resources | Work | Text23 | Text30 | Text28 |
| --- | --- | --- | --- | --- | --- | --- | --- | --- | --- | --- | --- | --- | --- |
| 1943 | 1.2.4.10.2 | **Phase preparation stream** | 2d? | 2009-10-15 | 2009-10-19 |  | 114.88d |  |  | 16h | medium | (2) Normal |  |
| 1944 | 1.2.4.10.2.1 | Detail planning of the phase | 2d? | 2009-10-15 | 2009-10-19 | 1154 | 114.88d |  | Telgheider Jörg | 16h | medium | (2) Normal |  |
| 1945 | 1.2.4.10.3 | **Lifecycle Enhancements** | 22d? | 2009-09-23 | 2009-10-23 |  | 112d |  |  | 352h | medium | (2) Normal | Eng-WBS 1 |
| 1946 | 1.2.4.10.3.1 | **TC components updated in Lifecycle (prepared)** | 9d? | 2009-09-23 | 2009-10-05 |  | 125d |  |  | 224h | medium | (2) Normal | Eng-WBS 1.1 |
| 1947 | 1.2.4.10.3.1.1 | 2252 Lifecycle upgrade OT | 9d? | 2009-09-23 | 2009-10-05 |  | 125d | finish no earlier than 2009-09-25 | Janosevic Dejan | 72h | medium | (2) Normal | Eng-WBS 1.1.1 |
| 1948 | 1.2.4.10.3.1.2 | 2528 Lifecycle upgrade Testapp | 8d? | 2009-09-23 | 2009-10-02 |  | 126d | finish no earlier than 2009-09-25 | Paulicke Stephan | 64h | medium | (2) Normal | Eng-WBS 1.1.2 |
| 1949 | 1.2.4.10.3.1.3 | 2529 Lifecycle upgrade Downtimeindicator | 1d? | 2009-09-24 | 2009-09-25 |  | 132d | finish no earlier than 2009-09-25 | Piol Domenico | 8h | medium | (2) Normal | Eng-WBS 1.1.3 |
| 1950 | 1.2.4.10.3.1.4 | 2527 Lifecycle upgrade VCoP | 2d? | 2009-09-23 | 2009-09-25 |  | 132d | finish no earlier than 2009-09-25 | Thurner Rubert | 16h | medium | (2) Normal | Eng-WBS 1.1.4 |
| 1951 | 1.2.4.10.3.1.5 | 2524 Lifecycle upgrade QMB | 5d? | 2009-09-23 | 2009-09-29 |  | 129d | finish no earlier than 2009-09-25 | Paulicke Stephan | 40h | medium | (2) Normal | Eng-WBS 1.1.5 |
| 1952 | 1.2.4.10.3.1.6 | 2537 Build TIPL for JAP AR 6 | 3d? | 2009-09-23 | 2009-09-25 |  | 131d | finish no earlier than 2009-09-25 | Piol Domenico | 24h | medium | (2) Normal | Eng-WBS 1.1.6 |
| 1953 | 1.2.4.10.3.2 | **TC components final updated on TIP** | 5d? | 2009-10-16 | 2009-10-23 |  | 112d |  |  | 40h | medium | (2) Normal | Eng-WBS 1.2 |
| 1954 | 1.2.4.10.3.2.1 | 2539 Migrate CBS to JAP AR 6 | 5d? | 2009-10-16 | 2009-10-23 |  | 112d | finish no earlier than 2009-10-23 | Piol Domenico | 40h | medium | (2) Normal | Eng-WBS 1.2.1 |
| 1955 | 1.2.4.10.3.3 | **TC components migrated on JAP 6** | 10d? | 2009-09-23 | 2009-10-06 |  | 124d |  |  | 88h | medium | (2) Normal | Eng-WBS 1.3 |
| 1956 | 1.2.4.10.3.3.1 | 2547 Migrate CM to JAP AR 6 | 10d? | 2009-09-23 | 2009-10-06 |  | 124d |  | Thurner Rubert | 80h | medium | (2) Normal | Eng-WBS 1.3.1 |
| 1957 | 1.2.4.10.3.3.2 | 2545 Migrate OT to JAP AR 6 | 1d? | 2009-09-23 | 2009-09-23 |  | 133d |  | Janosevic Dejan | 8h | medium | (2) Normal | Eng-WBS 1.3.2 |
| 1958 | 1.2.4.10.4 | **Transaction Plattform** | 22d? | 2009-09-23 | 2009-10-23 |  | 112d |  |  | 380h | medium | (2) Normal | Eng-WBS 2 |
| 1959 | 1.2.4.10.4.1 | **TC analysis/design, implementation & test** | 22d? | 2009-09-23 | 2009-10-23 |  | 112d |  |  | 380h | medium | (2) Normal | Eng-WBS 2.1 |
| 1960 | 1.2.4.10.4.1.1 | 2499 VCoP XA related for QMB | 10d? | 2009-10-09 | 2009-10-23 |  | 112d | finish no earlier than 2009-10-23 | Thurner Rubert | 80h | medium | (2) Normal | Eng-WBS 2.1.1 |
| 1961 | 1.2.4.10.4.1.2 | 2412 OT Multi Datasource at least 2 | 1d? | 2009-10-22 | 2009-10-23 |  | 112d | finish no earlier than 2009-10-23 | Janosevic Dejan | 8h | medium | (2) Normal | Eng-WBS 2.1.2 |
| 1962 | 1.2.4.10.4.1.3 | 2411 OT featuring XA flags | 15d? | 2009-10-02 | 2009-10-23 |  | 112d | finish no earlier than 2009-10-23 | Janosevic Dejan | 120h | medium | (2) Normal | Eng-WBS 2.1.3 |
| 1963 | 1.2.4.10.4.1.4 | 2391 VCoP JDBC connection defaults | 1d? | 2009-10-22 | 2009-10-23 |  | 112d | finish no earlier than 2009-10-23 | Thurner Rubert | 8h | medium | (2) Normal | Eng-WBS 2.1.4 |
| 1964 | 1.2.4.10.4.1.5 | 2390 WLS JMS pool shrinking configurable | 1d? | 2009-10-22 | 2009-10-23 |  | 112d | finish no earlier than 2009-10-23 | Janosevic Dejan [50%] | 4h | medium | (2) Normal | Eng-WBS 2.1.5 |
| 1965 | 1.2.4.10.4.1.6 | 2390 WLS JMS pool shrinking configurable | 1d? | 2009-10-22 | 2009-10-23 |  | 112d | finish no earlier than 2009-10-23 | Thurner Rubert | 8h | medium | (2) Normal | Eng-WBS 2.1.6 |
| 1966 | 1.2.4.10.4.1.7 | 2384 WLS Trx config more threads | 1d? | 2009-10-22 | 2009-10-23 |  | 112d | finish no earlier than 2009-10-23 | Janosevic Dejan [50%] | 4h | medium | (2) Normal | Eng-WBS 2.1.7 |
| 1967 | 1.2.4.10.4.1.8 | 2384 WLS Trx config more threads | 1.5d? | 2009-10-21 | 2009-10-23 |  | 112d | finish no earlier than 2009-10-23 | Thurner Rubert | 12h | medium | (2) Normal | Eng-WBS 2.1.8 |
| 1968 | 1.2.4.10.4.1.9 | 2383 VCoP Trx config open files | 1d? | 2009-10-22 | 2009-10-23 |  | 112d | finish no earlier than 2009-10-23 | Thurner Rubert [50%] | 4h | medium | (2) Normal | Eng-WBS 2.1.9 |
| 1969 | 1.2.4.10.4.1.10 | 2382 VCoP Trx config update value | 1d? | 2009-10-22 | 2009-10-23 |  | 112d | finish no earlier than 2009-10-23 | Thurner Rubert | 8h | medium | (2) Normal | Eng-WBS 2.1.10 |
| 1970 | 1.2.4.10.4.1.11 | 2381 WLS Trx XA JDBC parameter | 1d? | 2009-10-22 | 2009-10-23 |  | 112d | finish no earlier than 2009-10-23 | Janosevic Dejan [50%] | 4h | medium | (2) Normal | Eng-WBS 2.1.11 |
| 1971 | 1.2.4.10.4.1.12 | 2381 WLS Trx XA JDBC parameter | 1.5d? | 2009-10-21 | 2009-10-23 |  | 112d | finish no earlier than 2009-10-23 | Thurner Rubert | 12h | medium | (2) Normal | Eng-WBS 2.1.12 |
| 1972 | 1.2.4.10.4.1.13 | 2368 WLS Trx TLog ownership | 1d? | 2009-10-22 | 2009-10-23 |  | 112d | finish no earlier than 2009-10-23 | Janosevic Dejan [50%] | 4h | medium | (2) Normal | Eng-WBS 2.1.13 |
| 1973 | 1.2.4.10.4.1.14 | 2361 WLS Max resource request | 1d? | 2009-10-22 | 2009-10-23 |  | 112d | finish no earlier than 2009-10-23 | Janosevic Dejan [50%] | 4h | medium | (2) Normal | Eng-WBS 2.1.14 |
| 1974 | 1.2.4.10.4.1.15 | 2361 WLS Max resource request | 1d? | 2009-10-22 | 2009-10-23 |  | 112d | finish no earlier than 2009-10-23 | Thurner Rubert [50%] | 4h | medium | (2) Normal | Eng-WBS 2.1.15 |
| 1975 | 1.2.4.10.4.1.16 | 2360 VCoP Heuristic completions | 1d? | 2009-10-22 | 2009-10-23 |  | 112d | finish no earlier than 2009-10-23 | Thurner Rubert [50%] | 4h | medium | (2) Normal | Eng-WBS 2.1.16 |
| 1976 | 1.2.4.10.4.1.17 | 2050 OT Domain type enhancement for XA | 5d? | 2009-10-16 | 2009-10-23 |  | 112d | finish no earlier than 2009-10-23 | Janosevic Dejan | 40h | medium | (2) Normal | Eng-WBS 2.1.17 |
| 1977 | 1.2.4.10.4.1.18 | 2038 VCoP Trx log directory | 1d? | 2009-10-22 | 2009-10-23 |  | 112d | finish no earlier than 2009-10-23 | Thurner Rubert | 8h | medium | (2) Normal | Eng-WBS 2.1.18 |
| 1978 | 1.2.4.10.4.1.19 | 2037 WLS Trx Conf for transaction logfile | 1d? | 2009-09-23 | 2009-09-23 |  | 133d |  | Piol Domenico | 8h | medium | (2) Normal | Eng-WBS 2.1.19 |
| 1979 | 1.2.4.10.4.1.20 | 2037 WLS Trx Conf for transaction logfile | 1d? | 2009-10-22 | 2009-10-23 |  | 112d | finish no earlier than 2009-10-23 | Janosevic Dejan [50%] | 4h | medium | (2) Normal | Eng-WBS 2.1.20 |
| 1980 | 1.2.4.10.4.1.21 | 1482 OT has to allow MQ/JMS XA | 4d? | 2009-10-19 | 2009-10-23 |  | 112d | finish no earlier than 2009-10-23 | Janosevic Dejan | 32h | medium | (2) Normal | Eng-WBS 2.1.21 |

| ID | WBS | Task | Duration | Start | Finish | Total slack | Constraint | Resources | Work | Text23 | Text28 | Text30 |
| --- | --- | --- | --- | --- | --- | --- | --- | --- | --- | --- | --- | --- |
| 1981 | 1.2.4.10.5 | **Portal Enhancement** | 42d? | 2009-09-23 | 2009-11-20 | 92d |  |  | 280h | medium | Eng-WBS 3 | (2) Normal |
| 1982 | 1.2.4.10.5.1 | **TC analysis/design, implementation & test** | 42d? | 2009-09-23 | 2009-11-20 | 92d |  |  | 280h | medium | Eng-WBS 3.1 | (2) Normal |
| 1983 | 1.2.4.10.5.1.1 | 2503 WSRP 2.0 support | 1d? | 2009-09-23 | 2009-09-23 | 133d |  | Janosevic Dejan | 8h | medium | Eng-WBS 3.1.1 | (2) Normal |
| 1984 | 1.2.4.10.5.1.2 | 2503 WSRP 2.0 support | 1d? | 2009-09-23 | 2009-09-23 | 133d |  | Thurner Rubert | 8h | medium | Eng-WBS 3.1.2 | (2) Normal |
| 1985 | 1.2.4.10.5.1.3 | 2493 CBS enable portal DB data propagation | 4d? | 2009-09-23 | 2009-09-28 | 130d |  | Piol Domenico | 32h | medium | Eng-WBS 3.1.3 | (2) Normal |
| 1986 | 1.2.4.10.5.1.4 | 2470 VCoP TC support for portal admin console | 1d? | 2009-09-23 | 2009-09-23 | 133d |  | Thurner Rubert | 8h | medium | Eng-WBS 3.1.4 | (2) Normal |
| 1987 | 1.2.4.10.5.1.5 | 2469 Customization portal config data staging | 1d? | 2009-09-23 | 2009-09-23 | 133d |  | Neumann Gabriele | 8h | medium | Eng-WBS 3.1.5 | (2) Normal |
| 1988 | 1.2.4.10.5.1.6 | 2465 OT routing T4 procedures | 1d? | 2009-09-23 | 2009-09-23 | 133d |  | Janosevic Dejan | 8h | medium | Eng-WBS 3.1.6 | (2) Normal |
| 1989 | 1.2.4.10.5.1.7 | 2436 QMB support for portalizing web apps | 1d? | 2009-09-23 | 2009-09-23 | 133d |  | Neumann Gabriele | 8h | medium | Eng-WBS 3.1.7 | (2) Normal |
| 1990 | 1.2.4.10.5.1.8 | 2435 QMB support for shared libs | 10d? | 2009-11-06 | 2009-11-20 | 92d | finish no earlier than 2009-11-20 | Paulicke Stephan | 80h | medium | Eng-WBS 3.1.8 | (2) Normal |
| 1991 | 1.2.4.10.5.1.9 | 2288 Clustering of portal servers | 1d? | 2009-09-23 | 2009-09-23 | 133d |  | Neumann Gabriele | 8h | medium | Eng-WBS 3.1.9 | (2) Normal |
| 1992 | 1.2.4.10.5.1.10 | 2153 Testapp enhance fuctionality for portal | 10d? | 2009-11-06 | 2009-11-20 | 92d | finish no earlier than 2009-11-20 | Paulicke Stephan | 80h | medium | Eng-WBS 3.1.10 | (2) Normal |
| 1993 | 1.2.4.10.5.1.11 | 2088 QMB enhancement for dev. support | 1d? | 2009-09-23 | 2009-09-23 | 133d |  | Neumann Gabriele | 8h | medium | Eng-WBS 3.1.11 | (2) Normal |
| 1994 | 1.2.4.10.5.1.12 | 2087 VCoP WSRP monitor support | 1d? | 2009-09-23 | 2009-09-23 | 133d |  | Thurner Rubert | 8h | medium | Eng-WBS 3.1.12 | (2) Normal |
| 1995 | 1.2.4.10.5.1.13 | 1891 TIP automate initial setup of portal DB | 1d? | 2009-09-23 | 2009-09-23 | 133d |  | Powischer Kolja | 8h | medium | Eng-WBS 3.1.13 | (2) Normal |
| 1996 | 1.2.4.10.5.1.14 | 1786 provide a Tool generating XACML&LDIFT | 1d? | 2009-09-23 | 2009-09-23 | 133d |  | Thurner Rubert | 8h | medium | Eng-WBS 3.1.14 | (2) Normal |
| 1997 | 1.2.4.10.6 | **SOA** | 15d? | 2009-10-30 | 2009-11-20 | 92d |  |  | 280h | medium | Eng-WBS 4 | (2) Normal |
| 1998 | 1.2.4.10.6.1 | **TC analysis/design, implementation & test** | 15d? | 2009-10-30 | 2009-11-20 | 92d |  |  | 280h | medium | Eng-WBS 4.1 | (2) Normal |
| 1999 | 1.2.4.10.6.1.1 | 2546 VCoP CM, register a WSRP service | 15d? | 2009-10-30 | 2009-11-20 | 92d | finish no earlier than 2009-11-20 | Thurner Rubert | 120h | medium | Eng-WBS 4.1.1 | (2) Normal |
| 2000 | 1.2.4.10.6.1.2 | 2533 OT WSRP routing | 10d? | 2009-11-06 | 2009-11-20 | 92d | finish no earlier than 2009-11-20 | Janosevic Dejan | 80h | medium | Eng-WBS 4.1.2 | (2) Normal |
| 2001 | 1.2.4.10.6.1.3 | 1818 Web Service Provider using SAML | 5d? | 2009-11-13 | 2009-11-20 | 92d | finish no earlier than 2009-11-20 | Piol Domenico | 40h | medium | Eng-WBS 4.1.3 | (2) Normal |
| 2002 | 1.2.4.10.6.1.4 | 1818 Web Service Provider using SAML | 5d? | 2009-11-13 | 2009-11-20 | 92d | finish no earlier than 2009-11-20 | Paulicke Stephan | 40h | medium | Eng-WBS 4.1.4 | (2) Normal |
| 2003 | 1.2.4.10.7 | **Security Enhancement** | 2d? | 2009-10-21 | 2009-10-23 | 112d |  |  | 24h | medium | Eng-WBS 5 | (2) Normal |
| 2004 | 1.2.4.10.7.1 | **TC analysis/design, implementation & test** | 2d? | 2009-10-21 | 2009-10-23 | 112d |  |  | 24h | medium | Eng-WBS 5.1 | (2) Normal |
| 2005 | 1.2.4.10.7.1.1 | 2248 OT app specific certificate | 1d? | 2009-10-22 | 2009-10-23 | 112d | finish no earlier than 2009-10-23 | Janosevic Dejan | 8h | medium | Eng-WBS 5.1.1 | (2) Normal |
| 2006 | 1.2.4.10.7.1.2 | 2237 VCoP WLS console access | 2d? | 2009-10-21 | 2009-10-23 | 112d | finish no earlier than 2009-10-23 | Thurner Rubert | 16h | medium | Eng-WBS 5.1.2 | (2) Normal |

| ID | WBS | Task | Duration | Start | Finish | Total slack | Constraint | Resources | Work | Text23 | Text28 | Text30 |
| --- | --- | --- | --- | --- | --- | --- | --- | --- | --- | --- | --- | --- |
| 2007 | 1.2.4.10.8 | **Synchronus Services Enhancement** | 3d? | 2009-09-23 | 2009-09-25 | 131d |  |  | 24h | medium | Eng-WBS 6 | (2) Normal |
| 2008 | 1.2.4.10.8.1 | **TC analysis/design, implementation & test** | 3d? | 2009-09-23 | 2009-09-25 | 131d |  |  | 24h | medium | Eng-WBS 6.1 | (2) Normal |
| 2009 | 1.2.4.10.8.1.1 | 2536 CM T3S location transparency | 3d? | 2009-09-23 | 2009-09-25 | 131d | finish no earlier than 2009-09-25 | Thurner Rubert | 24h | medium | Eng-WBS 6.1.1 | (2) Normal |
| 2010 | 1.2.4.10.9 | **Plattform Maintanance** | 42d? | 2009-09-23 | 2009-11-20 | 92d |  |  | 280h | medium | Eng-WBS 7 | (2) Normal |
| 2011 | 1.2.4.10.9.1 | **TC analysis/design, implementation & test** | 42d? | 2009-09-23 | 2009-11-20 | 92d |  |  | 280h | medium | Eng-WBS 7.1 | (2) Normal |
| 2012 | 1.2.4.10.9.1.1 | 2554 Testapp needds to use eclipse link | 5d? | 2009-11-13 | 2009-11-20 | 92d | finish no earlier than 2009-11-20 | Paulicke Stephan | 40h | medium | Eng-WBS 7.1.1 | (2) Normal |
| 2013 | 1.2.4.10.9.1.2 | 2534 CM Upgrade support for WLS cluster | 1d? | 2009-09-23 | 2009-09-23 | 133d |  | Thurner Rubert | 8h | medium | Eng-WBS 7.1.2 | (2) Normal |
| 2014 | 1.2.4.10.9.1.3 | 2461 CM 2.2 doesn't hold persist imported app | 1d? | 2009-09-23 | 2009-09-23 | 133d |  | Thurner Rubert | 8h | medium | Eng-WBS 7.1.3 | (2) Normal |
| 2015 | 1.2.4.10.9.1.4 | 2460 VCoP one CMS | 1d? | 2009-09-24 | 2009-09-25 | 132d | finish no earlier than 2009-09-25 | Thurner Rubert | 8h | medium | Eng-WBS 7.1.4 | (2) Normal |
| 2016 | 1.2.4.10.9.1.5 | 2459 OT one CMS create content dir | 2d? | 2009-09-23 | 2009-09-25 | 132d | finish no earlier than 2009-09-25 | Janosevic Dejan | 16h | medium | Eng-WBS 7.1.5 | (2) Normal |
| 2017 | 1.2.4.10.9.1.6 | 2458 OT one CMS link | 1d? | 2009-09-24 | 2009-09-25 | 132d | finish no earlier than 2009-09-25 | Janosevic Dejan | 8h | medium | Eng-WBS 7.1.6 | (2) Normal |
| 2018 | 1.2.4.10.9.1.7 | 2306 Testapp AURA helper testcase | 1d? | 2009-09-23 | 2009-09-23 | 133d |  | Paulicke Stephan | 8h | medium | Eng-WBS 7.1.7 | (2) Normal |
| 2019 | 1.2.4.10.9.1.8 | 2243 OT and VCoP should disable http for PT | 1d? | 2009-09-24 | 2009-09-25 | 132d | finish no earlier than 2009-09-25 | Thurner Rubert | 8h | medium | Eng-WBS 7.1.8 | (2) Normal |
| 2020 | 1.2.4.10.9.1.9 | 1866 TIP-D support on vFIT | 1d? | 2009-09-23 | 2009-09-23 | 133d |  | Powischer Kolja | 8h | medium | Eng-WBS 7.1.9 | (2) Normal |
| 2021 | 1.2.4.10.9.1.10 | 1803 OT billing account | 18d? | 2009-10-27 | 2009-11-20 | 92d | finish no earlier than 2009-11-20 | Janosevic Dejan | 144h | medium | Eng-WBS 7.1.10 | (2) Normal |
| 2022 | 1.2.4.10.9.1.11 | 1516 Testapp testcase for JCB executer | 3d? | 2009-09-23 | 2009-09-25 | 131d | finish no earlier than 2009-09-25 | Paulicke Stephan | 24h | medium | Eng-WBS 7.1.11 | (2) Normal |
| 2023 | 1.2.4.10.10 | **Development Environment (Workplace)** | 60d? | 2009-09-23 | 2009-12-15 | 74d |  |  | 1584h | medium | Eng-WBS 8 | (2) Normal |
| 2024 | 1.2.4.10.10.1 | **TC analysis/design, implementation & test** | 60d? | 2009-09-23 | 2009-12-15 | 74d |  |  | 1584h | medium | Eng-WBS 8.1 | (2) Normal |
| 2025 | 1.2.4.10.10.1.1 | 2494 Support for portal environment | 1d? | 2009-09-23 | 2009-09-23 | 133d |  | Neumann Gabriele | 8h | medium | Eng-WBS 8.1.1 | (2) Normal |
| 2026 | 1.2.4.10.10.1.2 | 2450 QMB should provide a target | 1d? | 2009-09-23 | 2009-09-23 | 133d |  | Trindler Markus | 8h | medium | Eng-WBS 8.1.2 | (2) Normal |
| 2027 | 1.2.4.10.10.1.3 | 2418 JAP project migration tool to AR 6 | 14d? | 2009-09-23 | 2009-10-12 | 120d | finish no earlier than 2009-09-25 | Paulicke Stephan | 112h | medium | Eng-WBS 8.1.3 | (2) Normal |
| 2028 | 1.2.4.10.10.1.4 | 2417 QMB ext components | 12d? | 2009-09-23 | 2009-10-08 | 122d | finish no earlier than 2009-09-25 | Paulicke Stephan | 96h | medium | Eng-WBS 8.1.4 | (2) Normal |
| 2029 | 1.2.4.10.10.1.5 | 2398 JAP developer workplace | 1d? | 2009-09-23 | 2009-09-23 | 133d |  | Piol Domenico | 8h | medium | Eng-WBS 8.1.5 | (2) Normal |
| 2030 | 1.2.4.10.10.1.6 | 2313 TIP include WFI interfaces | 1d? | 2009-10-22 | 2009-10-23 | 112d | finish no earlier than 2009-10-23 | Powischer Kolja | 8h | medium | Eng-WBS 8.1.6 | (2) Normal |
| 2031 | 1.2.4.10.10.1.7 | 2124 Provisioning of an artifact repository | 1d? | 2009-09-23 | 2009-09-23 | 133d |  | Paulicke Stephan | 8h | medium | Eng-WBS 8.1.7 | (2) Normal |
| 2032 | 1.2.4.10.10.1.8 | 2128 L&P Testapp | 20d? | 2009-09-25 | 2009-10-23 | 112d | finish no earlier than 2009-10-23 | Paulicke Stephan | 160h | medium | Eng-WBS 8.1.8 | (2) Normal |
| 2033 | 1.2.4.10.10.1.9 | 2072 CBS more than one DOM | 9d? | 2009-09-23 | 2009-10-05 | 125d | finish no earlier than 2009-09-25 | Piol Domenico | 72h | medium | Eng-WBS 8.1.9 | (2) Normal |
| 2034 | 1.2.4.10.10.1.10 | 2071 QMB parallel fetch | 8d? | 2009-09-23 | 2009-10-02 | 126d | finish no earlier than 2009-09-25 | Paulicke Stephan | 64h | medium | Eng-WBS 8.1.10 | (2) Normal |
| 2035 | 1.2.4.10.10.1.11 | 2070 QMB Eclipse workspace creation | 1d? | 2009-09-24 | 2009-09-25 | 132d | finish no earlier than 2009-09-25 | Paulicke Stephan | 8h | medium | Eng-WBS 8.1.11 | (2) Normal |
| 2036 | 1.2.4.10.10.1.12 | 2069 QMB more reports | 25d? | 2009-10-16 | 2009-11-20 | 92d | finish no earlier than 2009-11-20 | Paulicke Stephan | 200h | medium | Eng-WBS 8.1.12 | (2) Normal |
| 2037 | 1.2.4.10.10.1.13 | 2057 QMB JPA Annotation | 6d? | 2009-10-15 | 2009-10-23 | 112d | finish no earlier than 2009-10-23 | Paulicke Stephan | 48h | medium | Eng-WBS 8.1.13 | (2) Normal |
| 2038 | 1.2.4.10.10.1.14 | 1996 Developer workbench improvements | 6d? | 2009-11-12 | 2009-11-20 | 92d | finish no earlier than 2009-11-20 | Paulicke Stephan | 48h | medium | Eng-WBS 8.1.14 | (2) Normal |
| 2039 | 1.2.4.10.10.1.15 | 1936 QMB EJB callbacks should be possible | 11d? | 2009-10-08 | 2009-10-23 | 112d | finish no earlier than 2009-10-23 | Paulicke Stephan | 88h | medium | Eng-WBS 8.1.15 | (2) Normal |
| 2040 | 1.2.4.10.10.1.16 | 1865 QMB improvements for faster build | 21d? | 2009-10-22 | 2009-11-20 | 92d | finish no earlier than 2009-11-20 | Paulicke Stephan | 168h | medium | Eng-WBS 8.1.16 | (2) Normal |
| 2041 | 1.2.4.10.10.1.17 | 1417 QMB feature plugin (Eclipse) | 60d? | 2009-09-23 | 2009-12-15 | 74d | finish no earlier than 2009-10-23 | Paulicke Stephan | 480h | medium | Eng-WBS 8.1.17 | (2) Normal |

| ID | WBS | Task | Duration | Start | Finish | Total slack | Constraint | Resources | Work | Text23 | Text28 | Text30 |
| --- | --- | --- | --- | --- | --- | --- | --- | --- | --- | --- | --- | --- |
| 2042 | 1.2.4.10.11 | **Deployment Environment Enhancement** | 50d? | 2009-09-23 | 2009-12-01 | 84d |  |  | 1736h | medium | Eng-WBS 9 | (2) Normal |
| 2043 | 1.2.4.10.11.1 | **TC analysis/design, implementation & test** | 50d? | 2009-09-23 | 2009-12-01 | 84d |  |  | 1736h | medium | Eng-WBS 9.1 | (2) Normal |
| 2044 | 1.2.4.10.11.1.1 | 2486 Performace impovement by using .. | 1d? | 2009-09-24 | 2009-09-25 | 132d | finish no earlier than 2009-09-25 | Powischer Kolja [50%] | 4h | medium | Eng-WBS 9.1.1 | (2) Normal |
| 2045 | 1.2.4.10.11.1.2 | 2448 Dedicated Max Perm field in OT | 6.5d? | 2009-10-14 | 2009-10-23 | 112d | finish no earlier than 2009-10-23 | Janosevic Dejan | 52h | medium | Eng-WBS 9.1.2 | (2) Normal |
| 2046 | 1.2.4.10.11.1.3 | 2432 CM should show actual components | 20d? | 2009-09-23 | 2009-10-20 | 114d | finish no earlier than 2009-09-25 | Thurner Rubert | 160h | medium | Eng-WBS 9.1.3 | (2) Normal |
| 2047 | 1.2.4.10.11.1.4 | 2249 Stage independent setenv | 1d? | 2009-09-24 | 2009-09-25 | 132d | finish no earlier than 2009-09-25 | Powischer Kolja | 8h | medium | Eng-WBS 9.1.4 | (2) Normal |
| 2048 | 1.2.4.10.11.1.5 | 2196 Reload certificates (TIP) | 10d? | 2009-10-09 | 2009-10-23 | 112d | finish no earlier than 2009-10-23 | Powischer Kolja | 80h | medium | Eng-WBS 9.1.5 | (2) Normal |
| 2049 | 1.2.4.10.11.1.6 | 2188 Release upgrades for CI in CM | 1d? | 2009-09-23 | 2009-09-23 | 133d |  | Trindler Markus | 8h | medium | Eng-WBS 9.1.6 | (2) Normal |
| 2050 | 1.2.4.10.11.1.7 | 2121 Role overview page in OT | 7d? | 2009-11-11 | 2009-11-20 | 92d | finish no earlier than 2009-11-20 | Janosevic Dejan | 56h | medium | Eng-WBS 9.1.7 | (2) Normal |
| 2051 | 1.2.4.10.11.1.8 | 2105 Variable in Config xml | 5d? | 2009-11-13 | 2009-11-20 | 92d | finish no earlier than 2009-11-20 | Janosevic Dejan | 40h | medium | Eng-WBS 9.1.8 | (2) Normal |
| 2052 | 1.2.4.10.11.1.9 | 2049 All shared DB can be selected in OT | 1d? | 2009-09-23 | 2009-09-23 | 133d |  | Bennek Robert | 8h | medium | Eng-WBS 9.1.9 | (2) Normal |
| 2053 | 1.2.4.10.11.1.10 | 1972 Extend Packager file archives & Linux | 9d? | 2009-09-23 | 2009-10-05 | 125d | finish no earlier than 2009-09-25 | Spencer Phil | 72h | medium | Eng-WBS 9.1.10 | (2) Normal |
| 2054 | 1.2.4.10.11.1.11 | 1944 Regression testst VCoP | 29d? | 2009-09-23 | 2009-11-02 | 105d | finish no earlier than 2009-10-23 | Thurner Rubert | 232h | medium | Eng-WBS 9.1.11 | (2) Normal |
| 2055 | 1.2.4.10.11.1.12 | 1940 Java API for Packager | 9d? | 2009-10-12 | 2009-10-23 | 112d | finish no earlier than 2009-10-23 | Spencer Phil | 72h | medium | Eng-WBS 9.1.12 | (2) Normal |
| 2056 | 1.2.4.10.11.1.13 | 1939 Java API for VCoP | 8d? | 2009-11-10 | 2009-11-20 | 92d | finish no earlier than 2009-11-20 | Thurner Rubert | 64h | medium | Eng-WBS 9.1.13 | (2) Normal |
| 2057 | 1.2.4.10.11.1.14 | 1896 Modular Deployment | 1d? | 2009-09-23 | 2009-09-23 | 133d |  | Bennek Robert | 8h | medium | Eng-WBS 9.1.14 | (2) Normal |
| 2058 | 1.2.4.10.11.1.15 | 1867 Deliver start and activation scripts with TIP | 50d? | 2009-09-23 | 2009-12-01 | 84d | finish no earlier than 2009-09-25 | Powischer Kolja | 400h | medium | Eng-WBS 9.1.15 | (2) Normal |
| 2059 | 1.2.4.10.11.1.16 | 1861 Check server utilisation in OT | 8.5d? | 2009-11-09 | 2009-11-20 | 92d | finish no earlier than 2009-11-20 | Janosevic Dejan | 68h | medium | Eng-WBS 9.1.16 | (2) Normal |
| 2060 | 1.2.4.10.11.1.17 | 1855 OT Tryrun for new VCop templates | 4d? | 2009-11-16 | 2009-11-20 | 92d | finish no earlier than 2009-11-20 | Janosevic Dejan | 32h | medium | Eng-WBS 9.1.17 | (2) Normal |
| 2061 | 1.2.4.10.11.1.18 | 1850 X-Cluster configuration | 1d? | 2009-09-23 | 2009-09-23 | 133d |  | Piol Domenico | 8h | medium | Eng-WBS 9.1.18 | (2) Normal |
| 2062 | 1.2.4.10.11.1.19 | 1850 X-Cluster configuration | 5d? | 2009-10-16 | 2009-10-23 | 112d | finish no earlier than 2009-10-23 | Janosevic Dejan | 40h | medium | Eng-WBS 9.1.19 | (2) Normal |
| 2063 | 1.2.4.10.11.1.20 | 1850 X-Cluster configuration | 1d? | 2009-09-23 | 2009-09-23 | 133d |  | Powischer Kolja | 8h | medium | Eng-WBS 9.1.20 | (2) Normal |
| 2064 | 1.2.4.10.11.1.21 | 1586 Remove of special engineering ... | 7.5d? | 2009-11-10 | 2009-11-20 | 92d | finish no earlier than 2009-11-20 | Janosevic Dejan | 60h | medium | Eng-WBS 9.1.21 | (2) Normal |
| 2065 | 1.2.4.10.11.1.22 | 1504 Memory setting for cluster cunfigurable ... | 15d? | 2009-10-02 | 2009-10-23 | 112d | finish no earlier than 2009-10-23 | Janosevic Dejan | 120h | medium | Eng-WBS 9.1.22 | (2) Normal |
| 2066 | 1.2.4.10.11.1.23 | 1429 OT Synonym Virtual Bank Support ... | 1d? | 2009-09-23 | 2009-09-23 | 133d |  | Scheidegger Ruedi | 8h | medium | Eng-WBS 9.1.23 | (2) Normal |
| 2067 | 1.2.4.10.11.1.24 | 1071 Abstraction Layer ... | 13d? | 2009-10-06 | 2009-10-23 | 112d | finish no earlier than 2009-10-23 | Powischer Kolja | 104h | medium | Eng-WBS 9.1.24 | (2) Normal |
| 2068 | 1.2.4.10.11.1.25 | 1058 OT Prefered location support in SL | 3d? | 2009-10-20 | 2009-10-23 | 112d | finish no earlier than 2009-10-23 | Janosevic Dejan | 24h | medium | Eng-WBS 9.1.25 | (2) Normal |

| ID | WBS | Task | Duration | Start | Finish | Total slack | Constraint | Resources | Work | Text23 | Text28 | Text30 |
| --- | --- | --- | --- | --- | --- | --- | --- | --- | --- | --- | --- | --- |
| 2069 | 1.2.4.10.12 | **Deployment Environment Maintanance** | 42d? | 2009-09-23 | 2009-11-20 | 92d |  |  | 1556h | medium | Eng-WBS 10 | (2) Normal |
| 2070 | 1.2.4.10.12.1 | **TC analysis/design, implementation & test** | 42d? | 2009-09-23 | 2009-11-20 | 92d |  |  | 1556h | medium | Eng-WBS 10.1 | (2) Normal |
| 2071 | 1.2.4.10.12.1.1 | 2558 OT: replace Hibernate by EclipseLink | 1d? | 2009-09-23 | 2009-09-23 | 133d |  | Janosevic Dejan | 8h | medium | Eng-WBS 10.1.1 | (2) Normal |
| 2072 | 1.2.4.10.12.1.2 | 2399 Generic name for main setenv ... | 2d? | 2009-09-23 | 2009-09-25 | 132d | finish no earlier than 2009-09-25 | Powischer Kolja | 16h | medium | Eng-WBS 10.1.2 | (2) Normal |
| 2073 | 1.2.4.10.12.1.3 | 2258 CFW startup ... | 1.5d? | 2009-09-23 | 2009-09-25 | 132d | finish no earlier than 2009-09-25 | Thurner Rubert | 12h | medium | Eng-WBS 10.1.3 | (2) Normal |
| 2074 | 1.2.4.10.12.1.4 | 2240 Missing reset of component state ... | 3d? | 2009-11-17 | 2009-11-20 | 92d | finish no earlier than 2009-11-20 | Janosevic Dejan | 24h | medium | Eng-WBS 10.1.4 | (2) Normal |
| 2075 | 1.2.4.10.12.1.5 | 2114 Pathvariable for shared libs ... | 8d? | 2009-10-13 | 2009-10-23 | 112d | finish no earlier than 2009-10-23 | Janosevic Dejan | 64h | medium | Eng-WBS 10.1.5 | (2) Normal |
| 2076 | 1.2.4.10.12.1.6 | 2114 Pathvariable for shared libs ... | 2d? | 2009-09-23 | 2009-09-25 | 132d | finish no earlier than 2009-09-25 | Thurner Rubert | 16h | medium | Eng-WBS 10.1.6 | (2) Normal |
| 2077 | 1.2.4.10.12.1.7 | 2023 Deprication of classpath variable ... | 1.5d? | 2009-09-23 | 2009-09-25 | 132d | finish no earlier than 2009-09-25 | Thurner Rubert | 12h | medium | Eng-WBS 10.1.7 | (2) Normal |
| 2078 | 1.2.4.10.12.1.8 | 1977 WFI emails shall contain stage info ... | 1.5d? | 2009-09-23 | 2009-09-25 | 132d | finish no earlier than 2009-09-25 | Janosevic Dejan | 12h | medium | Eng-WBS 10.1.8 | (2) Normal |
| 2079 | 1.2.4.10.12.1.9 | 1976 CSin file shall contain stage info ... | 1.5d? | 2009-09-23 | 2009-09-25 | 132d | finish no earlier than 2009-09-25 | Janosevic Dejan | 12h | medium | Eng-WBS 10.1.9 | (2) Normal |
| 2080 | 1.2.4.10.12.1.10 | 1975 Improve manual CIM import for OT ... | 4d? | 2009-09-23 | 2009-09-28 | 130d | finish no earlier than 2009-09-25 | Janosevic Dejan | 32h | medium | Eng-WBS 10.1.10 | (2) Normal |
| 2081 | 1.2.4.10.12.1.11 | 1970 Streamline VCoP input-xsd ... | 14d? | 2009-10-05 | 2009-10-23 | 112d | finish no earlier than 2009-10-23 | Piol Domenico | 112h | medium | Eng-WBS 10.1.11 | (2) Normal |
| 2082 | 1.2.4.10.12.1.12 | 1959 Rethink current sequence ... | 2d? | 2009-10-21 | 2009-10-23 | 112d | finish no earlier than 2009-10-23 | Piol Domenico | 16h | medium | Eng-WBS 10.1.12 | (2) Normal |
| 2083 | 1.2.4.10.12.1.13 | 1954 Improve OT screen adding WLS comp | 6d? | 2009-11-12 | 2009-11-20 | 92d | finish no earlier than 2009-11-20 | Janosevic Dejan | 48h | medium | Eng-WBS 10.1.13 | (2) Normal |
| 2084 | 1.2.4.10.12.1.14 | 1953 OT error handling shall be improved | 10d? | 2009-11-06 | 2009-11-20 | 92d | finish no earlier than 2009-11-20 | Janosevic Dejan | 80h | medium | Eng-WBS 10.1.14 | (2) Normal |
| 2085 | 1.2.4.10.12.1.15 | 1945 OT shall be usable without WFI in IT | 6.5d? | 2009-09-23 | 2009-10-01 | 127.5d | finish no earlier than 2009-09-25 | Janosevic Dejan | 52h | medium | Eng-WBS 10.1.15 | (2) Normal |
| 2086 | 1.2.4.10.12.1.16 | 1942 Central Build Server should use JPA | 7d? | 2009-09-23 | 2009-10-01 | 127d |  | Piol Domenico | 56h | medium | Eng-WBS 10.1.16 | (2) Normal |
| 2087 | 1.2.4.10.12.1.17 | 1941 CBS GUI optimization and adaptions | 3d? | 2009-09-23 | 2009-09-25 | 131d | finish no earlier than 2009-09-25 | Piol Domenico | 24h | medium | Eng-WBS 10.1.17 | (2) Normal |
| 2088 | 1.2.4.10.12.1.18 | 1935 OT Metadata structure improvement | 6.5d? | 2009-09-23 | 2009-10-01 | 127.5d | finish no earlier than 2009-09-25 | Janosevic Dejan | 52h | medium | Eng-WBS 10.1.18 | (2) Normal |
| 2089 | 1.2.4.10.12.1.19 | 1934 OT Performance improvement | 15d? | 2009-10-30 | 2009-11-20 | 92d | finish no earlier than 2009-11-20 | Janosevic Dejan | 120h | medium | Eng-WBS 10.1.19 | (2) Normal |
| 2090 | 1.2.4.10.12.1.20 | 1932 Move package generation from OT to VCoP | 15d? | 2009-10-30 | 2009-11-20 | 92d | finish no earlier than 2009-11-20 | Janosevic Dejan | 120h | medium | Eng-WBS 10.1.20 | (2) Normal |
| 2091 | 1.2.4.10.12.1.21 | 1932 Move package generation from OT to VCoP | 25d? | 2009-10-16 | 2009-11-20 | 92d | finish no earlier than 2009-11-20 | Thurner Rubert | 200h | medium | Eng-WBS 10.1.21 | (2) Normal |
| 2092 | 1.2.4.10.12.1.22 | 1931 Shared functionality must be separated | 1d? | 2009-09-23 | 2009-09-23 | 133d |  | Piol Domenico | 8h | medium | Eng-WBS 10.1.22 | (2) Normal |
| 2093 | 1.2.4.10.12.1.23 | 1890 OT workflow serverassignment | 4d? | 2009-11-16 | 2009-11-20 | 92d | finish no earlier than 2009-11-20 | Janosevic Dejan | 32h | medium | Eng-WBS 10.1.23 | (2) Normal |
| 2094 | 1.2.4.10.12.1.24 | 1869 OT deployment zone serverassignment | 2.5d? | 2009-11-17 | 2009-11-20 | 92d | finish no earlier than 2009-11-20 | Janosevic Dejan | 20h | medium | Eng-WBS 10.1.24 | (2) Normal |
| 2095 | 1.2.4.10.12.1.25 | 1859 CBS mask content | 4d? | 2009-09-23 | 2009-09-28 | 130d | finish no earlier than 2009-09-25 | Piol Domenico | 32h | medium | Eng-WBS 10.1.25 | (2) Normal |
| 2096 | 1.2.4.10.12.1.26 | 1857 OT tab sequence | 1d? | 2009-09-24 | 2009-09-25 | 132d | finish no earlier than 2009-09-25 | Janosevic Dejan [50%] | 4h | medium | Eng-WBS 10.1.26 | (2) Normal |
| 2097 | 1.2.4.10.12.1.27 | 1838 OT default data source settings | 1d? | 2009-09-24 | 2009-09-25 | 132d | finish no earlier than 2009-09-25 | Janosevic Dejan [50%] | 4h | medium | Eng-WBS 10.1.27 | (2) Normal |
| 2098 | 1.2.4.10.12.1.28 | 1813 CM GUI with process state | 15d? | 2009-09-23 | 2009-10-13 | 119d |  | Thurner Rubert | 120h | medium | Eng-WBS 10.1.28 | (2) Normal |
| 2099 | 1.2.4.10.12.1.29 | 1476 OT printer friendly version | 6.5d? | 2009-11-11 | 2009-11-20 | 92d | finish no earlier than 2009-11-20 | Janosevic Dejan | 52h | medium | Eng-WBS 10.1.29 | (2) Normal |
| 2100 | 1.2.4.10.12.1.30 | 1396 TIP system classpath adjustment | 5d? | 2009-09-23 | 2009-09-29 | 129d | finish no earlier than 2009-09-25 | Powischer Kolja | 40h | medium | Eng-WBS 10.1.30 | (2) Normal |
| 2101 | 1.2.4.10.12.1.31 | 1264 OT international teststate label | 11d? | 2009-11-05 | 2009-11-20 | 92d | finish no earlier than 2009-11-20 | Janosevic Dejan | 88h | medium | Eng-WBS 10.1.31 | (2) Normal |
| 2102 | 1.2.4.10.12.1.32 | 1244 OT port allocation against double ports | 7.5d? | 2009-11-10 | 2009-11-20 | 92d | finish no earlier than 2009-11-20 | Janosevic Dejan | 60h | medium | Eng-WBS 10.1.32 | (2) Normal |
| 2103 | 1.2.4.10.12.1.33 | 1224 Downtimeindicator support urls | 1d? | 2009-10-22 | 2009-10-23 | 112d | finish no earlier than 2009-10-23 | Piol Domenico | 8h | medium | Eng-WBS 10.1.33 | (2) Normal |

| ID | WBS | Task | Type | Duration | Start | Finish | Total slack | Constraint | Resources | Work | Text23 | Text30 |
| --- | --- | --- | --- | --- | --- | --- | --- | --- | --- | --- | --- | --- |
| 2104 | 1.2.4.11 | **Pilot Coordination** |  | 129d? | 2009-09-28 | 2010-03-29 | 0d |  |  | 27h | medium | (2) Normal |
| 2105 | 1.2.4.11.1 | **Reporting** |  | 129d? | 2009-09-28 | 2010-03-29 | 0d |  |  | 27h | medium | (2) Normal |
| 2106 | 1.2.4.11.1.1 | **Preparation Role Status Report** |  | 129d? | 2009-09-28 | 2010-03-29 | 0d |  |  | 27h | medium | (2) Normal |
| 2107 | 1.2.4.11.1.1.1 | Preparation Role Status Report W39 |  | 1d? | 2009-09-28 | 2009-09-28 | 0d | as late as possible | Frank Pascal [12.5%] | 1h | medium | (2) Normal |
| 2108 | 1.2.4.11.1.1.2 | Preparation Role Status Report W40 |  | 1d? | 2009-10-05 | 2009-10-05 | 0d | as late as possible | Frank Pascal [12.5%] | 1h | medium | (2) Normal |
| 2109 | 1.2.4.11.1.1.3 | Preparation Role Status Report W41 |  | 1d? | 2009-10-12 | 2009-10-12 | 0d | as late as possible | Frank Pascal [12.5%] | 1h | medium | (2) Normal |
| 2110 | 1.2.4.11.1.1.4 | Preparation Role Status Report W42 |  | 1d? | 2009-10-19 | 2009-10-19 | 0d | as late as possible | Frank Pascal [12.5%] | 1h | medium | (2) Normal |
| 2111 | 1.2.4.11.1.1.5 | Preparation Role Status Report W43 |  | 1d? | 2009-10-26 | 2009-10-26 | 0d | as late as possible | Frank Pascal [12.5%] | 1h | medium | (2) Normal |
| 2112 | 1.2.4.11.1.1.6 | Preparation Role Status Report W44 |  | 1d? | 2009-11-02 | 2009-11-02 | 0d | as late as possible | Frank Pascal [12.5%] | 1h | medium | (2) Normal |
| 2113 | 1.2.4.11.1.1.7 | Preparation Role Status Report W45 |  | 1d? | 2009-11-09 | 2009-11-09 | 0d | as late as possible | Frank Pascal [12.5%] | 1h | medium | (2) Normal |
| 2114 | 1.2.4.11.1.1.8 | Preparation Role Status Report W46 |  | 1d? | 2009-11-16 | 2009-11-16 | 0d | as late as possible | Frank Pascal [12.5%] | 1h | medium | (2) Normal |
| 2115 | 1.2.4.11.1.1.9 | Preparation Role Status Report W47 |  | 1d? | 2009-11-23 | 2009-11-23 | 0d | as late as possible | Frank Pascal [12.5%] | 1h | medium | (2) Normal |
| 2116 | 1.2.4.11.1.1.10 | Preparation Role Status Report W48 |  | 1d? | 2009-11-30 | 2009-11-30 | 0d | as late as possible | Frank Pascal [12.5%] | 1h | medium | (2) Normal |
| 2117 | 1.2.4.11.1.1.11 | Preparation Role Status Report W49 |  | 1d? | 2009-12-07 | 2009-12-07 | 0d | as late as possible | Frank Pascal [12.5%] | 1h | medium | (2) Normal |
| 2118 | 1.2.4.11.1.1.12 | Preparation Role Status Report W50 |  | 1d? | 2009-12-14 | 2009-12-14 | 0d | as late as possible | Frank Pascal [12.5%] | 1h | medium | (2) Normal |
| 2119 | 1.2.4.11.1.1.13 | Preparation Role Status Report W51 |  | 1d? | 2009-12-21 | 2009-12-21 | 0d | as late as possible | Frank Pascal [12.5%] | 1h | medium | (2) Normal |
| 2120 | 1.2.4.11.1.1.14 | Preparation Role Status Report W52 |  | 1d? | 2009-12-28 | 2009-12-28 | 0d | as late as possible | Frank Pascal [12.5%] | 1h | medium | (2) Normal |
| 2121 | 1.2.4.11.1.1.15 | Preparation Role Status Report W53 |  | 1d? | 2010-01-04 | 2010-01-04 | 0d | as late as possible | Frank Pascal [12.5%] | 1h | medium | (2) Normal |
| 2122 | 1.2.4.11.1.1.16 | Preparation Role Status Report W01 |  | 1d? | 2010-01-11 | 2010-01-11 | 0d | as late as possible | Frank Pascal [12.5%] | 1h | medium | (2) Normal |
| 2123 | 1.2.4.11.1.1.17 | Preparation Role Status Report W02 |  | 1d? | 2010-01-18 | 2010-01-18 | 0d | as late as possible | Frank Pascal [12.5%] | 1h | medium | (2) Normal |
| 2124 | 1.2.4.11.1.1.18 | Preparation Role Status Report W03 |  | 1d? | 2010-01-25 | 2010-01-25 | 0d | as late as possible | Frank Pascal [12.5%] | 1h | medium | (2) Normal |
| 2125 | 1.2.4.11.1.1.19 | Preparation Role Status Report W04 |  | 1d? | 2010-02-01 | 2010-02-01 | 0d | as late as possible | Frank Pascal [12.5%] | 1h | medium | (2) Normal |
| 2126 | 1.2.4.11.1.1.20 | Preparation Role Status Report W05 |  | 1d? | 2010-02-08 | 2010-02-08 | 0d | as late as possible | Frank Pascal [12.5%] | 1h | medium | (2) Normal |
| 2127 | 1.2.4.11.1.1.21 | Preparation Role Status Report W06 |  | 1d? | 2010-02-15 | 2010-02-15 | 0d | as late as possible | Frank Pascal [12.5%] | 1h | medium | (2) Normal |
| 2128 | 1.2.4.11.1.1.22 | Preparation Role Status Report W07 |  | 1d? | 2010-02-22 | 2010-02-22 | 0d | as late as possible | Frank Pascal [12.5%] | 1h | medium | (2) Normal |
| 2129 | 1.2.4.11.1.1.23 | Preparation Role Status Report W08 |  | 1d? | 2010-03-01 | 2010-03-01 | 0d | as late as possible | Frank Pascal [12.5%] | 1h | medium | (2) Normal |
| 2130 | 1.2.4.11.1.1.24 | Preparation Role Status Report W09 |  | 1d? | 2010-03-08 | 2010-03-08 | 0d | as late as possible | Frank Pascal [12.5%] | 1h | medium | (2) Normal |
| 2131 | 1.2.4.11.1.1.25 | Preparation Role Status Report W10 |  | 1d? | 2010-03-15 | 2010-03-15 | 0d | as late as possible | Frank Pascal [12.5%] | 1h | medium | (2) Normal |
| 2132 | 1.2.4.11.1.1.26 | Preparation Role Status Report W11 |  | 1d? | 2010-03-22 | 2010-03-22 | 0d | as late as possible | Frank Pascal [12.5%] | 1h | medium | (2) Normal |
| 2133 | 1.2.4.11.1.1.27 | Preparation Role Status Report W12 |  | 1d? | 2010-03-29 | 2010-03-29 | 0d | as late as possible | Frank Pascal [12.5%] | 1h | medium | (2) Normal |
| 2134 | 1.2.4.12 | CCB | milestone | 0d | 2009-09-22 | 2009-09-22 | 194d |  |  |  | medium | (2) Normal |

| ID | WBS | Task | Duration | Start | Finish | Predecessors | Total slack | Free slack | Constraint | Resources | Work | Cost | Text23 | Text30 | Text15 |
| --- | --- | --- | --- | --- | --- | --- | --- | --- | --- | --- | --- | --- | --- | --- | --- |
| 2135 | 1.2.5 | **Project Deployment Phase** | 22d? | 2010-04-01 | 2010-04-30 | 62 | 8d |  |  |  | 871h | 270 | medium | (2) Normal |  |
| 2136 | 1.2.5.1 | **Project Management** | 19d? | 2010-04-01 | 2010-04-27 |  | 8d |  |  |  | 452h | 28 |  |  | ----- |
| 2137 | 1.2.5.1.1 | **Prepare Project Progress Review Report** | 16d | 2010-04-06 | 2010-04-27 |  | 41d |  |  |  | 8h |  | medium | (2) Normal |  |
| 2138 | 1.2.5.1.1.1 | Create Status Report W 13 | 1d | 2010-04-06 | 2010-04-06 |  | 56d |  | start no earlier than 2010-04-06 | Scheidegger Ruedi [25%] | 2h |  | medium | (2) Normal |  |
| 2139 | 1.2.5.1.1.2 | Create Status Report W 14 | 1d | 2010-04-13 | 2010-04-13 |  | 51d |  | start no earlier than 2010-04-13 | Scheidegger Ruedi [25%] | 2h |  | medium | (2) Normal |  |
| 2140 | 1.2.5.1.1.3 | Create Status Report W 15 | 1d | 2010-04-20 | 2010-04-20 |  | 46d |  | start no earlier than 2010-04-20 | Scheidegger Ruedi [25%] | 2h |  | medium | (2) Normal |  |
| 2141 | 1.2.5.1.1.4 | Create Status Report W 16 | 1d | 2010-04-27 | 2010-04-27 |  | 41d |  | start no earlier than 2010-04-27 | Scheidegger Ruedi [25%] | 2h |  | medium | (2) Normal |  |
| 2142 | 1.2.5.1.2 | **Planning** | 5d? | 2010-04-01 | 2010-04-07 |  | 55d |  |  |  | 48h | 8 |  |  | ----- |
| 2143 | 1.2.5.1.2.1 | Revisit Project Charter | 1d? | 2010-04-01 | 2010-04-01 |  | 55d | 0d |  | Scheidegger Ruedi | 8h |  |  |  | PM |
| 2144 | 1.2.5.1.2.2 | Initiate Phase in IT Plan | 1d? | 2010-04-02 | 2010-04-02 | 2143 | 55d | 0d |  | Scheidegger Ruedi | 8h |  |  |  | PM |
| 2145 | 1.2.5.1.2.3 | Revisit Project Process Tailoring | 1d? | 2010-04-05 | 2010-04-05 | 2144 | 55d | 0d |  | Scheidegger Ruedi | 8h |  |  |  | PM |
| 2146 | 1.2.5.1.2.4 | Update Project Management Plan | 1d? | 2010-04-06 | 2010-04-06 | 2145 | 56d |  |  | Scheidegger Ruedi | 8h |  |  |  | PM |
| 2147 | 1.2.5.1.2.5 | Update WBS and Project Schedule | 1d? | 2010-04-06 | 2010-04-06 | 2145 | 55d | 0d |  | Lüthi Rico F. | 8h | 8 |  |  | PM |
| 2148 | 1.2.5.1.2.6 | Obtain Commitment to Plan | 1d? | 2010-04-07 | 2010-04-07 | 2147 | 55d |  |  | Scheidegger Ruedi | 8h |  |  |  | PM |
| 2149 | 1.2.5.1.3 | **PRB Artifacts** | 2d? | 2010-04-01 | 2010-04-02 |  | 58d |  |  |  | 312h |  | medium | (2) Normal |  |
| 2150 | 1.2.5.1.3.1 | DAR Decision Record Log Template | 2d? | 2010-04-01 | 2010-04-02 |  | 58d |  |  | Scheidegger Ruedi | 16h |  | medium | (2) Normal |  |
| 2151 | 1.2.5.1.3.2 | DAR Evaluation Record Template | 2d? | 2010-04-01 | 2010-04-02 |  | 58d |  |  | Scheidegger Ruedi | 16h |  | medium | (2) Normal |  |
| 2152 | 1.2.5.1.3.3 | Deviation Register Template | 2d? | 2010-04-01 | 2010-04-02 |  | 58d |  |  | Scheidegger Ruedi | 16h |  | medium | (2) Normal |  |
| 2153 | 1.2.5.1.3.4 | Full Value Case (FVC) Template | 2d? | 2010-04-01 | 2010-04-02 |  | 58d |  |  | Scheidegger Ruedi | 16h |  | medium | (2) Normal |  |
| 2154 | 1.2.5.1.3.5 | High Level Value Case (HVC) Template | 1d? | 2010-04-01 | 2010-04-01 |  | 59d |  |  | Scheidegger Ruedi | 8h |  | medium | (2) Normal |  |
| 2155 | 1.2.5.1.3.6 | IT-Plan - Automatic Cost Transfer Template | 2d? | 2010-04-01 | 2010-04-02 |  | 58d |  |  | Scheidegger Ruedi | 16h |  | medium | (2) Normal |  |
| 2156 | 1.2.5.1.3.7 | IT-Plan - Project Master Data Tool | 2d? | 2010-04-01 | 2010-04-02 |  | 58d |  |  | Scheidegger Ruedi | 16h |  | medium | (2) Normal |  |
| 2157 | 1.2.5.1.3.8 | IT-Plan - Project Status Report Tool | 2d? | 2010-04-01 | 2010-04-02 |  | 58d |  |  | Scheidegger Ruedi | 16h |  | medium | (2) Normal |  |
| 2158 | 1.2.5.1.3.9 | IT-Plan - Request for Opening a Project Tool | 2d? | 2010-04-01 | 2010-04-02 |  | 58d |  |  | Scheidegger Ruedi | 16h |  | medium | (2) Normal |  |
| 2159 | 1.2.5.1.3.10 | Measurement Analysis PM Checklist | 2d? | 2010-04-01 | 2010-04-02 |  | 58d |  |  | Scheidegger Ruedi | 16h |  | medium | (2) Normal |  |
| 2160 | 1.2.5.1.3.11 | N+ Project Management Plan Template | 2d? | 2010-04-01 | 2010-04-02 |  | 58d |  |  | Scheidegger Ruedi | 16h |  | medium | (2) Normal |  |
| 2161 | 1.2.5.1.3.12 | PPR Project Performance Review Tool | 2d? | 2010-04-01 | 2010-04-02 |  | 58d |  |  | Scheidegger Ruedi | 16h |  | medium | (2) Normal |  |
| 2162 | 1.2.5.1.3.13 | PRB Readiness Checklist | 2d? | 2010-04-01 | 2010-04-02 |  | 58d |  |  | Scheidegger Ruedi | 16h |  | medium | (2) Normal |  |
| 2163 | 1.2.5.1.3.14 | Project Change Request / RM Template | 2d? | 2010-04-01 | 2010-04-02 |  | 58d |  |  | Scheidegger Ruedi | 16h |  | medium | (2) Normal |  |
| 2164 | 1.2.5.1.3.15 | Project Specific Performance Indicators Definition Template | 2d? | 2010-04-01 | 2010-04-02 |  | 58d |  |  | Scheidegger Ruedi | 16h |  | medium | (2) Normal |  |
| 2165 | 1.2.5.1.3.16 | Release Note Template | 2d? | 2010-04-01 | 2010-04-02 |  | 58d |  |  | Scheidegger Ruedi | 16h |  | medium | (2) Normal |  |
| 2166 | 1.2.5.1.3.17 | Risk Pre Assessment Questionnaire Template | 2d? | 2010-04-01 | 2010-04-02 |  | 58d |  |  | Scheidegger Ruedi | 16h |  | medium | (2) Normal |  |
| 2167 | 1.2.5.1.3.18 | Risk Profile Template | 2d? | 2010-04-01 | 2010-04-02 |  | 58d |  |  | Scheidegger Ruedi | 16h |  | medium | (2) Normal |  |
| 2168 | 1.2.5.1.3.19 | Transition Points Template | 2d? | 2010-04-01 | 2010-04-02 |  | 58d |  |  | Scheidegger Ruedi | 16h |  | medium | (2) Normal |  |
| 2169 | 1.2.5.1.3.20 | Distributed Work Management Plan Template | 1d? | 2010-04-01 | 2010-04-01 |  | 59d |  |  | Lackmann Ralph | 8h |  | medium | (2) Normal |  |
| 2170 | 1.2.5.1.3.21 | Internal Agreement Template | 1d? | 2010-04-01 | 2010-04-01 |  | 59d |  |  | Lackmann Ralph | 8h |  | medium | (2) Normal |  |

| ID | WBS | Task | Type | Duration | Start | Finish | Predecessors | Total slack | Free slack | Constraint | Resources | Work | Cost | Text23 | Text30 |
| --- | --- | --- | --- | --- | --- | --- | --- | --- | --- | --- | --- | --- | --- | --- | --- |
| 2171 | 1.2.5.1.4 | **Project Closure** |  | 9d? | 2010-04-13 | 2010-04-23 |  | 0d |  |  |  | 84h | 20 | medium | (2) Normal |
| 2172 | 1.2.5.1.4.1 | Verify Project Acceptance |  | 3d? | 2010-04-13 | 2010-04-15 |  | 0d |  | as late as possible | Scheidegger Ruedi | 24h |  | medium | (2) Normal |
| 2173 | 1.2.5.1.4.2 | Execute Administrative Closure (RC) |  | 1d? | 2010-04-16 | 2010-04-16 | 2172 | 0d |  | as late as possible | Scheidegger Ruedi | 8h |  | medium | (2) Normal |
| 2174 | 1.2.5.1.4.3 | Project Sign-off |  | 1d? | 2010-04-19 | 2010-04-19 | 2173 | 0d |  | as late as possible | Scheidegger Ruedi | 8h |  | medium | (2) Normal |
| 2175 | 1.2.5.1.4.4 | Submit Data in Measurement Repository |  | 1d? | 2010-04-20 | 2010-04-20 | 2174 | 0d |  | as late as possible | Scheidegger Ruedi | 8h |  | medium | (2) Normal |
| 2176 | 1.2.5.1.4.5 | Transfer Project Assets to Process Asset Library |  | 1d? | 2010-04-21 | 2010-04-21 | 2175 | 0d |  | as late as possible | Scheidegger Ruedi | 8h |  | medium | (2) Normal |
| 2177 | 1.2.5.1.4.6 | Submit Project Risk to Risk repository |  | 1d? | 2010-04-20 | 2010-04-20 | 2174 | 0d |  | as late as possible | Lüthi Rico F. [50%] | 4h | 4 | medium | (2) Normal |
| 2178 | 1.2.5.1.4.7 | Submit Selected Project Artifacts to Knowledge Management Repository |  | 1d? | 2010-04-22 | 2010-04-22 | 2176 | 0d |  | as late as possible | Scheidegger Ruedi [50%] | 4h |  | medium | (2) Normal |
| 2179 | 1.2.5.1.4.8 | Archive Baseline Work products and Records |  | 2d? | 2010-04-21 | 2010-04-22 | 2177 | 0d |  | as late as possible | Lüthi Rico F. | 16h | 16 | medium | (2) Normal |
| 2180 | 1.2.5.1.4.9 | Release Project Resources |  | 1d? | 2010-04-23 | 2010-04-23 | 2178, 2179 | 0d |  | as late as possible | Scheidegger Ruedi [50%] | 4h |  | medium | (2) Normal |
| 2181 | 1.2.5.2 | **Risk Management** |  | 2d? | 2010-04-01 | 2010-04-02 |  | 58d |  |  |  | 16h | 8 | medium | (2) Normal |
| 2182 | 1.2.5.2.1 | **Risk Mgmt Plan** |  | 2d? | 2010-04-01 | 2010-04-02 |  | 58d |  |  |  | 16h | 8 | medium | (2) Normal |
| 2183 | 1.2.5.2.1.1 | Update Risk Response and Contingency |  | 1d? | 2010-04-01 | 2010-04-01 |  | 58d | 0d |  | Lüthi Rico F. | 8h | 8 | medium | (2) Normal |
| 2184 | 1.2.5.2.1.2 | Review Risks, Risk Responses and Contingency Plans |  | 1d? | 2010-04-02 | 2010-04-02 | 2183 | 58d |  |  | Scheidegger Ruedi | 8h |  | medium | (2) Normal |
| 2185 | 1.2.5.3 | **PMO & Configuration Management** |  | 3d? | 2010-04-01 | 2010-04-05 |  | 57d |  |  |  | 259h | 234 | medium | (2) Normal |
| 2186 | 1.2.5.3.1 | **Baselines** |  | 3d | 2010-04-01 | 2010-04-05 |  | 57d |  |  |  | 35h | 10 | medium | (2) Normal |
| 2187 | 1.2.5.3.1.1 | **Creation of Baseline Major Deployment Phase** |  | 3d | 2010-04-01 | 2010-04-05 |  | 57d |  |  |  | 35h | 10 | medium | (2) Normal |
| 2188 | 1.2.5.3.1.1.1 | preparation fo Baseline |  | 0.5d | 2010-04-01 | 2010-04-01 |  | 57d | 0d |  | Lüthi Rico F. [50%] | 2h | 2 | medium | (2) Normal |
| 2189 | 1.2.5.3.1.1.2 | Create Baseline SharePoint |  | 1d | 2010-04-01 | 2010-04-02 | 2188 | 57d | 0d |  | Lüthi Rico F. [50%] | 4h | 4 | medium | (2) Normal |
| 2190 | 1.2.5.3.1.1.3 | Create Baseline WIKI |  | 1d | 2010-04-01 | 2010-04-02 | 2188 | 57d | 0d |  | Hermann René [37.5%] | 3h |  | medium | (2) Normal |
| 2191 | 1.2.5.3.1.1.4 | Create Baseline CVS |  | 1d | 2010-04-01 | 2010-04-02 | 2188 | 57d | 0d |  | Piol Domenico [37.5%] | 3h |  | medium | (2) Normal |
| 2192 | 1.2.5.3.1.1.5 | Create Baseline Subversion |  | 1d | 2010-04-01 | 2010-04-02 | 2188 | 57d | 0d |  | Bu Sigve [37.5%] | 3h |  | medium | (2) Normal |
| 2193 | 1.2.5.3.1.1.6 | Create Baseline SDSS |  | 1d | 2010-04-01 | 2010-04-02 | 2188 | 57d | 0d |  | Bu Sigve [37.5%] | 3h |  | medium | (2) Normal |
| 2194 | 1.2.5.3.1.1.7 | Create Baseline JIRA Requirements |  | 1d | 2010-04-01 | 2010-04-02 | 2188 | 57d | 0d |  | Trindler Markus [37.5%] | 3h |  | medium | (2) Normal |
| 2195 | 1.2.5.3.1.1.8 | Create Baseline JIRA Issues |  | 1d | 2010-04-01 | 2010-04-02 | 2188 | 57d | 0d |  | Oezgen Oya [37.5%] | 3h |  | medium | (2) Normal |
| 2196 | 1.2.5.3.1.1.9 | Create Baseline JIRA Defects |  | 1d | 2010-04-01 | 2010-04-02 | 2188 | 57d | 0d |  | Oezgen Oya [37.5%] | 3h |  | medium | (2) Normal |
| 2197 | 1.2.5.3.1.1.10 | Create Baseline Quality Center |  | 1d | 2010-04-01 | 2010-04-02 | 2188 | 57d | 0d |  | Oberndorfer Richard [37.5%] | 3h |  | medium | (2) Normal |
| 2198 | 1.2.5.3.1.1.11 | Update Configuration Management Plan & Configuration Item List & Baseline Record |  | 0.5d | 2010-04-02 | 2010-04-02 | 2189, 2190, 2191, 2192, 2193, 2194, 2195, 2196, 2197 | 57d | 0d |  | Lüthi Rico F. | 4h | 4 | medium | (2) Normal |
| 2199 | 1.2.5.3.1.1.12 | Audit Major Deployment Baseline |  | 1d | 2010-04-05 | 2010-04-05 | 2198 | 57d | 0d |  | Scheidegger Ruedi [6.2%]; Polisano Riccardo [6.2%] | 1h |  | medium | (2) Normal |
| 2200 | 1.2.5.3.1.1.13 | Baseline created | milestone | 0d | 2010-04-05 | 2010-04-05 | 2199 | 57d |  |  |  |  |  | medium | (2) Normal |

| ID | WBS | Task | Duration | Start | Finish | Total slack | Resources | Work | Cost | Text23 | Text30 |
| --- | --- | --- | --- | --- | --- | --- | --- | --- | --- | --- | --- |
| 2201 | 1.2.5.3.2 | **PRB Artifacts** | 2d? | 2010-04-01 | 2010-04-02 | 58d |  | 224h | 224 | medium | (2) Normal |
| 2202 | 1.2.5.3.2.1 | Action Item/Issue/Escalation Tracker Template | 2d? | 2010-04-01 | 2010-04-02 | 58d | Lüthi Rico F. | 16h | 16 | medium | (2) Normal |
| 2203 | 1.2.5.3.2.2 | Baseline Record Template | 2d? | 2010-04-01 | 2010-04-02 | 58d | Lüthi Rico F. | 16h | 16 | medium | (2) Normal |
| 2204 | 1.2.5.3.2.3 | CM Checklist Template | 2d? | 2010-04-01 | 2010-04-02 | 58d | Lüthi Rico F. | 16h | 16 | medium | (2) Normal |
| 2205 | 1.2.5.3.2.4 | Configuration Item List Template | 2d? | 2010-04-01 | 2010-04-02 | 58d | Lüthi Rico F. | 16h | 16 | medium | (2) Normal |
| 2206 | 1.2.5.3.2.5 | Configuration Management Plan Template | 2d? | 2010-04-01 | 2010-04-02 | 58d | Lüthi Rico F. | 16h | 16 | medium | (2) Normal |
| 2207 | 1.2.5.3.2.6 | N+ Measurement Report Template | 2d? | 2010-04-01 | 2010-04-02 | 58d | Lüthi Rico F. | 16h | 16 | medium | (2) Normal |
| 2208 | 1.2.5.3.2.7 | N+ MS Project Schedule / WBS Template | 2d? | 2010-04-01 | 2010-04-02 | 58d | Lüthi Rico F. | 16h | 16 | medium | (2) Normal |
| 2209 | 1.2.5.3.2.8 | Performance Agreement for Project Staff Template | 2d? | 2010-04-01 | 2010-04-02 | 58d | Lüthi Rico F. | 16h | 16 | medium | (2) Normal |
| 2210 | 1.2.5.3.2.9 | Process Tailoring Record Template | 2d? | 2010-04-01 | 2010-04-02 | 58d | Lüthi Rico F. | 16h | 16 | medium | (2) Normal |
| 2211 | 1.2.5.3.2.10 | Project Change Request List Template | 2d? | 2010-04-01 | 2010-04-02 | 58d | Lüthi Rico F. | 16h | 16 | medium | (2) Normal |
| 2212 | 1.2.5.3.2.11 | Project Charter Template | 2d? | 2010-04-01 | 2010-04-02 | 58d | Lüthi Rico F. | 16h | 16 | medium | (2) Normal |
| 2213 | 1.2.5.3.2.12 | Project Organization Template | 2d? | 2010-04-01 | 2010-04-02 | 58d | Lüthi Rico F. | 16h | 16 | medium | (2) Normal |
| 2214 | 1.2.5.3.2.13 | Risk Management Plan Template | 2d? | 2010-04-01 | 2010-04-02 | 58d | Lüthi Rico F. | 16h | 16 | medium | (2) Normal |
| 2215 | 1.2.5.3.2.14 | Weekly Project Progress Review Report Template | 2d? | 2010-04-01 | 2010-04-02 | 58d | Lüthi Rico F. | 16h | 16 | medium | (2) Normal |
| 2216 | 1.2.5.4 | **Platform Design** | 1d? | 2010-04-01 | 2010-04-01 | 59d |  | 32h |  | medium | (2) Normal |
| 2217 | 1.2.5.4.1 | **PRB Artifacts** | 1d? | 2010-04-01 | 2010-04-01 | 59d |  | 32h |  | medium | (2) Normal |
| 2218 | 1.2.5.4.1.1 | Software Architecture Document (SAD) RSX Template | 1d? | 2010-04-01 | 2010-04-01 | 59d | Kradolfer Markus | 8h |  | medium | (2) Normal |
| 2219 | 1.2.5.4.1.2 | Software Architecture Document (SAD) Template | 1d? | 2010-04-01 | 2010-04-01 | 59d | Kradolfer Markus | 8h |  | medium | (2) Normal |
| 2220 | 1.2.5.4.1.3 | System Specification Security Design Template (phase out) | 1d? | 2010-04-01 | 2010-04-01 | 59d | Kradolfer Markus | 8h |  | medium | (2) Normal |
| 2221 | 1.2.5.4.1.4 | System Specification Template (phase out) | 1d? | 2010-04-01 | 2010-04-01 | 59d | Kradolfer Markus | 8h |  | medium | (2) Normal |
| 2222 | 1.2.5.5 | **Quality Assurance** | 5d? | 2010-04-01 | 2010-04-07 | 55d |  | 112h |  | medium | (2) Normal |
| 2223 | 1.2.5.5.1 | Evaluate Project Process & Record Findings | 2d? | 2010-04-01 | 2010-04-02 | 58d | Polisano Riccardo | 16h |  | medium | (2) Normal |
| 2224 | 1.2.5.5.2 | **Training and Knowledge Transfer** | 5d? | 2010-04-01 | 2010-04-07 | 55d |  | 40h |  | medium | (2) Normal |
| 2225 | 1.2.5.5.2.1 | Update Training Documentation | 5d? | 2010-04-01 | 2010-04-07 | 55d | Polisano Riccardo | 40h |  | medium | (2) Normal |

| ID | WBS | Task | Type | Duration | Start | Finish | Predecessors | Total slack | Constraint | Resources | Work | Cost | Text23 | Text30 |
| --- | --- | --- | --- | --- | --- | --- | --- | --- | --- | --- | --- | --- | --- | --- |
| 2226 | 1.2.5.5.3 | **PRB Artifacts** |  | 1d? | 2010-04-01 | 2010-04-01 |  | 59d |  |  | 56h |  | medium | (2) Normal |
| 2227 | 1.2.5.5.3.1 | Configuration Audit Report Template |  | 1d? | 2010-04-01 | 2010-04-01 |  | 59d |  | Polisano Riccardo | 8h |  | medium | (2) Normal |
| 2228 | 1.2.5.5.3.2 | Lessons Learned Report Template |  | 1d? | 2010-04-01 | 2010-04-01 |  | 59d |  | Polisano Riccardo | 8h |  | medium | (2) Normal |
| 2229 | 1.2.5.5.3.3 | Lessons Learned Tool |  | 1d? | 2010-04-01 | 2010-04-01 |  | 59d |  | Polisano Riccardo | 8h |  | medium | (2) Normal |
| 2230 | 1.2.5.5.3.4 | N+ Milestone Review Report and Checklist |  | 1d? | 2010-04-01 | 2010-04-01 |  | 59d |  | Polisano Riccardo | 8h |  | medium | (2) Normal |
| 2231 | 1.2.5.5.3.5 | Project Management Plan Review Checklist |  | 1d? | 2010-04-01 | 2010-04-01 |  | 59d |  | Polisano Riccardo | 8h |  | medium | (2) Normal |
| 2232 | 1.2.5.5.3.6 | Project Quality Check Template |  | 1d? | 2010-04-01 | 2010-04-01 |  | 59d |  | Polisano Riccardo | 8h |  | medium | (2) Normal |
| 2233 | 1.2.5.5.3.7 | QMP Status Report Template |  | 1d? | 2010-04-01 | 2010-04-01 |  | 59d |  | Polisano Riccardo | 8h |  | medium | (2) Normal |
| 2234 | 1.2.5.6 | GA | milestone | 0d | 2010-04-30 | 2010-04-30 | 67 | 38d |  |  |  |  | medium | (2) Normal |
| 2235 | 1.2.6 | **Portal Functionality** |  | 94d? | 2010-02-01 | 2010-06-10 | 69 | 0d |  |  | 731.2h | 20 | medium | (2) Normal |
| 2236 | 1.2.6.1 | Start Portal | milestone | 0d | 2010-02-01 | 2010-02-01 |  | 0d | must start on 2010-02-01 |  |  |  | medium | (2) Normal |
| 2237 | 1.2.6.2 | **Project Management** |  | 26d? | 2010-05-04 | 2010-06-08 |  | 3d |  |  | 96h | 20 | medium | (2) Normal |
| 2238 | 1.2.6.2.1 | **Prepare Project Progress Review Report** |  | 26d | 2010-05-04 | 2010-06-08 |  | 3d |  |  | 12h |  | medium | (2) Normal |
| 2239 | 1.2.6.2.1.1 | Create Status Report W 17 |  | 1d | 2010-05-04 | 2010-05-04 |  | 28d | start no earlier than 2010-05-04 | Scheidegger Ruedi [25%] | 2h |  | medium | (2) Normal |
| 2240 | 1.2.6.2.1.2 | Create Status Report W 18 |  | 1d | 2010-05-11 | 2010-05-11 |  | 23d | start no earlier than 2010-05-11 | Scheidegger Ruedi [25%] | 2h |  | medium | (2) Normal |
| 2241 | 1.2.6.2.1.3 | Create Status Report W 19 |  | 1d | 2010-05-18 | 2010-05-18 |  | 18d | start no earlier than 2010-05-18 | Scheidegger Ruedi [25%] | 2h |  | medium | (2) Normal |
| 2242 | 1.2.6.2.1.4 | Create Status Report W 20 |  | 1d | 2010-05-25 | 2010-05-25 |  | 13d | start no earlier than 2010-05-25 | Scheidegger Ruedi [25%] | 2h |  | medium | (2) Normal |
| 2243 | 1.2.6.2.1.5 | Create Status Report W 21 |  | 1d | 2010-06-01 | 2010-06-01 |  | 8d | start no earlier than 2010-06-01 | Scheidegger Ruedi [25%] | 2h |  | medium | (2) Normal |
| 2244 | 1.2.6.2.1.6 | Create Status Report W 22 |  | 1d | 2010-06-08 | 2010-06-08 |  | 3d | start no earlier than 2010-06-08 | Scheidegger Ruedi [25%] | 2h |  | medium | (2) Normal |
| 2245 | 1.2.6.2.2 | **Project Closure** |  | 9d? | 2010-05-25 | 2010-06-04 |  | 0d |  |  | 84h | 20 | medium | (2) Normal |
| 2246 | 1.2.6.2.2.1 | Verify Project Acceptance |  | 3d? | 2010-05-25 | 2010-05-27 |  | 0d | as late as possible | Scheidegger Ruedi | 24h |  | medium | (2) Normal |
| 2247 | 1.2.6.2.2.2 | Execute Administrative Closure (RC) |  | 1d? | 2010-05-28 | 2010-05-28 | 2246 | 0d | as late as possible | Scheidegger Ruedi | 8h |  | medium | (2) Normal |
| 2248 | 1.2.6.2.2.3 | Project Sign-off |  | 1d? | 2010-05-31 | 2010-05-31 | 2247 | 0d | as late as possible | Scheidegger Ruedi | 8h |  | medium | (2) Normal |
| 2249 | 1.2.6.2.2.4 | Submit Data in Measurement Repository |  | 1d? | 2010-06-01 | 2010-06-01 | 2248 | 0d | as late as possible | Scheidegger Ruedi | 8h |  | medium | (2) Normal |
| 2250 | 1.2.6.2.2.5 | Transfer Project Assets to Process Asset Library |  | 1d? | 2010-06-02 | 2010-06-02 | 2249 | 0d | as late as possible | Scheidegger Ruedi | 8h |  | medium | (2) Normal |
| 2251 | 1.2.6.2.2.6 | Submit Project Risk to Risk repository |  | 1d? | 2010-06-01 | 2010-06-01 | 2248 | 0d | as late as possible | Lüthi Rico F. [50%] | 4h | 4 | medium | (2) Normal |
| 2252 | 1.2.6.2.2.7 | Submit Selected Project Artifacts to Knowledge Management Repository |  | 1d? | 2010-06-03 | 2010-06-03 | 2250 | 0d | as late as possible | Scheidegger Ruedi [50%] | 4h |  | medium | (2) Normal |
| 2253 | 1.2.6.2.2.8 | Archive Baseline Work products and Records |  | 2d? | 2010-06-02 | 2010-06-03 | 2251 | 0d | as late as possible | Lüthi Rico F. | 16h | 16 | medium | (2) Normal |
| 2254 | 1.2.6.2.2.9 | Release Project Resources |  | 1d? | 2010-06-04 | 2010-06-04 | 2252, 2253 | 0d | as late as possible | Scheidegger Ruedi [50%] | 4h |  | medium | (2) Normal |

| ID | WBS | Task | Type | Duration | Start | Finish | Predecessors | Total slack | Free slack | Resources | Work | Text23 | Text30 |
| --- | --- | --- | --- | --- | --- | --- | --- | --- | --- | --- | --- | --- | --- |
| 2255 | 1.2.6.3 | **Test Management** |  | 29d | 2010-05-03 | 2010-06-10 |  | 9d |  |  | 232h | medium | (2) Normal |
| 2256 | 1.2.6.3.1 | **Planning Tasks** |  | 5d | 2010-05-03 | 2010-05-07 | 71 | 9d | 0d |  | 40h |  |  |
| 2257 | 1.2.6.3.1.1 | Change Requests (AR, CS, LPA) |  | 1d | 2010-05-03 | 2010-05-03 |  | 9d | 0d | Oberndorfer Richard | 8h |  |  |
| 2258 | 1.2.6.3.1.2 | Test Server Allocation/Assignment Plan |  | 2d | 2010-05-04 | 2010-05-05 | 2257 | 9d | 0d | Oberndorfer Richard | 16h |  |  |
| 2259 | 1.2.6.3.1.3 | Test Adjustment with Component Suppliers |  | 2d | 2010-05-06 | 2010-05-07 | 2258 | 9d |  | Oberndorfer Richard | 16h |  |  |
| 2260 | 1.2.6.3.2 | **TIP-D** |  | 8d | 2010-05-10 | 2010-05-19 | 2256 | 9d | 0d |  | 64h |  |  |
| 2261 | 1.2.6.3.2.1 | Meetings |  | 0.5d | 2010-05-10 | 2010-05-10 |  | 9d | 0d | Oezgen Oya | 4h |  |  |
| 2262 | 1.2.6.3.2.2 | Build and Install ZipFile |  | 0.5d | 2010-05-10 | 2010-05-10 | 2261 | 9d | 0d | Oezgen Oya | 4h |  |  |
| 2263 | 1.2.6.3.2.3 | T1 Tests |  | 3d | 2010-05-11 | 2010-05-13 | 2262 | 9d | 0d | Oezgen Oya | 24h |  |  |
| 2264 | 1.2.6.3.2.4 | T4 Tests |  | 4d | 2010-05-14 | 2010-05-19 | 2263 | 9d |  | Oezgen Oya | 32h |  |  |
| 2265 | 1.2.6.3.3 | **Integration and Deploy** |  | 5d | 2010-05-20 | 2010-05-26 | 2260 | 9d | 0d |  | 40h |  |  |
| 2266 | 1.2.6.3.3.1 | Delivery Check |  | 0.5d | 2010-05-20 | 2010-05-20 |  | 9d | 0d | Bu Sigve | 4h |  |  |
| 2267 | 1.2.6.3.3.2 | SDSS Bundling |  | 0.5d | 2010-05-20 | 2010-05-20 | 2266 | 9d | 0d | Bu Sigve | 4h |  |  |
| 2268 | 1.2.6.3.3.3 | TIP Deploy for Remove Tests |  | 2d | 2010-05-21 | 2010-05-24 | 2267 | 9d | 0d | Bu Sigve | 16h |  |  |
| 2269 | 1.2.6.3.3.4 | TIP Remove Tests |  | 1d | 2010-05-25 | 2010-05-25 | 2268 | 9d | 0d | Bu Sigve | 8h |  |  |
| 2270 | 1.2.6.3.3.5 | TIP Deploy for Test Applications |  | 1d | 2010-05-26 | 2010-05-26 | 2269 | 9d |  | Bu Sigve | 8h |  |  |
| 2271 | 1.2.6.3.4 | **TIP Integration Test** |  | 5d | 2010-05-27 | 2010-06-02 | 2265 | 9d | 0d |  | 40h |  |  |
| 2272 | 1.2.6.3.4.1 | T1 |  | 1d | 2010-05-27 | 2010-05-27 |  | 9d | 0d | Oberndorfer Richard | 8h |  |  |
| 2273 | 1.2.6.3.4.2 | T4 |  | 4d | 2010-05-28 | 2010-06-02 | 2272 | 9d | 0d | Oberndorfer Richard | 32h |  |  |
| 2274 | 1.2.6.3.4.3 | T5 | milestone | 0d | 2010-06-02 | 2010-06-02 | 2273 | 9d | 0d |  |  |  |  |
| 2275 | 1.2.6.3.4.4 | Monitoring | milestone | 0d | 2010-06-02 | 2010-06-02 | 2274 | 9d | 0d |  |  |  |  |
| 2276 | 1.2.6.3.4.5 | Batch TA | milestone | 0d | 2010-06-02 | 2010-06-02 | 2275 | 9d |  |  |  |  |  |
| 2277 | 1.2.6.3.5 | **Release for Supplier** |  | 0d | 2010-06-02 | 2010-06-02 | 2264, 2271 | 9d | 0d |  |  |  |  |
| 2278 | 1.2.6.3.5.1 | Supplier Release Date | milestone | 0d | 2010-06-02 | 2010-06-02 |  | 9d |  |  |  |  |  |

Notes:
- 2272: This will be done for: / Scenario1: Single / Scenario2: Clone / Prepare Application: / - Generate Application with OT / - Build Application with QMB / Deploy/Remove Application: / - Deploy Application with SDSS / - Remove Application with SDSS / - Deploy Application with SDSS / Test Application: / - Activate Application (Central Manager or Local Command) / - Start Application (Central Manager or Local Command) / - Run JUNIT Tests for Application / - Stop Application (Central Manager or Local Command) / - De-Activate Application (Central Manager or Local Command) / Remove Application: / - Activate Application (Central Manager or Local Command) / - Start Application (Central Manager or Local Command) / - Remove Application with SDSS
- 2273: This will be done for: / Scenario1: PL: Single BL: Single / Scenario2: PL: Clone BL: Cluster / Prepare Application: / - Generate Application with OT / - Build Application with QMB / Deploy/Remove Application: / - Deploy Application with SDSS / - Remove Application with SDSS / - Deploy Application with SDSS / Test Application: / - Activate Application (Central Manager or Local Command) / - Start Application (Central Manager or Local Command) / - Run JUNIT Tests for Application / - Stop Application (Central Manager or Local Command) / - De-Activate Application (Central Manager or Local Command) / Remove Application: / - Activate Application (Central Manager or Local Command) / - Start Application (Central Manager or Local Command) / - Remove Application with SDSS
- 2274: This will be done for: / Scenario1: PL in Public DMZ: Single / Scenario2: PL in Customer DMZ: Single BL: Single / Scenario3: PL:in CustomerDMZ: Clone BL: Cluster / Prepare Application: / - Generate Application with OT / - Build Application with QMB / Deploy/Remove Application: / - Deploy Application with SDSS / - Remove Application with SDSS / - Deploy Application with SDSS / Test Application: / - Activate Application (Central Manager or Local Command) / - Start Application (Central Manager or Local Command) / - Run JUNIT Tests for Application / - Stop Application (Central Manager or Local Command) / - De-Activate Application (Central Manager or Local Command) / Remove Application: / - Activate Application (Central Manager or Local Command) / - Start Application (Central Manager or Local Command) / - Remove Application with SDSS
- 2275: - Logfile Monitoring / - Logtransport / - Process Monitoring
- 2276: Prepare Application: / - Generate Application with OT / - Build Application with QMB / Deploy/Remove Application: / - Deploy Application with SDSS / - Remove Application with SDSS / - Deploy Application with SDSS / Test Application: / - Activate Application (Central Manager or Local Command) / - Run Test Scripts / - Stop Application (Central Manager or Local Command) / Remove Application: / - Start Application (Central Manager or Local Command) / - Remove Application with SDSS

| ID | WBS | Task | Type | Duration | Start | Finish | Predecessors | Total slack | Free slack | Constraint | Resources | Work | Text23 | Text30 |
| --- | --- | --- | --- | --- | --- | --- | --- | --- | --- | --- | --- | --- | --- | --- |
| 2279 | 1.2.6.3.6 | **TIP Integration Test Continued** |  | 6d | 2010-06-03 | 2010-06-10 | 2277 | 9d |  |  |  | 48h |  |  |
| 2280 | 1.2.6.3.6.1 | T5 |  | 6d | 2010-06-03 | 2010-06-10 |  | 9d |  |  | Bu Sigve | 48h |  |  |
| 2281 | 1.2.6.4 | **JAP Engineering** |  | 60d | 2010-02-01 | 2010-04-23 |  | 35d |  |  |  | 403.2h | medium | (2) Normal |
| 2282 | 1.2.6.4.1 | Develop Portal (Temp) |  | 60d | 2010-02-01 | 2010-04-23 | 2236 | 35d | 0d |  | Piol Domenico [84%] | 403.2h | medium | (2) Normal |
| 2283 | 1.2.6.5 | Portal GA | milestone | 0d | 2010-04-23 | 2010-04-23 | 2282 | 35d |  |  |  |  | medium | (2) Normal |
| 2284 | 1.2.7 | End JAP AR6 | milestone | 0d | 2010-06-11 | 2010-06-11 | 2283 | 0d |  | as late as possible |  |  | medium | (2) Normal |
