# Projektplan

Schedule from MS Project, 2004-10-04 to 2006-02-03, A marks actual dates.
NOB AR4.0
CREDIT SUISSE

## Calendars

- Standard: Mon-Fri 08:00-12:00, 13:00-17:00; Sat-Sun off. Exceptions (off unless hours are given): 2005-03-13 08:00-12:00, 13:00-17:00.

## Resources

| Resource |
| --- |
| A.Knobel |
| M.Maute/P.Bhushan |
| C.Frutiger |
| P.Saxena |
| IT Team |
| IT Team/CTS |
| C.Frutiger/CTS |
| BusinessTeam |
| T.Molag |
| A.Knobel/C.Frutiger |
| M.Maute |
| S.Rayo |
| D.Guach |
| D.Gauch |
| T.Molag/D.Gauch |
| N.Evangelista |
| T.Etter |
| H.Meyer |
| D.Gauch/T.Molag/C.Frutiger |
| C.Wolf |
| In&Out |
| D.Gauch/T.Molag |
| PRB |
| T.Molag/C.Wolf |
| H.Meier |
| C.Frutiger/T.Mayer |
| D.Gauch/C.Frutiger/T.Mayer/T.Molag |
| T.Molag/H.Meyer |
| H.Meier/D.Gauch/T.Molag |
| P.Bhushan/M.Maute |
| M.Maute/C.Frutiger,T.Molag/D.Gauch |
| T.Mayer |
| T,Mayer |
| S.Mishra |
| Ergon |
| CTS |
| J.Fetthauer |
| M.Zulliger |
| F.Neyen |
| A.Gannon |
| Cognizant |
| Business |
| Business Team |
| Credit Suisse |
| Business Test-Team |
| Cognizant Offshore |
| CTS Offshore |
| Business Test Team |
| M.Dixit |
| Ch. Frutiger |
| h. Mayer |
| Th. Mayer |
| tbd |
| H. Meier |
| N.Evangeslita |
| adhoc |
| adoc |
| PCO |
| JAP2E |
| CCB |
| M.Seema |
| CH. Meier |
| M.Dixit(Off-shore) |
| A.krishnan |
| BPL |
| R.Degen |

## Schedule

| ID | WBS | Task | Type | Duration | Start | Finish | Complete | Remaining | Total slack | Constraint | Resources | Work | Actual work |
| --- | --- | --- | --- | --- | --- | --- | --- | --- | --- | --- | --- | --- | --- |
| 1 | 1 | **NOB AR4 - Projekt Mgmt Ergebnisse** |  | 351d? | 2004-10-04 A | 2006-02-03 | 24% | 266.83d? | 0d |  |  | 39600h | 8560h |
| 2 | 1.1 | **Projektphasenpapiere PO** |  | 52d? | 2004-11-01 A | 2005-01-12 A | 100% |  |  |  |  |  |  |
| 3 | 1.1.1 | Information Security Classification & Business Impact Analysis |  | 1d? | 2004-11-01 A | 2004-11-01 A | 100% |  |  | start no earlier than 2004-11-01 |  |  |  |
| 4 | 1.1.2 | Anbieteridentifikation |  | 1d? | 2004-11-01 A | 2004-11-01 A | 100% |  |  | start no earlier than 2004-11-01 |  |  |  |
| 5 | 1.1.3 | Aufwandschätzung MT 230 |  | 1d? | 2004-11-01 A | 2004-11-01 A | 100% |  |  | start no earlier than 2004-11-01 |  |  |  |
| 6 | 1.1.4 | Aufwandschätzung Ressourcenmethode/AP |  | 1d? | 2004-11-01 A | 2004-11-01 A | 100% |  |  | start no earlier than 2004-11-01 |  |  |  |
| 7 | 1.1.5 | Aufwandschätzung CTS |  | 1d? | 2004-11-01 A | 2004-11-01 A | 100% |  |  | start no earlier than 2004-11-01 |  |  |  |
| 8 | 1.1.6 | Communication Plan |  | 1d? | 2004-11-01 A | 2004-11-01 A | 100% |  |  | start no earlier than 2004-11-01 |  |  |  |
| 9 | 1.1.7 | Deploymentkonzept |  | 1d? | 2004-11-01 A | 2004-11-01 A | 100% |  |  | start no earlier than 2004-11-01 |  |  |  |
| 10 | 1.1.8 | Einsatz Standardkomponenten (Checkliste) |  | 1d? | 2004-11-01 A | 2004-11-01 A | 100% |  |  | start no earlier than 2004-11-01 |  |  |  |
| 11 | 1.1.9 | Offshoring Ergebnisse (Toolkit) |  | 1d? | 2004-11-01 A | 2004-11-01 A | 100% |  |  | start no earlier than 2004-11-01 |  |  |  |
| 12 | 1.1.10 | Planning Offer (PO) |  | 1d? | 2004-11-01 A | 2004-11-01 A | 100% |  |  | start no earlier than 2004-11-01 |  |  |  |
| 13 | 1.1.11 | Projektorganisation |  | 1d? | 2004-11-01 A | 2004-11-01 A | 100% |  |  | start no earlier than 2004-11-01 |  |  |  |
| 14 | 1.1.12 | Projektplan |  | 1d? | 2004-11-01 A | 2004-11-01 A | 100% |  |  | start no earlier than 2004-11-01 |  |  |  |
| 15 | 1.1.13 | QS-Plan |  | 1d? | 2004-11-01 A | 2004-11-01 A | 100% |  |  | start no earlier than 2004-11-01 |  |  |  |
| 16 | 1.1.14 | Risikoanalyse |  | 1d? | 2004-11-01 A | 2004-11-01 A | 100% |  |  | start no earlier than 2004-11-01 |  |  |  |
| 17 | 1.1.15 | PRB Vorabcheck mit KX,KARQ,KT,PRB,KFCM |  | 1d? | 2004-11-01 A | 2004-11-01 A | 100% |  |  | start no earlier than 2004-11-01 |  |  |  |
| 18 | 1.1.16 | Schnittstellenbeschreibung |  | 1d? | 2004-11-01 A | 2004-11-01 A | 100% |  |  | start no earlier than 2004-11-01 |  |  |  |
| 19 | 1.1.17 | Business Case (o) |  | 1d? | 2004-11-01 A | 2004-11-01 A | 100% |  |  | start no earlier than 2004-11-01 |  |  |  |
| 20 | 1.1.18 | BIA |  | 1d? | 2004-11-01 A | 2004-11-01 A | 100% |  |  | start no earlier than 2004-11-01 |  |  |  |
| 21 | 1.1.19 | Budgetklärung |  | 1d? | 2004-11-01 A | 2004-11-01 A | 100% |  |  | start no earlier than 2004-11-01 |  |  |  |
| 22 | 1.1.20 | Einreichen an PRB | milestone | 0d? | 2004-12-20 A | 2004-12-20 A | 100% |  |  |  |  |  |  |
| 23 | 1.1.21 | Approval von PRB | milestone | 0d | 2005-01-12 A | 2005-01-12 A | 100% |  |  | start no earlier than 2005-01-12 |  |  |  |
| 24 | 1.2 | **Projektphasenpapiere RO** |  | 74d? | 2005-01-12 A | 2005-04-22 A | 100% |  |  |  |  | 3192h | 3192h |
| 25 | 1.2.1 | Define RO Writing Tasks |  | 1d | 2005-02-07 A | 2005-02-07 A | 100% |  |  | start no earlier than 2005-02-04 | T.Molag/D.Gauch | 8h | 8h |
| 26 | 1.2.2 | Provide Work assignments for all external employees |  | 1d | 2005-01-19 A | 2005-01-19 A | 100% |  |  | start no earlier than 2005-01-18 | D.Gauch | 8h | 8h |
| 27 | 1.2.3 | Auflagen aus PO Phase bereinigen |  | 1d | 2005-01-28 A | 2005-01-28 A | 100% |  |  | finish no earlier than 2005-01-28 | D.Gauch | 8h | 8h |
| 28 | 1.2.4 | BCP Realisierungs- und Testkonzept |  | 28d | 2005-02-01 A | 2005-03-10 A | 100% |  |  | start no earlier than 2005-02-01 | N.Evangelista | 224h | 224h |
| 29 | 1.2.5 | Effort Estimation MT 230 |  | 1d | 2005-02-14 A | 2005-02-14 A | 100% |  |  | start no earlier than 2005-02-14 | D.Gauch | 8h | 8h |
| 30 | 1.2.6 | Effort Estimation Ressourcenmethode/AP |  | 1d | 2005-02-14 A | 2005-02-14 A | 100% |  |  | start no earlier than 2005-02-14 | D.Gauch | 8h | 8h |
| 31 | 1.2.7 | Prepare /Initiate Fix price Offer from CTS |  | 11d | 2005-02-14 A | 2005-02-28 A | 100% |  |  | start no earlier than 2005-02-14 | D.Gauch | 88h | 88h |
| 32 | 1.2.8 | Bestellung JAP IT/PTA/Prod environment |  | 41d | 2005-01-13 A | 2005-03-10 A | 100% |  |  | start no earlier than 2005-01-13 | T.Molag | 328h | 328h |
| 33 | 1.2.9 | Business Case shortened |  | 28d | 2005-02-01 A | 2005-03-10 A | 100% |  |  | start no earlier than 2005-02-01 | T.Etter | 224h | 224h |
| 34 | 1.2.10 | Communication Plan |  | 28d | 2005-02-01 A | 2005-03-10 A | 100% |  |  | start no earlier than 2005-02-01 | T.Etter | 224h | 224h |
| 35 | 1.2.11 | Firewall Aenderungsantrag PTA |  | 1d | 2005-03-11 A | 2005-03-11 A | 100% |  |  | start no earlier than 2005-03-11 | H.Meyer | 8h | 8h |
| 36 | 1.2.12 | Realisation Offer (RO) |  | 41d | 2005-01-13 A | 2005-03-10 A | 100% |  |  | start no earlier than 2005-01-13 | D.Gauch/T.Molag/C.Frutiger | 328h | 328h |
| 37 | 1.2.13 | Budgetklärung RE Phase |  | 20d | 2005-02-01 A | 2005-02-28 A | 100% |  |  | finish no earlier than 2005-02-28 | D.Gauch | 160h | 160h |
| 38 | 1.2.14 | Projektplan Realisierung for CTS (MS Project) |  | 1d | 2005-02-01 A | 2005-02-01 A | 100% |  |  | start no earlier than 2005-02-01 | D.Gauch | 8h | 8h |
| 39 | 1.2.15 | QS-Plan |  | 8d | 2005-03-01 A | 2005-03-10 A | 100% |  |  | start no earlier than 2005-03-01 | T.Molag | 64h | 64h |
| 40 | 1.2.16 | Projektorganisation RE Phase |  | 8d | 2005-03-01 A | 2005-03-10 A | 100% |  |  | start no earlier than 2005-03-01 | T.Molag | 64h | 64h |
| 41 | 1.2.17 | Risikoanalyse |  | 41d | 2005-01-13 A | 2005-03-10 A | 100% |  |  | start no earlier than 2005-01-13 | C.Wolf | 328h | 328h |
| 42 | 1.2.18 | Sicherheitskonzept |  | 19d | 2005-02-01 A | 2005-02-25 A | 100% |  |  | start no earlier than 2005-02-01 | In&Out | 152h | 152h |
| 43 | 1.2.19 | Review Sicherheitskonzept (incl. KX) |  | 3d | 2005-03-01 A | 2005-03-03 A | 100% |  |  | start no earlier than 2005-03-01 | C.Frutiger | 24h | 24h |
| 44 | 1.2.20 | Fixpreis Offerte CTS einfordern |  | 9d | 2005-02-15 A | 2005-02-25 A | 100% |  |  | start no earlier than 2005-02-15 | D.Gauch | 72h | 72h |
| 45 | 1.2.21 | Schaetzung der zu erwartenden Systembelastung |  | 12d | 2005-01-13 A | 2005-01-28 A | 100% |  |  | start no earlier than 2005-01-13 | C.Frutiger | 96h | 96h |
| 46 | 1.2.22 | Testdrehbuch |  | 28d | 2005-02-01 A | 2005-03-10 A | 100% |  |  | start no earlier than 2005-02-01 | N.Evangelista | 224h | 224h |
| 47 | 1.2.23 | Testkonzept |  | 19d | 2005-02-01 A | 2005-02-25 A | 100% |  |  | start no earlier than 2005-02-01 | N.Evangelista | 152h | 152h |
| 48 | 1.2.24 | Testplan (welche Testumgebung brauchen wir wann, welche Umsysteme-alle?) |  | 19d | 2005-02-01 A | 2005-02-25 A | 100% |  |  | start no earlier than 2005-02-01 | N.Evangelista | 152h | 152h |
| 49 | 1.2.25 | Review Coverage of trading test cases |  | 1d? | 2005-04-22 A | 2005-04-22 A | 100% |  |  | finish no earlier than 2005-04-22 | N.Evangelista | 8h | 8h |
| 50 | 1.2.26 | Work Breakdown Structure (WBS) |  | 12d | 2005-01-13 A | 2005-01-28 A | 100% |  |  | start no earlier than 2005-01-13 | D.Gauch/T.Molag | 96h | 96h |
| 51 | 1.2.27 | PRB Vorabcheck mit KX…, KFR,KPAE,KARQ,KT,PRB,KFPM |  | 15d | 2005-03-28 A | 2005-04-15 A | 100% |  |  | start no earlier than 2005-02-28 | T.Molag | 120h | 120h |
| 52 | 1.2.28 | Tailoring RE phase TOP PV |  | 1d | 2005-01-12 A | 2005-01-12 A | 100% |  |  | start no earlier than 2005-01-12 | D.Gauch | 8h | 8h |
| 53 | 1.3 | Einreichen an PRB | milestone | 0d | 2005-04-19 A | 2005-04-19 A | 100% |  |  | start no earlier than 2005-03-18 | D.Gauch/T.Molag |  |  |
| 54 | 1.4 | Approval RO von PRB | milestone | 0d | 2005-05-06 | 2005-05-06 |  |  | 150d | start no earlier than 2005-05-06 | PRB |  |  |

| ID | WBS | Task | Type | Duration | Start | Finish | Predecessors | Complete | Total slack | Constraint | Resources | Work |
| --- | --- | --- | --- | --- | --- | --- | --- | --- | --- | --- | --- | --- |
| 55 | 1.5 | **Exit Eval feasibility Study** |  | 42d | 2004-10-22 A | 2004-12-20 A |  | 100% |  |  |  |  |
| 56 | 1.5.1 | Auftrag festlegen |  | 2d | 2004-10-22 A | 2004-10-25 A |  | 100% |  | start no earlier than 2004-10-22 |  |  |
| 57 | 1.5.2 | Analyse erstellen |  | 35d | 2004-10-28 A | 2004-12-15 A |  | 100% |  |  |  |  |
| 58 | 1.5.3 | Ergebenisse präsentieren |  | 1d | 2004-12-16 A | 2004-12-16 A | 57 | 100% |  |  |  |  |
| 59 | 1.5.4 | STC Vorbereiten |  | 1d | 2004-12-17 A | 2004-12-17 A | 58 | 100% |  |  |  |  |
| 60 | 1.5.5 | Entscheid für AR 4 | milestone | 1d | 2004-12-20 A | 2004-12-20 A | 59 | 100% |  |  |  |  |
| 61 | 1.6 | **Kick-off Meeting PO** |  | 11d | 2004-10-18 A | 2004-11-01 A |  | 100% |  |  |  |  |
| 62 | 1.6.1 | Einladung versenden |  | 0.2d | 2004-10-18 A | 2004-10-18 A |  | 100% |  | start no earlier than 2004-10-18 |  |  |
| 63 | 1.6.2 | Slides vorbereiten ( Projectdefinition) |  | 5d | 2004-10-18 A | 2004-10-22 A |  | 100% |  |  |  |  |
| 64 | 1.6.3 | Projektumfang festlegen |  | 5d | 2004-10-18 A | 2004-10-22 A |  | 100% |  |  |  |  |
| 65 | 1.6.4 | Projektabgrenzung festlegen |  | 5d | 2004-10-18 A | 2004-10-22 A |  | 100% |  |  |  |  |
| 66 | 1.6.5 | Stakeholders bestimmen |  | 5d | 2004-10-18 A | 2004-10-22 A |  | 100% |  |  |  |  |
| 67 | 1.6.6 | Dependencies erstellen |  | 5d | 2004-10-18 A | 2004-10-22 A |  | 100% |  |  |  |  |
| 68 | 1.6.7 | Schnittstellenprojekte identifizieren |  | 5d | 2004-10-18 A | 2004-10-22 A |  | 100% |  |  |  |  |
| 69 | 1.6.8 | IT-Projectrules festlegen (Directories,Email, Ferien,…) |  | 5d | 2004-10-18 A | 2004-10-22 A |  | 100% |  |  |  |  |
| 70 | 1.6.9 | Tools festlegen,Sprache der Docs. festlegen |  | 5d | 2004-10-18 A | 2004-10-22 A |  | 100% |  |  |  |  |
| 71 | 1.6.10 | Qualitätsplan |  | 5d | 2004-10-18 A | 2004-10-22 A |  | 100% |  |  |  |  |
| 72 | 1.6.11 | Meeting & Reportingübersicht erstellen |  | 5d | 2004-10-18 A | 2004-10-22 A |  | 100% |  |  |  |  |
| 73 | 1.6.12 | Organigramm festlegen |  | 5d | 2004-10-18 A | 2004-10-22 A |  | 100% |  |  |  |  |
| 74 | 1.6.13 | Approval von Business für Projectdefinition | milestone | 0d | 2004-11-01 A | 2004-11-01 A |  | 100% |  | start no earlier than 2004-11-01 |  |  |
| 75 | 1.7 | **MeetingTasks** |  | 285d | 2004-10-04 | 2005-11-04 |  |  | 66d |  |  | 4848h |
| 76 | 1.7.1 | Teammeeting (weekly) vorbereiten (CR's, Issues, Risk,Statusrep.,Handouts) |  | 264d | 2004-11-01 | 2005-11-02 |  |  | 21d | start no earlier than 2004-11-01 | C.Wolf | 2112h |
| 77 | 1.7.2 | Requirements Abstimmungs Meeting with OTEx |  | 58d | 2004-12-01 | 2005-02-18 |  |  | 205d | start no earlier than 2004-12-01 | M.Maute | 464h |
| 78 | 1.7.3 | Teilnahme OTEX / MCP Facadenmeeting | milestone | 0d | 2004-10-04 | 2004-10-04 |  |  | 304d | start no earlier than 2004-10-04 | A.Knobel/C.Frutiger |  |
| 79 | 1.7.4 | Teilnahme Businessmeeting |  | 284d | 2004-10-04 | 2005-11-02 |  |  | 21d |  | D.Gauch/T.Molag | 2272h |
| 80 | 1.7.5 | Kick.off JAP E2E PO | milestone | 0d | 2004-10-25 | 2004-10-25 |  |  | 290d | start no earlier than 2004-10-25 | D.Gauch |  |
| 81 | 1.7.6 | Kick off Satelittenprojekte | milestone | 0d | 2004-10-29 | 2004-10-29 |  |  | 286d | start no earlier than 2004-10-29 | D.Gauch/T.Molag |  |
| 82 | 1.7.7 | Kick off BS70 | milestone | 0d | 2004-11-05 | 2004-11-05 |  |  | 327d | start no earlier than 2004-11-05 | T.Molag |  |
| 83 | 1.7.8 | Kick.off OTEX | milestone | 0d | 2004-10-15 | 2004-10-15 |  |  | 296d | start no earlier than 2004-10-15 | D.Gauch/T.Molag |  |
| 84 | 1.7.9 | Kick-off PCO/Prozess klären | milestone | 0d | 2005-02-10 | 2005-02-10 |  |  | 258d | start no earlier than 2005-02-10 | T.Molag |  |
| 85 | 1.7.10 | Kick-off JAP E2E RO | milestone | 0d | 2005-02-10 | 2005-02-10 |  |  | 258d | start no earlier than 2005-02-10 | T.Molag |  |
| 86 | 1.7.11 | Periodisches Teammeeting Satelittenprojekte (monthly) | milestone | 0d | 2005-11-04 | 2005-11-04 |  |  | 66d | start no earlier than 2005-11-04 | T.Molag |  |
| 87 | 1.7.12 | Decision Meeting Plattformentscheid (JAP 2.1 oder 3.0 ) | milestone | 0d | 2005-02-02 | 2005-02-02 |  |  | 218d | start no earlier than 2005-02-02 | D.Gauch |  |

| ID | WBS | Task | Type | Duration | Start | Finish | Complete | Remaining | Total slack | Constraint | Resources | Work | Actual work |
| --- | --- | --- | --- | --- | --- | --- | --- | --- | --- | --- | --- | --- | --- |
| 88 | 1.8 | **Schnittstellen/Planung & Bereitstellung** |  | 128d? | 2004-10-04 | 2005-03-29 |  |  | 223d |  | T.Molag | 1096h |  |
| 89 | 1.8.1 | Planung einfordern von (JAP,OTEx, MCP TF,Hostsvc,Plattformverfügbarkeit) |  | 1d | 2004-10-04 | 2004-10-04 |  |  | 304d |  | C.Wolf | 8h |  |
| 90 | 1.8.2 | AT/IT/PTA/Prod Environment Setup planen |  | 1d | 2004-10-04 | 2004-10-04 |  |  | 350d |  | T.Molag | 8h |  |
| 91 | 1.8.3 | AT/IT/PTA/Prod Environment Setup bereitstellen | milestone | 1d | 2004-10-04 | 2004-10-04 |  |  | 304d |  | H.Meier | 8h |  |
| 92 | 1.8.4 | **Satellitenprojekte** |  | 1d? | 2004-10-04 | 2004-10-04 |  |  | 350d |  |  | 48h |  |
| 93 | 1.8.4.1 | Planungsdaten einfordern | milestone | 1d | 2004-10-04 | 2004-10-04 |  |  | 350d |  | T.Molag | 8h |  |
| 94 | 1.8.4.2 | Review PO/Design | milestone | 1d | 2004-10-04 | 2004-10-04 |  |  | 304d |  | C.Frutiger/T.Mayer | 8h |  |
| 95 | 1.8.4.3 | Opt: Review Code | milestone | 1d | 2004-10-04 | 2004-10-04 |  |  | 304d | start no earlier than 2004-10-04 | C.Frutiger/T.Mayer | 8h |  |
| 96 | 1.8.4.4 | Review GUI | milestone | 1d | 2004-10-04 | 2004-10-04 |  |  | 304d |  | T.Etter | 8h |  |
| 97 | 1.8.4.5 | Review Testconcept |  | 1d? | 2004-10-04 | 2004-10-04 |  |  | 350d |  |  |  |  |
| 98 | 1.8.4.6 | Review RO & Planning |  | 1d? | 2004-10-04 | 2004-10-04 |  |  | 304d |  | D.Gauch/C.Frutiger/T.Mayer/T.Molag | 8h |  |
| 99 | 1.8.4.7 | Integrationsphase planen | milestone | 1d | 2004-10-04 | 2004-10-04 |  |  | 304d |  | T.Molag/C.Wolf | 8h |  |
| 100 | 1.8.5 | Test Toolbereitstellung |  | 1d? | 2005-03-29 | 2005-03-29 |  |  | 223d | finish no earlier than 2005-03-29 |  |  |  |
| 101 | 1.9 | **Projektplanung** |  | 285d? | 2004-10-04 A | 2005-11-03 | 75% | 70.44d? | 66d |  |  | 7056h | 5312h |
| 102 | 1.9.1 | WBS/Projektstrukturierung/Deliverables definieren |  | 54d? | 2005-01-04 A | 2005-03-17 A | 100% |  |  | start no earlier than 2005-01-04 | D.Gauch | 432h | 432h |
| 103 | 1.9.2 | Ressourcenplanung je Phase Ergon,CTS,CS,… |  | 1d | 2005-01-04 A | 2005-01-04 A | 100% |  |  | start no earlier than 2005-01-04 | D.Gauch/T.Molag | 8h | 8h |
| 104 | 1.9.3 | Ressourcen anfordern (Offshore&Onshore)& Bestätigen |  | 1d | 2005-01-04 A | 2005-01-04 A | 100% |  |  | start no earlier than 2005-01-04 | D.Gauch/T.Molag | 8h | 8h |
| 105 | 1.9.4 | Define what is On-shore /what is off-shore |  | 1d | 2004-10-04 A | 2004-10-04 A | 100% |  |  |  | T.Molag | 8h | 8h |
| 106 | 1.9.5 | Organigramm Onshore&Offshore festlegen |  | 1d | 2005-04-08 A | 2005-04-08 A | 100% |  |  | finish no earlier than 2005-04-08 | T.Molag | 8h | 8h |
| 107 | 1.9.6 | Budgetplanung PO/RO Phase |  | 5d | 2004-11-12 A | 2004-11-18 A | 100% |  |  | start no earlier than 2004-11-12 | T.Molag | 40h | 40h |
| 108 | 1.9.7 | Budgetplanung RE Phase |  | 70d | 2005-01-04 A | 2005-04-08 A | 100% |  |  | finish no earlier than 2005-04-08 | T.Molag | 560h | 560h |
| 109 | 1.9.8 | Budgetrequest/Bereinigung stellen IT-Plan |  | 1d | 2005-04-11 A | 2005-04-11 A | 100% |  |  | start no earlier than 2005-04-08 | D.Gauch/T.Molag | 8h | 8h |
| 110 | 1.9.9 | Ablaufplanung Grob |  | 70d | 2005-01-04 A | 2005-04-08 A | 100% |  |  | start no earlier than 2005-01-04 | D.Gauch | 560h | 560h |
| 111 | 1.9.10 | Ablaufplanung RO Phase(Approved by Team) |  | 13d? | 2005-01-04 A | 2005-01-20 A | 100% |  |  | start no earlier than 2005-01-04 | D.Gauch | 104h | 104h |
| 112 | 1.9.11 | Ablaufplanung RE Phase (Approved by CTS) | milestone | 0d | 2005-04-08 A | 2005-04-08 | 50% | 0d | 169d | start no earlier than 2005-04-08 | D.Gauch |  |  |
| 113 | 1.9.12 | Infrastrukturübersichtsplanung (AT/IT/PTA) |  | 9d | 2005-04-04 A | 2005-04-14 A | 100% |  |  | finish no earlier than 2005-04-14 | T.Molag/H.Meyer | 72h | 72h |
| 114 | 1.9.13 | Absenzplanung |  | 218d | 2005-01-04 | 2005-11-02 |  |  | 21d | start no earlier than 2005-01-04 | C.Wolf | 1744h |  |
| 115 | 1.9.14 | High-level & Low Level Plan nachführen |  | 219d | 2005-01-04 A | 2005-11-03 A | 100% |  |  | start no earlier than 2005-01-04 | C.Wolf | 1752h | 1752h |
| 116 | 1.9.15 | Initiale Zeitplanung mit Satelittenprojekten (sync.Punkte ) |  | 219d | 2005-01-04 A | 2005-11-03 A | 100% |  |  | start no earlier than 2005-01-04 | T.Molag | 1752h | 1752h |

| ID | WBS | Task | Duration | Start | Finish | Complete | Remaining | Total slack | Constraint | Resources | Work | Actual work |
| --- | --- | --- | --- | --- | --- | --- | --- | --- | --- | --- | --- | --- |
| 117 | 1.10 | **Projectreporting** | 270d | 2004-10-04 A | 2005-10-13 |  | 269.5d | 81d |  |  | 8656h | 16h |
| 118 | 1.10.1 | Statusreport extern definieren | 1d | 2004-10-25 A | 2004-10-25 A | 100% |  |  |  | D.Gauch | 8h | 8h |
| 119 | 1.10.2 | Teaminternal Statusreport definieren ( Template ) | 1d | 2004-10-25 A | 2004-10-25 A | 100% |  |  |  | D.Gauch | 8h | 8h |
| 120 | 1.10.3 | Report: NOB AR4 Statusreport nachführen und versenden | 270d | 2004-10-04 | 2005-10-13 |  |  | 35d |  | C.Wolf | 2160h |  |
| 121 | 1.10.4 | Report: IT Plan Stausreport eingeben | 270d | 2004-10-04 | 2005-10-13 |  |  | 35d |  | C.Wolf | 2160h |  |
| 122 | 1.10.5 | Report: IT Plan EXA Time reporting einfordern | 270d | 2004-10-04 | 2005-10-13 |  |  | 35d |  | C.Wolf | 2160h |  |
| 123 | 1.10.6 | Report: NOB Programm nachführen | 270d | 2004-10-04 | 2005-10-13 |  |  | 35d |  | C.Wolf | 2160h |  |
| 124 | 1.11 | **ProjectControlling** | 351d? | 2004-10-04 A | 2006-02-03 |  | 350.05d? | 0d |  |  | 14752h | 40h |
| 125 | 1.11.1 | Issues,CR's,Bughandling festlegen ( Tools&Ablauf) | 1d | 2004-10-04 A | 2004-10-04 A | 100% |  |  |  | D.Gauch | 8h | 8h |
| 126 | 1.11.2 | Risk Mgmt anpassen | 218d | 2005-04-06 | 2006-02-03 |  |  | 0d | finish no earlier than 2006-02-03 | C.Wolf | 1744h |  |
| 127 | 1.11.3 | Fortschrittskontrolle definieren PO | 1d | 2004-11-12 A | 2004-11-12 A | 100% |  |  |  | C.Wolf | 8h | 8h |
| 128 | 1.11.4 | Fortschrittskontrolle & Metriken definieren RO | 1d | 2005-01-24 A | 2005-01-24 A | 100% |  |  |  | D.Gauch | 8h | 8h |
| 129 | 1.11.5 | Fortschrittskontrolle & Metriken definieren RE (Off-shore statusreporting) | 1d | 2005-04-04 A | 2005-04-04 A | 100% |  |  | start no earlier than 2005-04-04 | D.Gauch | 8h | 8h |
| 130 | 1.11.6 | Budget & Financialcontrolling festlegen | 1d | 2004-11-05 A | 2004-11-05 A | 100% |  |  |  | D.Gauch/T.Molag | 8h | 8h |
| 131 | 1.11.7 | Fortschritt in MTA/WBS nachführen | 351d? | 2004-10-04 | 2006-02-03 |  |  | 0d | finish no earlier than 2006-02-03 | C.Wolf | 2808h |  |
| 132 | 1.11.8 | Critical Path Analysis | 351d? | 2004-10-04 | 2006-02-03 |  |  | 0d | finish no earlier than 2006-02-03 | D.Gauch | 2808h |  |
| 133 | 1.11.9 | Ablaufplanung mit Schnittstellenprojekten tracken (Host,JAP,OTEX,Satelliten) | 351d? | 2004-10-04 | 2006-02-03 |  |  | 0d | finish no earlier than 2006-02-03 | C.Wolf | 2808h |  |
| 134 | 1.11.10 | Infrastrukturplanung tracken | 217d? | 2005-04-07 | 2006-02-03 |  |  | 0d | finish no earlier than 2006-02-03 | T.Molag | 1736h |  |
| 135 | 1.11.11 | Projektcontrolling nachführen Fortschritt,Budget,Buffer,Issues,Risks,CR's | 351d? | 2004-10-04 | 2006-02-03 |  |  | 0d | finish no earlier than 2006-02-03 | C.Wolf | 2808h |  |
| 136 | 2 | **NOB AR4 - Projektergebnisse** | 305d? | 2004-10-04 A | 2005-12-02 | 43% | 174.42d? | 46d |  |  | 18976h | 10864.8h |
| 137 | 2.1 | Provide Templates ( Use Cases, Suppl. Spec ) | 1d | 2004-10-04 A | 2004-10-04 A | 100% |  |  |  | D.Gauch | 8h | 8h |
| 138 | 2.2 | Provide RequirmentsMgmtPlan | 9d | 2004-10-15 A | 2004-10-27 A | 100% |  |  | start no earlier than 2004-11-04 | M.Maute | 72h | 72h |
| 139 | 2.3 | Provide/update latest JAP TIPD for CTS development offshore | 1d | 2005-04-08 | 2005-04-08 |  |  | 169d | start no earlier than 2005-04-08 | C.Frutiger/T.Mayer | 8h |  |
| 140 | 2.4 | Define Qualityassurance (Templ,Process,Feedback,…) for Architecture | 1d | 2005-01-17 A | 2005-01-17 A | 100% |  |  | start no earlier than 2005-01-17 | C.Frutiger | 8h | 8h |
| 141 | 2.5 | Provide Designguidelines for Team and CTS | 1d | 2005-02-11 A | 2005-02-11 A | 100% |  |  | start no earlier than 2005-01-04 | C.Frutiger | 8h | 8h |
| 142 | 2.6 | Provide JUNIT Guidelines for CTS | 1d | 2005-03-15 | 2005-03-15 |  |  | 233d | start no earlier than 2005-03-15 | C.Frutiger | 8h |  |
| 143 | 2.7 | Provide JavaDoc Guidelines for CTS | 1d | 2005-03-15 A | 2005-03-15 A | 100% |  |  | start no earlier than 2005-03-15 | C.Frutiger | 8h | 8h |
| 144 | 2.8 | Provide CodingGuidelines for CTS | 1d | 2005-03-15 A | 2005-03-15 A | 100% |  |  | start no earlier than 2005-03-15 | C.Frutiger | 8h | 8h |
| 145 | 2.9 | Provide Packaging Guidelines for Sateliteprojects (IT,PTA,Prod) | 1d | 2005-05-02 | 2005-05-02 |  |  | 199d | start no earlier than 2005-05-02 | H.Meier | 8h |  |
| 146 | 2.10 | Prepare Shared CVS Repository | 1d | 2005-05-02 A | 2005-05-02 A | 100% |  |  |  | H. Meier | 8h | 8h |
| 147 | 2.11 | Setup Buildserver | 8d | 2005-05-02 | 2005-05-11 |  |  | 192d | start no earlier than 2005-05-02 | C.Frutiger | 64h |  |
| 148 | 2.12 | Prepare SWANXP Changerequest | 1d | 2005-03-16 | 2005-03-16 |  |  | 232d | start no earlier than 2005-03-16 | H.Meier/D.Gauch/T.Molag | 8h |  |
| 149 | 2.13 | Order all Host Services and MCP Facades | 3d | 2005-03-28 | 2005-03-30 |  |  | 222d | start no earlier than 2005-03-28 | C.Frutiger/T.Mayer | 24h |  |

| ID | WBS | Task | Type | Duration | Start | Finish | Predecessors | Complete | Remaining | Total slack | Constraint | Resources | Work | Actual work |
| --- | --- | --- | --- | --- | --- | --- | --- | --- | --- | --- | --- | --- | --- | --- |
| 150 | 2.14 | **Module Trading / Secor Replacement** |  | 131d? | 2004-10-18 A | 2005-04-15 |  | 99% | 0.06d? | 210d |  |  | 3708h | 3705.3h |
| 151 | 2.14.1 | **Requirementsanalysis until PO** |  | 41d? | 2004-10-18 A | 2004-12-13 A |  | 100% |  |  |  |  | 660h | 660h |
| 152 | 2.14.1.1 | Send preliminary Use cases to OTEX/MCPTF |  | 14d | 2004-11-09 A | 2004-11-26 A |  | 100% |  |  | start no earlier than 2004-11-09 |  |  |  |
| 153 | 2.14.1.2 | Use Case Draft Part 1/Scope |  | 30d | 2004-10-18 A | 2004-11-26 A |  | 100% |  |  |  | M.Maute/P.Bhushan | 240h | 240h |
| 154 | 2.14.1.3 | Use Case DraftPart 2/Scope |  | 10d? | 2004-11-15 A | 2004-11-26 A |  | 100% |  |  |  | M.Maute/P.Bhushan | 80h | 80h |
| 155 | 2.14.1.4 | Supplementary Specification Draft ( L&P,…) |  | 15d | 2004-11-08 A | 2004-11-26 A |  | 100% |  |  |  | A.Knobel | 120h | 120h |
| 156 | 2.14.1.5 | Review all Requirmentsdocs Teaminternal/CTS |  | 0.5d | 2004-11-25 A | 2004-11-25 A |  | 100% |  |  | start no earlier than 2004-11-25 | IT Team/CTS | 4h | 4h |
| 157 | 2.14.1.6 | Forward Requirments to other Projects (MCP TF) |  | 0.5d | 2004-11-26 A | 2004-11-26 A | 161 | 100% |  |  |  |  |  |  |
| 158 | 2.14.1.7 | Define delivery dates in IT,PTA,Prod with them |  | 0.5d | 2004-11-29 A | 2004-11-29 A | 157 | 100% |  |  |  |  |  |  |
| 159 | 2.14.1.8 | Create High Level Design Doc. |  | 21d | 2004-11-08 A | 2004-12-06 A |  | 100% |  |  | start no earlier than 2004-11-08 | A.Knobel | 168h | 168h |
| 160 | 2.14.1.9 | Review Design with C.Frutiger/CTS |  | 5d | 2004-12-07 A | 2004-12-13 A | 159 | 100% |  |  | start no earlier than 2004-11-15 | A.Knobel | 40h | 40h |
| 161 | 2.14.1.10 | Review Requirements Documents (without GUI) |  | 1d | 2004-11-25 A | 2004-11-26 A | 156 | 100% |  |  |  | M.Maute | 8h | 8h |
| 162 | 2.14.1.11 | Get formal approval from Business | milestone | 0d | 2004-11-26 A | 2004-11-26 A | 161 | 100% |  |  |  |  |  |  |
| 163 | 2.14.2 | **Design until RO** |  | 75d? | 2005-01-04 A | 2005-04-15 |  | 99% | 0.05d? | 210d |  |  | 3048h | 3045.3h |
| 164 | 2.14.2.1 | Use Case Final |  | 29d? | 2005-01-04 A | 2005-02-11 A |  | 100% |  |  | start no earlier than 2005-01-04 | P.Bhushan/M.Maute | 232h | 232h |
| 166 | 2.14.2.2 | Supplementary Specification Final OTEx |  | 39d? | 2005-01-04 A | 2005-02-25 A |  | 100% |  |  | start no earlier than 2005-01-04 | M.Maute | 312h | 312h |
| 167 | 2.14.2.3 | GUI Requir.NOB |  | 40d? | 2005-01-04 A | 2005-02-28 A |  | 100% |  |  | start no earlier than 2005-01-04 | M.Maute | 320h | 320h |
| 168 | 2.14.2.4 | **High Level & Low Level Design final (System Spec)** |  | 62d? | 2005-01-21 A | 2005-04-15 |  | 99% | 0.06d? | 210d |  | C.Frutiger | 2144h | 2141.3h |
| 169 | 2.14.2.4.1 | Supplementary Specification |  | 1d? | 2005-01-21 A | 2005-01-24 A |  | 100% |  |  | finish no earlier than 2005-01-24 |  |  |  |
| 170 | 2.14.2.4.2 | MCP/OTex Requirements |  | 1d? | 2005-01-21 A | 2005-01-24 A |  | 100% |  |  | finish no earlier than 2005-01-24 |  |  |  |
| 171 | 2.14.2.4.3 | UC Technical Part |  | 7d? | 2005-01-21 A | 2005-01-31 A |  | 100% |  |  | finish no earlier than 2005-01-24 |  |  |  |
| 172 | 2.14.2.4.4 | High-level sequence diagram for each Use Case |  | 1d? | 2005-01-28 A | 2005-01-31 A |  | 100% |  |  | finish no earlier than 2005-01-31 |  |  |  |
| 173 | 2.14.2.4.5 | System Specifications |  | 57d? | 2005-01-28 A | 2005-04-15 A |  | 100% |  |  | finish no earlier than 2005-01-31 | C.Frutiger | 456h | 456h |
| 174 | 2.14.2.4.6 | High level sequence diagrams update |  | 26d? | 2005-01-28 A | 2005-03-04 A |  | 100% |  |  | finish no earlier than 2005-01-31 | A.Knobel | 208h | 208h |
| 175 | 2.14.2.4.7 | Input Document Chapters 2-3 |  | 1d? | 2005-02-17 A | 2005-02-18 A |  | 100% |  |  | finish no earlier than 2005-02-18 | M.Dixit(Off-shore) | 8h | 8h |
| 176 | 2.14.2.4.8 | Input Document Chapters 4 |  | 1d? | 2005-02-24 A | 2005-02-25 A |  | 100% |  |  | finish no earlier than 2005-02-25 | M.Dixit(Off-shore) | 8h | 8h |
| 177 | 2.14.2.4.9 | Input Document Chapters 5 |  | 1d? | 2005-03-03 A | 2005-03-04 A |  | 100% |  |  | finish no earlier than 2005-03-04 | M.Dixit(Off-shore) | 8h | 8h |
| 178 | 2.14.2.4.10 | Validation NPL |  | 6d? | 2005-03-04 A | 2005-03-11 A |  | 100% |  |  | finish no earlier than 2005-03-04 | A.Knobel | 48h | 48h |
| 179 | 2.14.2.4.11 | Input Document all chapters |  | 1d? | 2005-03-10 A | 2005-03-11 A |  | 100% |  |  | finish no earlier than 2005-03-11 | M.Dixit(Off-shore) | 8h | 8h |
| 180 | 2.14.2.4.12 | Committed delivery date MCP Facade for IT, PTA and Prod |  | 46d? | 2005-01-28 A | 2005-03-31 A |  | 100% |  |  | finish no earlier than 2005-01-31 | D.Gauch | 368h | 368h |
| 181 | 2.14.2.4.13 | Committed delivery date Host Services for IT, PTA and Prod |  | 46d? | 2005-01-28 A | 2005-03-31 A |  | 100% |  |  | finish no earlier than 2005-01-31 | D.Gauch | 368h | 368h |
| 182 | 2.14.2.4.14 | GUI Mapping |  | 1d? | 2005-03-01 A | 2005-03-14 |  | 80% | 0.2d? | 234d | finish no earlier than 2005-03-14 | M.Dixit | 8h | 6.4h |
| 183 | 2.14.2.4.15 | RO Chapter /System Spec |  | 20d? | 2005-03-21 A | 2005-04-15 A |  | 100% |  |  | finish no earlier than 2005-03-21 | C.Frutiger | 160h | 160h |
| 184 | 2.14.2.5 | Get formal approval from Business for all Requirements | milestone | 1d | 2005-02-18 A | 2005-02-18 A |  | 100% |  |  | start no earlier than 2005-02-11 | M.Maute | 8h | 8h |
| 185 | 2.14.2.6 | Forward all Requirments to OTEx (MCP TF) Sign-off state |  | 1d | 2005-02-18 A | 2005-02-18 A |  | 100% |  |  | start no earlier than 2005-02-18 | M.Maute | 8h | 8h |

| ID | WBS | Task | Type | Duration | Start | Finish | Predecessors | Complete | Constraint | Resources | Work | Actual work |
| --- | --- | --- | --- | --- | --- | --- | --- | --- | --- | --- | --- | --- |
| 186 | 2.14.2.7 | **Forward all Requirments to OTEx (MCP TF) incl.latest changes** |  | 1d? | 2005-02-25 A | 2005-02-25 A |  | 100% |  | M.Maute/C.Frutiger,T.Molag/D.Gauch | 16h | 16h |
| 187 | 2.14.2.7.1 | Clarification of open points: EBVV, OrderDetail/order History Services) |  | 1d? | 2005-02-25 A | 2005-02-25 A |  | 100% | finish no earlier than 2005-02-25 | C.Frutiger | 8h | 8h |
| 188 | 2.15 | **Module Technical: BS70/XBS** |  | 120d? | 2004-11-02 A | 2005-04-15 A |  | 100% |  |  | 928h | 928h |
| 189 | 2.15.1 | **Requirementsanalysis until PO** |  | 106d? | 2004-11-02 A | 2005-03-28 A |  | 100% |  |  | 320h | 320h |
| 190 | 2.15.1.1 | Impactanalyse der betroffenen Services ( Kick.off Meeting BS70 Team) |  | 2d? | 2004-11-02 A | 2004-11-03 A |  | 100% |  | D.Gauch | 16h | 16h |
| 191 | 2.15.1.2 | Create CR's for Servcies, MCP facades |  | 38d? | 2005-02-04 A | 2005-03-28 A |  | 100% |  | T.Mayer | 304h | 304h |
| 192 | 2.15.2 | **Design until RO** |  | 76d | 2005-01-03 A | 2005-04-15 A |  | 100% |  |  | 608h | 608h |
| 193 | 2.15.2.1 | High Level & Low Level Design final/MCP Changes |  | 76d | 2005-01-03 A | 2005-04-15 A |  | 100% | finish no earlier than 2005-04-08 | T.Mayer | 608h | 608h |
| 194 | 2.16 | **Module User Rigths (former "Admin")** |  | 111d? | 2004-11-15 A | 2005-04-15 A |  | 100% |  |  | 2368h | 2368h |
| 195 | 2.16.1 | **Requirementsanalysis until PO** |  | 25d | 2004-11-15 A | 2004-12-17 A |  | 100% |  |  | 264h | 264h |
| 196 | 2.16.1.1 | Use Case Draft |  | 11d | 2004-11-15 A | 2004-11-29 A |  | 100% |  | M.Maute | 88h | 88h |
| 197 | 2.16.1.2 | Supplementary Specification Draft ( L&P,…) |  | 6d | 2004-11-29 A | 2004-12-06 A |  | 100% |  | P.Saxena | 48h | 48h |
| 198 | 2.16.1.3 | Review all Requirmentsdocs Teaminternal |  | 2d | 2004-11-30 A | 2004-12-01 A | 196 | 100% |  | IT Team/CTS | 16h | 16h |
| 199 | 2.16.1.4 | Create High Level Design |  | 13d | 2004-11-29 A | 2004-12-15 A |  | 100% |  | P.Saxena | 104h | 104h |
| 200 | 2.16.1.5 | Review Design with C.Frutiger/CTS |  | 1d | 2004-12-17 A | 2004-12-17 A | 199 | 100% |  | C.Frutiger/CTS | 8h | 8h |
| 201 | 2.16.1.6 | Review Requirements Documents (without GUI) |  | 1d | 2004-12-02 A | 2004-12-02 A | 198 | 100% |  |  |  |  |
| 202 | 2.16.1.7 | Get formal approval from Business | milestone | 0d | 2004-12-08 A | 2004-12-08 A | 201 | 100% | start no earlier than 2004-12-08 | M.Maute |  |  |
| 203 | 2.16.2 | **Design until RO** |  | 75d? | 2005-01-04 A | 2005-04-15 A |  | 100% |  |  | 2104h | 2104h |
| 204 | 2.16.2.1 | Use Case Final |  | 29d? | 2005-01-04 A | 2005-02-11 A |  | 100% | start no earlier than 2005-01-04 | M.Maute/P.Bhushan | 232h | 232h |
| 205 | 2.16.2.2 | Supplementary Specification Final |  | 29d? | 2005-01-04 A | 2005-02-11 A |  | 100% | start no earlier than 2005-01-04 | M.Maute/P.Bhushan | 232h | 232h |
| 206 | 2.16.2.3 | GUI Requir.NOB |  | 29d? | 2005-01-04 A | 2005-02-11 A |  | 100% | start no earlier than 2005-01-04 | M.Maute/P.Bhushan | 232h | 232h |
| 207 | 2.16.2.4 | **High Level & Low Level Design final (System Spec)** |  | 73d? | 2005-01-06 A | 2005-04-15 A |  | 100% |  | C.Frutiger | 1400h | 1400h |
| 208 | 2.16.2.4.1 | Supplementary Specification |  | 1d? | 2005-01-28 A | 2005-01-31 A |  | 100% | finish no earlier than 2005-01-31 | M.Maute/P.Bhushan | 8h | 8h |
| 209 | 2.16.2.4.2 | UC Technical Part |  | 1d? | 2005-01-21 A | 2005-01-24 A |  | 100% | finish no earlier than 2005-01-24 | M.Maute/P.Bhushan | 8h | 8h |
| 210 | 2.16.2.4.3 | High-level sequence diagram for each Use Case |  | 1d? | 2005-02-24 A | 2005-02-25 A |  | 100% | finish no earlier than 2005-02-25 | M.Maute/P.Bhushan | 8h | 8h |
| 211 | 2.16.2.4.4 | Development Request (QC1+QC2) for MCP facades |  | 1d? | 2005-02-18 A | 2005-02-21 A |  | 100% | finish no earlier than 2005-02-21 | C.Frutiger | 8h | 8h |
| 212 | 2.16.2.4.5 | QC2 |  | 1d? | 2005-03-03 A | 2005-03-04 A |  | 100% | finish no earlier than 2005-03-04 | A.krishnan | 8h | 8h |
| 213 | 2.16.2.4.6 | Low-level Class and Sequence diagrams for each MCP method (in sync with each other and QC2) |  | 16d? | 2005-02-11 A | 2005-03-04 A |  | 100% | finish no earlier than 2005-02-14 | A.krishnan | 128h | 128h |
| 214 | 2.16.2.4.7 | Input Document Chapters 2-3 |  | 1d? | 2005-02-25 A | 2005-02-28 A |  | 100% | finish no earlier than 2005-02-28 | A.krishnan | 8h | 8h |
| 215 | 2.16.2.4.8 | Input Document Chapters 4 |  | 1d? | 2005-02-25 A | 2005-02-28 A |  | 100% | finish no earlier than 2005-02-28 | A.krishnan | 8h | 8h |
| 216 | 2.16.2.4.9 | Input Document Chapters 5 |  | 1d? | 2005-02-25 A | 2005-02-28 A |  | 100% | finish no earlier than 2005-02-28 | A.krishnan | 8h | 8h |
| 217 | 2.16.2.4.10 | NPL facade mapping document |  | 1d? | 2005-02-25 A | 2005-02-28 A |  | 100% | finish no earlier than 2005-02-28 | A.krishnan | 8h | 8h |
| 218 | 2.16.2.4.11 | Input Document all chapters |  | 1d? | 2005-02-18 A | 2005-02-21 A |  | 100% | finish no earlier than 2005-02-21 | A.krishnan | 8h | 8h |
| 219 | 2.16.2.4.12 | Committed delivery date MCP Facade for IT, PTA and Prod |  | 1d? | 2005-01-28 A | 2005-01-31 A |  | 100% | finish no earlier than 2005-01-31 | A.krishnan | 8h | 8h |
| 220 | 2.16.2.4.13 | Committed delivery date Host Services for IT, PTA and Prod |  | 1d? | 2005-01-28 A | 2005-01-31 A |  | 100% | finish no earlier than 2005-01-31 | A.krishnan | 8h | 8h |
| 221 | 2.16.2.4.14 | RO Chapter /System Spec |  | 73d? | 2005-01-06 A | 2005-04-15 A |  | 100% | finish no earlier than 2005-04-08 | C.Frutiger | 584h | 584h |
| 222 | 2.16.2.4.15 | Use Case Document for pending tasks (GE.013) |  | 1d? | 2005-02-24 A | 2005-02-25 A |  | 100% | finish no earlier than 2005-02-25 | A.krishnan | 8h | 8h |
| 223 | 2.16.2.5 | Get formal approval from Business for all Requirments | milestone | 1d | 2005-02-11 A | 2005-02-11 A |  | 100% | start no earlier than 2005-02-07 | M.Maute | 8h | 8h |

| ID | WBS | Task | Type | Duration | Start | Finish | Predecessors | Complete | Remaining | Total slack | Constraint | Resources | Work | Actual work |
| --- | --- | --- | --- | --- | --- | --- | --- | --- | --- | --- | --- | --- | --- | --- |
| 224 | 2.17 | **Module Payments FX (Foreign Exchange)** |  | 125d? | 2004-11-08 A | 2005-04-28 |  | 73% | 34.23d? | 201d |  |  | 964h | 691.49h |
| 225 | 2.17.1 | **Requirementsanalysis until PO** |  | 15.5d | 2004-11-08 A | 2004-11-29 A |  | 100% |  |  |  |  | 148h | 148h |
| 226 | 2.17.1.1 | Use Case Draft |  | 6d | 2004-11-08 A | 2004-11-15 A |  | 100% |  |  |  | M.Maute | 48h | 48h |
| 227 | 2.17.1.2 | Supplementary Specification Draft ( L&P,…) |  | 4.5d | 2004-11-22 A | 2004-11-26 A |  | 100% |  |  |  |  |  |  |
| 228 | 2.17.1.3 | Review all Requirmentsdocs Teaminternal |  | 0.5d | 2004-11-26 A | 2004-11-26 A |  | 100% |  |  | start no earlier than 2004-11-26 | M.Maute | 4h | 4h |
| 229 | 2.17.1.4 | Forward Requirments to other Projects (MCP TF) |  | 0.5d | 2004-11-26 A | 2004-11-26 A | 228 | 100% |  |  |  | T.Molag | 4h | 4h |
| 230 | 2.17.1.5 | Define delivery dates in IT,PTA,Prod with them |  | 0.5d | 2004-11-26 A | 2004-11-26 A | 228 | 100% |  |  |  | T.Molag | 4h | 4h |
| 231 | 2.17.1.6 | Create High Level Design |  | 10d | 2004-11-08 A | 2004-11-19 A |  | 100% |  |  |  | P.Saxena | 80h | 80h |
| 232 | 2.17.1.7 | Review Requirements Documents (without GUI) |  | 1d | 2004-11-26 A | 2004-11-29 A | 228 | 100% |  |  |  | M.Maute | 8h | 8h |
| 233 | 2.17.1.8 | Get formal approval from Business | milestone | 0d | 2004-11-26 A | 2004-11-26 A |  | 100% |  |  | start no earlier than 2004-11-26 |  |  |  |
| 234 | 2.17.2 | **Design until RO** |  | 84d? | 2005-01-04 A | 2005-04-28 |  | 67% | 28.14d? | 201d |  |  | 816h | 543.49h |
| 235 | 2.17.2.1 | Use Case Final |  | 8d? | 2005-01-04 A | 2005-01-13 A |  | 100% |  |  | start no earlier than 2005-01-04 | M.Maute | 64h | 64h |
| 236 | 2.17.2.2 | Supplementary Specification Final |  | 8d? | 2005-01-04 A | 2005-01-13 A |  | 100% |  |  | start no earlier than 2005-01-04 | M.Maute | 64h | 64h |
| 237 | 2.17.2.3 | GUI Requir.NOB |  | 8d? | 2005-01-04 A | 2005-01-13 A |  | 100% |  |  | start no earlier than 2005-01-04 | M.Maute | 64h | 64h |
| 238 | 2.17.2.4 | **High Level & Low Level Design final (System Spec)** |  | 78d? | 2005-01-12 A | 2005-04-28 |  | 56% | 34.06d? | 201d |  | T.Mayer | 624h | 351.49h |
| 239 | 2.17.2.4.1 | Know-How Transfer - Business Functionality |  | 1d? | 2005-01-12 A | 2005-01-13 A |  | 100% |  |  | finish no earlier than 2005-01-13 |  |  |  |
| 240 | 2.17.2.4.2 | Environment Set up |  | 1d? | 2005-01-12 A | 2005-01-13 A |  | 100% |  |  | finish no earlier than 2005-01-13 |  |  |  |
| 241 | 2.17.2.4.3 | Know-How Transfer Technical Funcitonality |  | 1d? | 2005-01-14 A | 2005-01-17 A |  | 100% |  |  | finish no earlier than 2005-01-17 |  |  |  |
| 242 | 2.17.2.4.4 | Supplementary Specification |  | 1d? | 2005-02-15 A | 2005-02-16 A |  | 100% |  |  | finish no earlier than 2005-02-16 |  |  |  |
| 243 | 2.17.2.4.5 | UC Technical Part |  | 1d? | 2005-02-11 A | 2005-02-14 A |  | 100% |  |  | finish no earlier than 2005-02-14 |  |  |  |
| 244 | 2.17.2.4.6 | XBS Migration |  | 1d? | 2005-02-11 A | 2005-02-14 A |  | 100% |  |  | finish no earlier than 2005-02-14 |  |  |  |
| 245 | 2.17.2.4.7 | High-level sequence diagram for each Use Case |  | 1d? | 2005-02-11 A | 2005-02-14 A |  | 100% |  |  | finish no earlier than 2005-02-14 |  |  |  |
| 246 | 2.17.2.4.8 | Development Request (QC1+QC2) for MCP facades |  | 1d? | 2005-02-17 A | 2005-02-18 A |  | 100% |  |  | finish no earlier than 2005-02-18 |  |  |  |
| 247 | 2.17.2.4.9 | Low-level Class and Sequence diagrams for each MCP method (in sync with each other and QC2) |  | 1d? | 2005-02-23 A | 2005-02-24 |  | 50% | 0.5d? | 248d | finish no earlier than 2005-02-24 |  |  |  |
| 248 | 2.17.2.4.10 | Input Document Chapters 2-3 |  | 1d? | 2005-02-23 A | 2005-02-24 |  | 50% | 0.5d? | 248d | finish no earlier than 2005-02-24 |  |  |  |
| 249 | 2.17.2.4.11 | Input Document Chapters 4 |  | 1d? | 2005-04-27 A | 2005-04-28 |  | 50% | 0.5d? | 202d | finish no earlier than 2005-04-28 |  |  |  |
| 250 | 2.17.2.4.12 | Input Document Chapters 5 |  | 1d? | 2005-04-27 A | 2005-04-28 |  | 50% | 0.5d? | 202d | finish no earlier than 2005-04-28 |  |  |  |
| 251 | 2.17.2.4.13 | NPL facade mapping document |  | 1d? | 2005-04-28 A | 2005-04-28 |  | 50% | 0.5d? | 201d | finish no earlier than 2005-04-28 |  |  |  |
| 252 | 2.17.2.4.14 | Input Document all chapters |  | 1d? | 2005-02-18 A | 2005-02-21 A |  | 100% |  |  | finish no earlier than 2005-02-21 |  |  |  |
| 253 | 2.17.2.4.15 | Committed delivery date MCP Facade for IT, PTA and Prod |  | 1d? | 2005-02-17 A | 2005-02-18 A |  | 100% |  |  | finish no earlier than 2005-02-18 |  |  |  |
| 254 | 2.17.2.4.16 | RO Chapter /System Spec |  | 64d? | 2005-01-12 A | 2005-04-08 |  | 50% | 32d? | 215d | finish no earlier than 2005-04-08 |  |  |  |
| 255 | 2.17.2.5 | Get formal approval from Business for all Requirments | milestone | 0d | 2005-01-14 A | 2005-01-14 A |  | 100% |  |  | start no earlier than 2005-01-14 | M.Maute |  |  |

| ID | WBS | Task | Type | Duration | Start | Finish | Predecessors | Complete | Remaining | Total slack | Constraint | Resources | Work | Actual work |
| --- | --- | --- | --- | --- | --- | --- | --- | --- | --- | --- | --- | --- | --- | --- |
| 256 | 2.18 | **Module Investplanner** |  | 30d | 2004-11-08 A | 2004-12-17 A |  | 100% |  |  |  |  | 440h | 440h |
| 257 | 2.18.1 | **Requirementsanalysis until PO** |  | 30d | 2004-11-08 A | 2004-12-17 A |  | 100% |  |  |  |  | 440h | 440h |
| 258 | 2.18.1.1 | Use Case Draft |  | 15d | 2004-11-08 A | 2004-11-26 A |  | 100% |  |  |  | M.Maute/P.Bhushan | 120h | 120h |
| 259 | 2.18.1.2 | Supplementary Specification Draft ( L&P,…) |  | 10d | 2004-11-15 A | 2004-11-26 A |  | 100% |  |  | start no earlier than 2004-11-15 |  |  |  |
| 260 | 2.18.1.3 | Review all Requirmentsdocs Teaminternal | milestone | 0d | 2004-11-26 A | 2004-11-26 A | 259 | 100% |  |  |  | IT Team/CTS |  |  |
| 261 | 2.18.1.4 | Create High Level Design |  | 25d | 2004-11-08 A | 2004-12-10 A |  | 100% |  |  |  | P.Saxena | 200h | 200h |
| 262 | 2.18.1.5 | Review Design with C.Frutiger/CTS |  | 15d | 2004-11-29 A | 2004-12-17 A | 261 | 100% |  |  |  | C.Frutiger/CTS | 120h | 120h |
| 263 | 2.18.1.6 | Review Requirements Documents (without GUI) |  | 0.5d | 2004-12-06 A | 2004-12-06 A |  | 100% |  |  | start no earlier than 2004-12-06 |  |  |  |
| 264 | 2.18.1.7 | Get formal approval from Business | milestone | 0d | 2004-12-06 A | 2004-12-06 A | 263 | 100% |  |  |  |  |  |  |
| 265 | 2.19 | **Module IPC** |  | 116d? | 2004-11-08 A | 2005-04-15 A |  | 100% |  |  |  |  | 2360h | 2360h |
| 266 | 2.19.1 | **Requirementsanalysis until PO** |  | 23d | 2004-11-08 A | 2004-12-08 A |  | 100% |  |  |  |  | 248h | 248h |
| 267 | 2.19.1.1 | Use Case Draft |  | 15d | 2004-11-08 A | 2004-11-26 A |  | 100% |  |  | start no earlier than 2004-11-08 | T.Molag | 120h | 120h |
| 268 | 2.19.1.2 | Supplementary Specification Draft ( L&P,…) |  | 5d | 2004-11-29 A | 2004-12-03 A | 267 | 100% |  |  |  | T.Molag | 40h | 40h |
| 269 | 2.19.1.3 | Review all Requirmentsdocs Teaminternal |  | 2d | 2004-12-06 A | 2004-12-07 A | 268 | 100% |  |  |  |  |  |  |
| 270 | 2.19.1.4 | Create High Level Design |  | 10d | 2004-11-22 A | 2004-12-03 A |  | 100% |  |  | start no earlier than 2004-11-22 | D.Gauch | 80h | 80h |
| 271 | 2.19.1.5 | Review Design with C.Frutiger/CTS |  | 1d | 2004-12-06 A | 2004-12-06 A | 270 | 100% |  |  |  | C.Frutiger/CTS | 8h | 8h |
| 272 | 2.19.1.6 | Review Requirements Documents (without GUI) |  | 1d | 2004-12-08 A | 2004-12-08 A | 269 | 100% |  |  |  |  |  |  |
| 273 | 2.19.1.7 | Get formal approval from Business | milestone | 0d | 2004-12-08 A | 2004-12-08 A | 272 | 100% |  |  |  |  |  |  |
| 274 | 2.19.2 | **Design until RO** |  | 75d? | 2005-01-04 A | 2005-04-15 A |  | 100% |  |  |  |  | 2112h | 2112h |
| 275 | 2.19.2.1 | Use Case Final |  | 37d? | 2005-01-04 A | 2005-02-23 A |  | 100% |  |  | start no earlier than 2005-01-04 | M.Maute/P.Bhushan | 296h | 296h |
| 276 | 2.19.2.2 | Supplementary Specification Final |  | 37d? | 2005-01-04 A | 2005-02-23 A |  | 100% |  |  | start no earlier than 2005-01-04 | M.Maute/P.Bhushan | 296h | 296h |
| 277 | 2.19.2.3 | GUI Requir.NOB |  | 34d? | 2005-01-04 A | 2005-02-18 A |  | 100% |  |  | start no earlier than 2005-01-04 | M.Maute/P.Bhushan | 272h | 272h |
| 278 | 2.19.2.4 | **High Level & Low Level Design final ( System Spec)** |  | 62d? | 2005-01-21 A | 2005-04-15 A |  | 100% |  |  |  | T.Mayer | 1176h | 1176h |
| 279 | 2.19.2.4.1 | Supplementary Specification |  | 1d? | 2005-01-21 A | 2005-01-24 A |  | 100% |  |  | finish no earlier than 2005-01-24 | P.Saxena | 8h | 8h |
| 280 | 2.19.2.4.2 | UC Technical Part |  | 1d? | 2005-02-09 A | 2005-02-10 A |  | 100% |  |  | finish no earlier than 2005-02-10 | P.Saxena | 8h | 8h |
| 281 | 2.19.2.4.3 | High-level sequence diagram for each Use Case |  | 23d? | 2005-02-09 A | 2005-03-11 A |  | 100% |  |  | finish no earlier than 2005-02-10 | P.Saxena | 184h | 184h |
| 282 | 2.19.2.4.4 | Development Request (QC1+QC2) for MCP facades |  | 1d? | 2005-02-11 A | 2005-02-14 A |  | 100% |  |  | finish no earlier than 2005-02-12 | P.Saxena | 8h | 8h |
| 283 | 2.19.2.4.5 | Low-level Class and Sequence diagrams for each MCP method (in sync with each other and QC2) |  | 1d? | 2005-02-11 A | 2005-02-14 A |  | 100% |  |  | finish no earlier than 2005-02-14 | P.Saxena | 8h | 8h |
| 284 | 2.19.2.4.6 | Input Document Chapters 2-3 |  | 1d? | 2005-02-09 A | 2005-02-10 A |  | 100% |  |  | finish no earlier than 2005-02-10 | P.Saxena | 8h | 8h |
| 285 | 2.19.2.4.7 | Input Document Chapters 4 |  | 1d? | 2005-02-15 A | 2005-02-16 A |  | 100% |  |  | finish no earlier than 2005-02-16 | P.Saxena | 8h | 8h |
| 286 | 2.19.2.4.8 | Input Document Chapters 5 |  | 1d? | 2005-02-17 A | 2005-02-18 A |  | 100% |  |  | finish no earlier than 2005-02-18 | P.Saxena | 8h | 8h |
| 287 | 2.19.2.4.9 | NPL Facade mapping document |  | 1d? | 2005-02-18 A | 2005-02-18 A |  | 100% |  |  | finish no earlier than 2005-02-18 | P.Saxena | 8h | 8h |
| 288 | 2.19.2.4.10 | Input Document all chapters |  | 16d? | 2005-02-18 A | 2005-03-11 A |  | 100% |  |  | finish no earlier than 2005-02-21 | P.Saxena | 128h | 128h |
| 289 | 2.19.2.4.11 | Committed delivery date MCP Facade for IT, PTA and Prod |  | 1d | 2005-02-25 A | 2005-02-28 A |  | 100% |  |  | finish no earlier than 2005-02-28 | D.Gauch | 8h | 8h |
| 290 | 2.19.2.4.12 | Committed delivery date Host Services for IT, PTA and Prod |  | 1d | 2005-02-28 A | 2005-02-28 A |  | 100% |  |  | finish no earlier than 2005-04-08 | D.Gauch | 8h | 8h |
| 291 | 2.19.2.4.13 | RO Chapter /System Spec |  | 36d? | 2005-02-28 A | 2005-04-15 A |  | 100% |  |  | finish no earlier than 2005-02-28 | T.Mayer | 288h | 288h |
| 292 | 2.19.2.5 | Get formal approval from Business for all Requirments |  | 8d? | 2005-03-02 A | 2005-03-11 A |  | 100% |  |  | start no earlier than 2005-03-02 | T.Molag | 64h | 64h |
| 293 | 2.19.2.6 | Order to ergon for changes to the DN Customer DB |  | 1d? | 2005-03-23 A | 2005-03-23 A |  | 100% |  |  | start no earlier than 2005-03-23 | D.Gauch | 8h | 8h |
| 294 | 2.20 | Setup AT Environment |  | 15d | 2005-03-08 A | 2005-03-28 A |  | 100% |  |  | finish no earlier than 2005-03-25 | H.Meier | 120h | 120h |
| 295 | 2.21 | Setup IT Environment |  | 33d | 2005-03-15 A | 2005-04-28 |  | 50% | 16.5d | 201d | start no earlier than 2005-03-15 | H.Meier | 264h | 132h |

| ID | WBS | Task | Type | Duration | Start | Finish | Predecessors | Total slack | Free slack | Constraint | Resources | Work |
| --- | --- | --- | --- | --- | --- | --- | --- | --- | --- | --- | --- | --- |
| 296 | 2.22 | **Implementation Iteration 1 - EBPP/CR** |  | 42d? | 2005-04-11 | 2005-06-07 |  | 173d |  |  |  | 632h |
| 297 | 2.22.1 | **Realisation** |  | 40d? | 2005-04-11 | 2005-06-03 |  | 175d |  |  |  | 472h |
| 298 | 2.22.1.1 | Construction and Unit Testing |  | 20d | 2005-04-11 | 2005-05-06 |  | 175d | 0d | start no earlier than 2005-04-11 | CTS | 160h |
| 299 | 2.22.1.2 | Credit Suisse Code Review- Release from Cognizant | milestone | 0d | 2005-05-09 | 2005-05-09 | 298FS+1d | 185d | 0d |  |  |  |
| 300 | 2.22.1.3 | CS Review Comments - Inspection Report Receipt |  | 5d | 2005-05-10 | 2005-05-16 | 299 | 185d | 0d |  | CTS | 40h |
| 301 | 2.22.1.4 | CS - Code Review Fixes |  | 4d | 2005-05-17 | 2005-05-20 | 300 | 185d |  |  | CTS | 32h |
| 302 | 2.22.1.5 | Onsite Testing - ET / AT |  | 12d | 2005-05-09 | 2005-05-24 | 298 | 175d | 0d |  | CTS | 96h |
| 303 | 2.22.1.6 | Deployment in IT | milestone | 0d | 2005-05-24 | 2005-05-24 | 302 | 183d |  |  | CTS |  |
| 304 | 2.22.1.7 | Submission of Test Report | milestone | 0d | 2005-05-24 | 2005-05-24 | 302 | 183d |  |  | CTS |  |
| 305 | 2.22.1.8 | IT Testing Cycle (Business) |  | 8d | 2005-05-25 | 2005-06-03 | 302 | 175d |  |  | CTS | 64h |
| 306 | 2.22.1.9 | Installations Tests |  | 1d? | 2005-05-09 | 2005-05-09 |  | 194d |  | start no earlier than 2005-05-09 | H. Meier | 8h |
| 307 | 2.22.1.10 | Durchführung und Auswertung der statistischen und dynamischen Unittests |  | 3d | 2005-05-09 | 2005-05-11 |  | 192d |  | start no earlier than 2005-05-09 | Th. Mayer | 24h |
| 308 | 2.22.1.11 | Planung Applikationstest |  | 1d | 2005-05-09 | 2005-05-09 |  | 194d |  | start no earlier than 2005-05-09 | T.Etter | 8h |
| 309 | 2.22.1.12 | Testdatenbereitstellung für Umgebung IT |  | 4d | 2005-04-11 | 2005-04-14 |  | 211d |  | start no earlier than 2005-04-11 | N.Evangelista | 32h |
| 310 | 2.22.1.13 | Infrastruktur- und Release-Pretest |  | 1d | 2005-05-09 | 2005-05-09 |  | 194d |  | start no earlier than 2005-05-09 | N.Evangelista | 8h |
| 311 | 2.22.2 | Deployment in IT/ Delivery to CS | milestone | 1d | 2005-05-24 | 2005-05-24 |  | 173d | 0d | start no earlier than 2005-05-24 | CTS | 8h |
| 312 | 2.22.3 | **Durchführung Applikationstest (IT) durch Business** |  | 10d? | 2005-05-25 | 2005-06-07 | 311 | 173d |  |  | Business Test-Team | 152h |
| 313 | 2.22.3.1 | Operative Testunterstützung |  | 9d | 2005-05-25 | 2005-06-06 | 311 | 173d | 0d |  | N.Evangelista | 72h |
| 314 | 2.22.3.2 | Testauswertung Applikationstest (IT) |  | 1d? | 2005-06-07 | 2005-06-07 | 313 | 173d |  |  |  |  |
| 315 | 2.23 | **Implementation Iteration 2 -IPC** |  | 62d? | 2005-04-11 | 2005-07-05 |  | 153d |  |  |  | 864h |
| 316 | 2.23.1 | Dependecy -CORBA Services READY (Delivery to CTS Onsite Team) with IT quality | milestone | 0d | 2005-05-20 | 2005-05-20 |  | 186d |  | start no earlier than 2005-05-20 | Credit Suisse |  |
| 317 | 2.23.2 | **Realisation** |  | 61d? | 2005-04-11 | 2005-07-04 |  | 154d |  |  |  | 704h |
| 318 | 2.23.2.1 | Construction and Unit Testing |  | 36d | 2005-04-11 | 2005-05-30 |  | 154d | 0d | start no earlier than 2005-04-11 | CTS | 288h |
| 319 | 2.23.2.2 | Credit Suisse Code Review- Release from Cognizant |  | 1d | 2005-06-01 | 2005-06-01 | 318FS+1d | 177d |  | start no earlier than 2005-05-30 |  |  |
| 320 | 2.23.2.3 | CS Review Comments - Inspection Report Receipt |  | 10d | 2005-05-31 | 2005-06-13 |  | 163d | 0d | finish no earlier than 2005-06-13 | CTS | 80h |
| 321 | 2.23.2.4 | CS - Code Review Fixes |  | 6d | 2005-06-14 | 2005-06-21 | 320 | 163d |  | finish no earlier than 2005-06-21 | CTS | 48h |
| 322 | 2.23.2.5 | Onsite Testing - ET / AT |  | 17d | 2005-05-31 | 2005-06-22 | 318 | 154d | 0d | start no earlier than 2005-05-30 | CTS | 136h |
| 323 | 2.23.2.6 | Deployment in IT | milestone | 0d | 2005-06-21 | 2005-06-21 |  | 164d |  | start no earlier than 2005-06-21 | CTS |  |
| 324 | 2.23.2.7 | Submission of Test Report | milestone | 0d | 2005-06-21 | 2005-06-21 |  | 164d |  | start no earlier than 2005-06-21 | CTS |  |
| 325 | 2.23.2.8 | IT Testing Cycle (Business) |  | 8d | 2005-06-23 | 2005-07-04 | 322 | 154d |  |  | CTS | 64h |
| 326 | 2.23.2.9 | Installations Tests |  | 1d? | 2005-05-31 | 2005-05-31 |  | 178d |  | start no earlier than 2005-05-31 | H. Meier | 8h |
| 327 | 2.23.2.10 | Durchführung und Auswertung der statistischen und dynamischen Unittests |  | 3d | 2005-05-31 | 2005-06-02 |  | 176d |  | start no earlier than 2005-05-31 | CTS | 24h |
| 328 | 2.23.2.11 | Planung Applikationstest |  | 1d | 2005-05-31 | 2005-05-31 |  | 178d |  | start no earlier than 2005-05-31 | T.Etter | 8h |
| 329 | 2.23.2.12 | Testdatenbereitstellung für Umgebung IT |  | 5d | 2005-04-11 | 2005-04-15 |  | 210d |  | finish no earlier than 2005-04-15 | N.Evangelista | 40h |
| 330 | 2.23.2.13 | Infrastruktur- und Release-Pretest |  | 1d | 2005-05-10 | 2005-05-10 |  | 193d |  | finish no earlier than 2005-05-10 | CTS | 8h |
| 331 | 2.23.3 | Deployment in IT/ Delivery to CS | milestone | 1d | 2005-06-21 | 2005-06-21 |  | 153d | 0d | start no earlier than 2005-06-21 |  |  |

Notes:
- 297: CR list to be added to represent list of CRs to be part of this release.
- 312: Trading will not be deployed in IT for testing by Business. This is being done only for Initial Code Review.
- 317: CR list to be added to represent list of CRs to be part of this release.

| ID | WBS | Task | Type | Duration | Start | Finish | Predecessors | Total slack | Free slack | Constraint | Resources | Work |
| --- | --- | --- | --- | --- | --- | --- | --- | --- | --- | --- | --- | --- |
| 332 | 2.23.4 | **Durchführung Applikationstest (IT) durch Business** |  | 10d? | 2005-06-22 | 2005-07-05 | 331 | 153d |  |  | N.Evangelista | 160h |
| 333 | 2.23.4.1 | Operative Testunterstützung |  | 9d | 2005-06-22 | 2005-07-04 |  | 153d | 0d | start no earlier than 2005-06-08 | N.Evangelista | 72h |
| 334 | 2.23.4.2 | Testauswertung Applikationstest (IT) |  | 1d? | 2005-07-05 | 2005-07-05 | 333 | 153d |  |  | N.Evangelista | 8h |
| 335 | 2.24 | **Implementation Iteration 3 (XBS)** |  | 52d? | 2005-05-09 | 2005-07-19 |  | 143d |  |  |  | 144h |
| 336 | 2.24.1 | Dependecy -CORBA Services READY (Delivery to CTS Onsite Team) with IT quality | milestone | 0d | 2005-05-30 | 2005-05-30 |  | 180d |  | start no earlier than 2005-05-30 | Credit Suisse |  |
| 337 | 2.24.2 | **Realisation** |  | 52d? | 2005-05-09 | 2005-07-19 |  | 143d |  |  |  | 72h |
| 338 | 2.24.2.1 | Construction and Unit Testing |  | 25d | 2005-05-09 | 2005-06-10 |  | 143d | 0d | start no earlier than 2005-05-09 |  |  |
| 339 | 2.24.2.2 | Credit Suisse Code Review- Release from Cognizant | milestone | 0d | 2005-06-13 | 2005-06-13 | 338FS+1d | 169d |  | start no earlier than 2005-06-13 |  |  |
| 340 | 2.24.2.3 | CS Review Comments - Inspection Report Receipt |  | 10d | 2005-06-13 | 2005-06-24 |  | 155d | 0d | start no earlier than 2005-06-13 |  |  |
| 341 | 2.24.2.4 | CS - Code Review Fixes |  | 5d | 2005-06-27 | 2005-07-01 | 340 | 155d |  | finish no earlier than 2005-06-21 |  |  |
| 342 | 2.24.2.5 | Onsite Testing - ET / AT |  | 12d | 2005-06-13 | 2005-06-28 | 338 | 143d | 0d | start no earlier than 2005-05-30 |  |  |
| 343 | 2.24.2.6 | Deployment in IT | milestone | 0d | 2005-06-28 | 2005-06-28 |  | 158d |  | finish no earlier than 2005-06-28 |  |  |
| 344 | 2.24.2.7 | Submission of Test Report | milestone | 0d | 2005-06-28 | 2005-06-28 |  | 158d |  | finish no earlier than 2005-06-28 |  |  |
| 345 | 2.24.2.8 | IT Testing Cycle (Business) |  | 15d | 2005-06-29 | 2005-07-19 | 342 | 143d |  |  |  |  |
| 346 | 2.24.2.9 | Installations Tests |  | 1d? | 2005-06-13 | 2005-06-13 |  | 169d |  | start no earlier than 2005-06-13 | H. Meier | 8h |
| 347 | 2.24.2.10 | Durchführung und Auswertung der statistischen und dynamischen Unittests |  | 3d | 2005-06-13 | 2005-06-15 |  | 167d |  | start no earlier than 2005-06-13 | Th. Mayer | 24h |
| 348 | 2.24.2.11 | Planung Applikationstest |  | 1d | 2005-06-13 | 2005-06-13 |  | 169d |  | start no earlier than 2005-06-13 |  |  |
| 349 | 2.24.2.12 | Testdatenbereitstellung für Umgebung IT |  | 4d | 2005-05-09 | 2005-05-12 |  | 191d |  | start no earlier than 2005-05-09 | N.Evangelista | 32h |
| 350 | 2.24.2.13 | Infrastruktur- und Release-Pretest |  | 1d | 2005-06-13 | 2005-06-13 |  | 169d |  | start no earlier than 2005-06-13 | N.Evangelista | 8h |
| 351 | 2.24.3 | Deployment in IT/ Delivery to CS | milestone | 1d | 2005-06-28 | 2005-06-28 |  | 148d | 0d | start no earlier than 2005-06-28 |  |  |
| 352 | 2.24.4 | **Durchführung Applikationstest (IT) durch Business** |  | 10d? | 2005-06-29 | 2005-07-12 | 351 | 148d |  |  |  | 72h |
| 353 | 2.24.4.1 | Operative Testunterstützung |  | 9d | 2005-06-29 | 2005-07-11 |  | 148d | 0d | start no earlier than 2005-06-08 | N.Evangelista | 72h |
| 354 | 2.24.4.2 | Testauswertung Applikationstest (IT) |  | 1d? | 2005-07-12 | 2005-07-12 | 353 | 148d |  |  |  |  |
| 355 | 2.25 | **Implementation Iteration 4 (UserRigths )** |  | 67d? | 2005-05-02 | 2005-08-02 |  | 133d |  |  |  | 896h |
| 356 | 2.25.1 | Dependecy -CORBA Services READY (Delivery to CTS Onsite Team) with IT quality | milestone | 0d | 2005-06-06 | 2005-06-06 |  | 175d |  | start no earlier than 2005-06-06 | Credit Suisse |  |

Notes:
- 337: CR list to be added to represent list of CRs to be part of this release.

| ID | WBS | Task | Type | Duration | Start | Finish | Predecessors | Total slack | Free slack | Constraint | Resources | Work |
| --- | --- | --- | --- | --- | --- | --- | --- | --- | --- | --- | --- | --- |
| 357 | 2.25.2 | **Realisation** |  | 67d? | 2005-05-02 | 2005-08-02 |  | 133d |  |  |  | 736h |
| 358 | 2.25.2.1 | Construction and Unit Testing |  | 35d | 2005-05-02 | 2005-06-17 |  | 133d | 0d | start no earlier than 2005-05-02 | CTS | 280h |
| 359 | 2.25.2.2 | Credit Suisse Code Review- Release from Cognizant | milestone | 0d | 2005-06-20 | 2005-06-20 | 358FS+1d | 164d |  | start no earlier than 2005-06-13 |  |  |
| 360 | 2.25.2.3 | CS Review Comments - Inspection Report Receipt |  | 10d | 2005-06-21 | 2005-07-04 |  | 149d | 0d | start no earlier than 2005-06-21 | CTS | 80h |
| 361 | 2.25.2.4 | CS - Code Review Fixes |  | 5d | 2005-07-05 | 2005-07-11 | 360 | 149d |  | finish no earlier than 2005-06-21 | CTS | 40h |
| 362 | 2.25.2.5 | Onsite Testing - ET / AT |  | 17d | 2005-06-20 | 2005-07-12 | 358 | 133d | 0d | start no earlier than 2005-05-30 | CTS | 136h |
| 363 | 2.25.2.6 | Deployment in IT | milestone | 0d | 2005-07-12 | 2005-07-12 |  | 148d |  | finish no earlier than 2005-07-12 | CTS |  |
| 364 | 2.25.2.7 | Submission of Test Report | milestone | 0d | 2005-07-12 | 2005-07-12 |  | 148d |  | finish no earlier than 2005-07-12 | CTS |  |
| 365 | 2.25.2.8 | IT Testing Cycle (Business) |  | 15d | 2005-07-13 | 2005-08-02 | 362 | 133d |  |  | CTS | 120h |
| 366 | 2.25.2.9 | Installations Tests |  | 1d? | 2005-06-20 | 2005-06-20 |  | 164d |  | start no earlier than 2005-06-20 | H. Meier | 8h |
| 367 | 2.25.2.10 | Durchführung und Auswertung der statistischen und dynamischen Unittests |  | 3d | 2005-06-20 | 2005-06-22 |  | 162d |  | start no earlier than 2005-06-20 | CTS | 24h |
| 368 | 2.25.2.11 | Planung Applikationstest |  | 1d | 2005-06-20 | 2005-06-20 |  | 164d |  | start no earlier than 2005-06-20 | T.Etter | 8h |
| 369 | 2.25.2.12 | Testdatenbereitstellung für Umgebung IT |  | 4d | 2005-05-09 | 2005-05-12 |  | 191d |  | start no earlier than 2005-05-09 | N.Evangelista | 32h |
| 370 | 2.25.2.13 | Infrastruktur- und Release-Pretest |  | 1d | 2005-06-20 | 2005-06-20 |  | 164d |  | start no earlier than 2005-06-20 | CTS | 8h |
| 371 | 2.25.3 | Deployment in IT/ Delivery to CS | milestone | 0d | 2005-07-12 | 2005-07-12 |  | 138d | 0d | start no earlier than 2005-07-12 |  |  |
| 372 | 2.25.4 | **Durchführung Applikationstest (IT) durch Business** |  | 10d? | 2005-07-13 | 2005-07-26 | 371 | 138d |  |  | N.Evangelista | 160h |
| 373 | 2.25.4.1 | Operative Testunterstützung |  | 9d | 2005-07-13 | 2005-07-25 |  | 138d | 0d | start no earlier than 2005-06-08 | N.Evangelista | 72h |
| 374 | 2.25.4.2 | Testauswertung Applikationstest (IT) |  | 1d? | 2005-07-26 | 2005-07-26 | 373 | 138d |  |  | N.Evangelista | 8h |
| 375 | 2.26 | **Implementation Iteration 5 (Modulariz,CR's Bugs )** |  | 62d? | 2005-05-30 | 2005-08-23 |  | 118d |  |  |  | 976h |
| 376 | 2.26.1 | **Realisation** |  | 62d? | 2005-05-30 | 2005-08-23 |  | 118d |  |  |  | 816h |
| 377 | 2.26.1.1 | Construction and Unit Testing |  | 40d | 2005-05-30 | 2005-07-22 |  | 140d | 0d | start no earlier than 2005-05-30 | CTS | 320h |
| 378 | 2.26.1.2 | Credit Suisse Code Review- Release from Cognizant | milestone | 0d | 2005-07-22 | 2005-07-22 | 377 | 140d |  | start no earlier than 2005-07-22 |  |  |
| 379 | 2.26.1.3 | CS Review Comments - Inspection Report Receipt |  | 10d | 2005-07-25 | 2005-08-05 |  | 125d | 0d | start no earlier than 2005-07-25 | CTS | 80h |
| 380 | 2.26.1.4 | CS - Code Review Fixes |  | 5d | 2005-08-08 | 2005-08-12 | 379 | 125d |  | finish no earlier than 2005-06-21 | CTS | 40h |
| 381 | 2.26.1.5 | Onsite Testing - ET / AT |  | 22d | 2005-07-04 | 2005-08-02 |  | 118d | 0d | start no earlier than 2005-07-04 | CTS | 176h |
| 382 | 2.26.1.6 | Deployment in IT | milestone | 0d | 2005-08-02 | 2005-08-02 |  | 133d |  | finish no earlier than 2005-08-02 | CTS |  |
| 383 | 2.26.1.7 | Submission of Test Report | milestone | 0d | 2005-08-02 | 2005-08-02 |  | 133d |  | finish no earlier than 2005-08-02 | CTS |  |
| 384 | 2.26.1.8 | IT Testing Cycle (Business) |  | 15d | 2005-08-03 | 2005-08-23 | 381 | 118d |  |  | CTS | 120h |
| 385 | 2.26.1.9 | Installations Tests |  | 1d? | 2005-07-04 | 2005-07-04 |  | 154d |  | start no earlier than 2005-07-04 | H. Meier | 8h |
| 386 | 2.26.1.10 | Durchführung und Auswertung der statistischen und dynamischen Unittests |  | 3d | 2005-07-04 | 2005-07-06 |  | 152d |  | start no earlier than 2005-07-04 | CTS | 24h |
| 387 | 2.26.1.11 | Planung Applikationstest |  | 1d | 2005-07-04 | 2005-07-04 |  | 154d |  | start no earlier than 2005-07-04 | T.Etter | 8h |
| 388 | 2.26.1.12 | Testdatenbereitstellung für Umgebung IT |  | 4d | 2005-05-31 | 2005-06-03 |  | 175d |  | start no earlier than 2005-05-31 | N.Evangelista | 32h |
| 389 | 2.26.1.13 | Infrastruktur- und Release-Pretest |  | 1d | 2005-07-04 | 2005-07-04 |  | 154d |  | start no earlier than 2005-07-04 | CTS | 8h |
| 390 | 2.26.2 | Deployment in IT/ Delivery to CS | milestone | 0d | 2005-07-27 | 2005-07-27 |  | 128d | 0d | start no earlier than 2005-07-27 |  |  |

Notes:
- 357: CR list to be added to represent list of CRs to be part of this release.
- 376: CR list to be added to represent list of CRs to be part of this release.

| ID | WBS | Task | Type | Duration | Start | Finish | Predecessors | Total slack | Free slack | Constraint | Resources | Work |
| --- | --- | --- | --- | --- | --- | --- | --- | --- | --- | --- | --- | --- |
| 391 | 2.26.3 | **Durchführung Applikationstest (IT) durch Business** |  | 10d? | 2005-07-27 | 2005-08-09 | 390 | 128d |  |  | N.Evangelista | 160h |
| 392 | 2.26.3.1 | Operative Testunterstützung |  | 9d | 2005-07-27 | 2005-08-08 |  | 128d | 0d | start no earlier than 2005-06-08 | N.Evangelista | 72h |
| 393 | 2.26.3.2 | Testauswertung Applikationstest (IT) |  | 1d? | 2005-08-09 | 2005-08-09 | 392 | 128d |  |  | N.Evangelista | 8h |
| 394 | 2.27 | **Integrate Satellite Projects** |  | 15d | 2005-08-01 | 2005-08-19 |  | 120d |  |  |  | 136h |
| 395 | 2.27.1 | Planung Applikationstest kombiniertes Testing mit Satelliten |  | 1d | 2005-08-01 | 2005-08-01 |  | 134d |  | start no earlier than 2005-08-01 | N.Evangelista | 8h |
| 396 | 2.27.2 | Merging with Satellite Projects |  | 6d | 2005-08-01 | 2005-08-08 |  | 120d | 0d | start no earlier than 2005-08-01 | CTS | 48h |
| 397 | 2.27.3 | Deployment in IT | milestone | 1d | 2005-08-09 | 2005-08-09 | 396 | 120d | 0d |  | CTS | 8h |
| 398 | 2.27.4 | Infrastruktur- und Release-Pretest |  | 3d | 2005-08-10 | 2005-08-12 | 397 | 120d | 0d |  | N.Evangelista | 24h |
| 399 | 2.27.5 | Durchführung kombiniertes Testing mit Satelliten |  | 3d | 2005-08-15 | 2005-08-17 | 398 | 120d | 0d |  | Business | 24h |
| 400 | 2.27.6 | Operative Testunterstützung |  | 1d | 2005-08-15 | 2005-08-15 | 398 | 124d |  |  | N.Evangelista | 8h |
| 401 | 2.27.7 | Testauswertung Applikationstest (IT) kombiniert mit Satelliten |  | 2d | 2005-08-18 | 2005-08-19 | 399 | 120d |  | start no earlier than 2005-08-17 | N.Evangelista | 16h |
| 402 | 2.28 | Setup PTA Environment ( Server,Firewalls,…) |  | 27d? | 2005-07-14 | 2005-08-19 |  | 120d |  | finish no earlier than 2005-08-19 | H.Meyer | 216h |
| 403 | 2.29 | DNST Tests vorbereiten |  | 1d? | 2005-08-10 | 2005-08-10 |  | 127d |  | finish no earlier than 2005-08-10 | R.Degen | 8h |
| 404 | 2.30 | **PTA (2 - 3 Deployments for SWAN XP)** |  | 48d? | 2005-08-10 | 2005-10-14 |  | 80d |  |  |  | 2968h |
| 405 | 2.30.1 | Request for Deployment |  | 41d? | 2005-08-19 | 2005-10-14 |  | 80d |  | start no earlier than 2005-08-19 | D.Gauch | 328h |
| 406 | 2.30.2 | Prepare/Check SwanXP CR |  | 41d? | 2005-08-19 | 2005-10-14 |  | 80d |  | start no earlier than 2005-08-19 | H.Meier | 328h |
| 407 | 2.30.3 | Prepare CCB |  | 41d? | 2005-08-19 | 2005-10-14 |  | 80d |  | start no earlier than 2005-08-19 | PCO | 328h |
| 408 | 2.30.4 | Inform Support Center |  | 41d? | 2005-08-19 | 2005-10-14 |  | 80d |  | start no earlier than 2005-08-19 |  |  |
| 409 | 2.30.5 | Prepare BHB |  | 41d? | 2005-08-19 | 2005-10-14 |  | 80d |  | start no earlier than 2005-08-19 |  |  |
| 410 | 2.30.6 | Prepare PAKT |  | 41d? | 2005-08-19 | 2005-10-14 |  | 80d |  | start no earlier than 2005-08-19 |  |  |
| 411 | 2.30.7 | Prepare Monitoring |  | 41d? | 2005-08-19 | 2005-10-14 |  | 80d |  | start no earlier than 2005-08-19 |  |  |
| 412 | 2.30.8 | Prepare Prod server environemnt ( FW,JAP Env, B1,DB,EAS) |  | 41d? | 2005-08-19 | 2005-10-14 |  | 80d |  | start no earlier than 2005-08-19 | H.Meier | 328h |
| 413 | 2.30.9 | Prepare Deploymentplan ( Which Pck to which server ) |  | 41d? | 2005-08-19 | 2005-10-14 |  | 80d |  | start no earlier than 2005-08-19 |  |  |
| 414 | 2.30.10 | Prepare Testcases for Testdirector |  | 1d? | 2005-08-19 | 2005-08-19 |  | 120d |  | finish no earlier than 2005-08-19 | N.Evangelista | 8h |
| 415 | 2.30.11 | Testdatenbereitstellung für Umgebung PT (alle Module) |  | 1d | 2005-08-19 | 2005-08-19 |  | 120d |  | finish no earlier than 2005-08-19 | N.Evangelista | 8h |
| 416 | 2.30.12 | Planung Applikationstest (Systemtest PT) |  | 1d | 2005-08-19 | 2005-08-19 |  | 120d |  | finish no earlier than 2005-08-19 | T.Etter | 8h |
| 417 | 2.30.13 | Allocate Ressources KP for PTA Deployment |  | 41d? | 2005-08-19 | 2005-10-14 |  | 80d |  | start no earlier than 2005-08-19 | D.Gauch | 328h |
| 418 | 2.30.14 | Create Packages for PTA ( NPL,EAS) |  | 1d? | 2005-08-19 | 2005-08-19 |  | 120d |  | finish no earlier than 2005-08-19 | H.Meier | 8h |
| 419 | 2.30.15 | Prepare Sateliteproject Pckg |  | 1d? | 2005-08-19 | 2005-08-19 |  | 120d |  | finish no earlier than 2005-08-19 | H.Meier | 8h |
| 420 | 2.30.16 | Deploy NOB Packages |  | 41d? | 2005-08-19 | 2005-10-14 |  | 80d |  | finish no earlier than 2005-10-14 | H.Meier | 328h |
| 421 | 2.30.17 | NOB Running in PT Environment | milestone | 1d? | 2005-08-19 | 2005-08-19 |  | 120d |  | finish no earlier than 2005-08-19 |  |  |
| 422 | 2.30.18 | Durchführung Applikationstest (PT) durch Business |  | 1d? | 2005-10-14 | 2005-10-14 |  | 80d |  | start no earlier than 2005-10-14 | Business | 8h |
| 423 | 2.30.19 | Durchführung technische Tests (Ausfall, Failover, auf PT Umgebung) |  | 3d | 2005-08-10 | 2005-08-12 |  | 125d |  | finish no earlier than 2005-08-12 | N.Evangelista | 24h |

| ID | WBS | Task | Duration | Start | Finish | Predecessors | Total slack | Free slack | Constraint | Resources | Work |
| --- | --- | --- | --- | --- | --- | --- | --- | --- | --- | --- | --- |
| 424 | 2.30.20 | **Test on PTA ( L&P )** | 16d | 2005-08-19 | 2005-09-09 |  | 105d |  |  | adhoc | 304h |
| 425 | 2.30.20.1 | Planung L&P Tests | 1d | 2005-08-19 | 2005-08-19 |  | 105d | 0d | start no earlier than 2005-08-19 | adhoc | 8h |
| 426 | 2.30.20.2 | Testdatenbereitstellung L&P Tests | 7d | 2005-08-22 | 2005-08-30 | 425 | 105d | 0d |  | N.Evangelista | 56h |
| 427 | 2.30.20.3 | Durchführung L&P Tests auf PT Umgebung (durch Adhoc) | 6d | 2005-08-31 | 2005-09-07 | 426 | 107d |  |  | adhoc | 48h |
| 428 | 2.30.20.4 | Operative Testunterstützung | 7d | 2005-08-31 | 2005-09-08 | 426 | 105d | 0d |  | N.Evangelista | 56h |
| 429 | 2.30.20.5 | Testauswertung L&P | 1d | 2005-09-09 | 2005-09-09 | 428 | 105d |  |  | adhoc | 8h |
| 430 | 2.30.21 | Create Testrports & Statistics | 41d? | 2005-08-19 | 2005-10-14 |  | 80d |  | start no earlier than 2005-08-19 | N.Evangelista | 328h |
| 431 | 2.30.22 | **Test on PTA (Abnahme)** | 27d | 2005-09-07 | 2005-10-13 |  | 81d |  |  |  | 296h |
| 432 | 2.30.22.1 | Planung Abnahmetest | 2d | 2005-09-21 | 2005-09-22 |  | 96d |  | start no earlier than 2005-09-21 | N.Evangelista | 16h |
| 433 | 2.30.22.2 | Infrastruktur- und Release-Pretest | 3d | 2005-09-28 | 2005-09-30 |  | 90d |  | start no earlier than 2005-09-28 | N.Evangelista | 24h |
| 434 | 2.30.22.3 | Durchführung Abnahmetest (durch Business) | 1d | 2005-10-05 | 2005-10-05 |  | 87d |  | start no earlier than 2005-10-05 | Business | 8h |
| 435 | 2.30.22.4 | Operative Testunterstützung | 27d | 2005-09-07 | 2005-10-13 |  | 81d |  | start no earlier than 2005-09-07 | N.Evangelista | 216h |
| 436 | 2.30.22.5 | Testauswertung Abnahmetest | 3d | 2005-10-10 | 2005-10-12 |  | 81d | 0d | start no earlier than 2005-10-10 | N.Evangelista | 24h |
| 437 | 2.30.22.6 | Testbericht für CCB freigeben | 1d | 2005-10-13 | 2005-10-13 | 436 | 81d |  |  | D.Gauch | 8h |
| 438 | 2.30.23 | Intergate Satproject 1:Test on PTA (Sateliteprojects ) | 41d? | 2005-08-19 | 2005-10-14 |  | 80d |  | start no earlier than 2005-08-19 |  |  |
| 439 | 2.30.24 | Intergate Satproject 2:Test on PTA (Sateliteprojects ) | 41d? | 2005-08-19 | 2005-10-14 |  | 80d |  | start no earlier than 2005-08-19 |  |  |
| 440 | 2.30.25 | Intergate Satproject 2:Test on PTA (Sateliteprojects ) | 41d? | 2005-08-19 | 2005-10-14 |  | 80d |  | start no earlier than 2005-08-19 |  |  |
| 441 | 2.30.26 | Intergate Satproject 3:Test on PTA (Sateliteprojects ) | 41d? | 2005-08-19 | 2005-10-14 |  | 80d |  | start no earlier than 2005-08-19 |  |  |
| 442 | 2.30.27 | Acceptance & Abnahme durch Business | 41d? | 2005-08-19 | 2005-10-14 |  | 80d |  | start no earlier than 2005-08-19 |  |  |
| 443 | 2.31 | **Production"Einführung 1" ( F&F testphase )** | 16d? | 2005-10-17 | 2005-11-07 |  | 64d |  |  |  | 744h |
| 444 | 2.31.1 | Erarbeiten Antrag zur Einführung in die Produktion | 15d? | 2005-10-17 | 2005-11-04 |  | 65d |  | finish no earlier than 2005-11-04 | D.Gauch | 120h |
| 445 | 2.31.2 | Prepare F&F B1 (Closed User Group with B1 ) | 15d? | 2005-10-17 | 2005-11-04 |  | 65d |  | finish no earlier than 2005-11-04 | JAP2E | 120h |
| 446 | 2.31.3 | Prepare/Check SwanXP CR | 15d? | 2005-10-17 | 2005-11-04 |  | 65d |  | finish no earlier than 2005-11-04 | D.Gauch | 120h |
| 447 | 2.31.4 | Prepare CCB | 15d? | 2005-10-17 | 2005-11-04 |  | 65d |  | finish no earlier than 2005-11-04 | PCO | 120h |
| 448 | 2.31.5 | Approval CCB | 15d? | 2005-10-17 | 2005-11-04 |  | 65d |  | finish no earlier than 2005-11-04 | CCB | 120h |
| 449 | 2.31.6 | Inform Support Center | 15d? | 2005-10-17 | 2005-11-04 |  | 65d |  | finish no earlier than 2005-11-04 |  |  |
| 450 | 2.31.7 | Prepare "Einfürungswochende"incl. Lunch | 15d? | 2005-10-17 | 2005-11-04 |  | 65d |  | finish no earlier than 2005-11-04 | C.Wolf | 120h |
| 451 | 2.31.8 | Prepare Going Live for F&F (make planning,with needed ressources ) | 15d? | 2005-10-17 | 2005-11-04 |  | 65d |  | finish no earlier than 2005-11-04 |  |  |
| 452 | 2.31.9 | Prepare NOB Monitoring ( Tivoli, Processes, Logfile Transport,…) | 15d? | 2005-10-17 | 2005-11-04 |  | 65d |  | finish no earlier than 2005-11-04 |  |  |
| 453 | 2.31.10 | Prepare Fallbacksolution | 15d? | 2005-10-17 | 2005-11-04 |  | 65d |  | finish no earlier than 2005-11-04 |  |  |
| 454 | 2.31.11 | Prepare Monitoring | 15d? | 2005-10-17 | 2005-11-04 |  | 65d |  | finish no earlier than 2005-11-04 |  |  |
| 455 | 2.31.12 | Prepare Prod server environemnt ( FW,JAP Env, B1,DB,EAS) | 15d? | 2005-10-17 | 2005-11-04 |  | 65d |  | finish no earlier than 2005-11-04 |  |  |
| 456 | 2.31.13 | Prepare Deploymentplan ( Which Pck to which server ) | 15d? | 2005-10-17 | 2005-11-04 |  | 65d |  | finish no earlier than 2005-11-04 |  |  |
| 457 | 2.31.14 | Allocate Ressources KP for Deployment | 15d? | 2005-10-17 | 2005-11-04 |  | 65d |  | finish no earlier than 2005-11-04 |  |  |
| 458 | 2.31.15 | Create Packages for Prod (NPL,EAS) | 15d? | 2005-10-17 | 2005-11-04 |  | 65d |  | finish no earlier than 2005-11-04 |  |  |
| 459 | 2.31.16 | Prepare Sateliteproject Pckg | 15d? | 2005-10-17 | 2005-11-04 |  | 65d |  | finish no earlier than 2005-11-04 |  |  |
| 460 | 2.31.17 | Planung Betriebstag (F&F) | 1d | 2005-11-04 | 2005-11-04 |  | 65d |  | finish no earlier than 2005-11-04 | N.Evangelista | 8h |
| 461 | 2.31.18 | Durchführung Betriebstag F&F (durch Business) | 1d | 2005-11-03 | 2005-11-03 |  | 66d |  | start no earlier than 2005-11-03 | Business | 8h |
| 462 | 2.31.19 | Testauswertung F&F | 1d | 2005-11-07 | 2005-11-07 |  | 64d |  | start no earlier than 2005-11-04 | N.Evangelista | 8h |

| ID | WBS | Task | Type | Duration | Start | Finish | Total slack | Constraint |
| --- | --- | --- | --- | --- | --- | --- | --- | --- |
| 463 | 2.32 | **Production"Einführung 2" ( Switch F&F off )** |  | 4d? | 2005-11-01 | 2005-11-04 | 65d |  |
| 464 | 2.32.1 | Prepare Switch Off of F&F closed user group |  | 4d | 2005-11-01 | 2005-11-04 | 65d | start no earlier than 2005-11-01 |
| 465 | 2.32.2 | Prepare/Check SwanXP CR |  | 4d | 2005-11-01 | 2005-11-04 | 65d | finish no earlier than 2005-11-04 |
| 466 | 2.32.3 | Prepare CCB |  | 4d | 2005-11-01 | 2005-11-04 | 65d | finish no earlier than 2005-11-04 |
| 467 | 2.32.4 | optional:Deployment | milestone | 0d? | 2005-11-04 | 2005-11-04 | 65d | start no earlier than 2005-11-04 |
| 468 | 2.32.5 | optional:Prepare Packages |  | 4d | 2005-11-01 | 2005-11-04 | 65d | finish no earlier than 2005-11-04 |
| 469 | 2.32.6 | Approval CCB | milestone | 0d | 2005-11-04 | 2005-11-04 | 66d | finish no earlier than 2005-11-04 |
| 470 | 2.33 | Switch Off F&F Closed User group | milestone | 0d | 2005-11-04 | 2005-11-04 | 66d | start no earlier than 2005-11-04 |
| 471 | 2.34 | PatchRelease 1 (Phase red ) | milestone | 0d | 2005-11-18 | 2005-11-18 | 56d | start no earlier than 2005-11-18 |
| 472 | 2.35 | PatchRelease 2(Phase yellow) | milestone | 0d | 2005-12-02 | 2005-12-02 | 46d | start no earlier than 2005-12-02 |
| 473 | 2.36 | test |  | 1d? | 2004-10-04 | 2004-10-04 | 350d |  |
