# Java Application Server Support (JASS) AR3

Schedule from MS Project, 2004-07-05 to 2005-04-04.
Phase Realisierung
Credit Suisse
Status: Version 1.0 (Final)

## Calendars

- Standard: Mon-Fri 08:00-12:00, 13:00-17:00; Sat-Sun off.

## Resources

| Resource | Notes |
| --- | --- |
| Carlo de Rossi | -> Ferien während IT2 (Task 65) müssen noch besprochen werden |
| Giando Mafrici |  |
| Virpi Heinonen |  |
| Karsten Walpert |  |
| Guido Diener |  |
| Padmaraju Nanduri | - Nicht explizit aufgezeigt sind die Aufwäne für das reine Projektmanagement |
| Phil Spencer |  |
| Rufer Daniel |  |
| Salvatore Antioco |  |
| Markus Kradolfer |  |
| Dieter Kruse |  |

## Schedule

| ID | WBS | Task | Type | Duration | Start | Finish | Predecessors | Total slack | Free slack | Constraint | Resources | Work |
| --- | --- | --- | --- | --- | --- | --- | --- | --- | --- | --- | --- | --- |
| 1 | 1 | RO v1.0 Review erstellt | milestone | 0d | 2004-07-19 | 2004-07-19 |  | 173d | 0d | start no earlier than 2004-07-19 |  |  |
| 2 | 2 | **Vernehmlassung RO** |  | 18d? | 2004-07-19 | 2004-08-11 | 1 | 168d |  |  |  |  |
| 3 | 2.1 | Schnittstellen Partner |  | 9d? | 2004-07-19 | 2004-07-29 |  | 173d | 0d | start no earlier than 2004-07-12 |  |  |
| 4 | 2.2 | KTX-Fachmeeting | milestone | 4d? | 2004-07-19 | 2004-07-22 |  | 178d | 5d | start no earlier than 2004-07-15 |  |  |
| 5 | 2.3 | JAP AO |  | 9d? | 2004-07-19 | 2004-07-29 |  | 173d | 0d | start no earlier than 2004-07-11 |  |  |
| 6 | 2.4 | Konsolidierung v1.0 Final |  | 2d? | 2004-07-30 | 2004-08-02 | 4, 3, 5 | 173d | 0d | start no earlier than 2004-07-18 |  |  |
| 7 | 2.5 | RO Anmeldung PRB Termin | milestone | 1d? | 2004-08-03 | 2004-08-03 | 6 | 173d | 5d | start no earlier than 2004-07-27 |  |  |
| 8 | 2.6 | RO PRB Termin | milestone | 1d? | 2004-08-11 | 2004-08-11 | 7 | 168d |  | start no earlier than 2004-08-11 |  |  |
| 9 | 3 | RO bewilligt (PRB) | milestone | 1d? | 2004-08-11 | 2004-08-11 |  | 168d |  | start no earlier than 2004-08-11 |  |  |
| 10 | 4 | **Engineering WLS Core** |  | 61d | 2004-07-05 | 2004-09-27 |  | 7d |  |  |  | 592h |
| 11 | 4.1 | **Engineering Common Infra** |  | 59d | 2004-07-05 | 2004-09-23 |  | 2d |  |  |  | 310h |
| 12 | 4.1.1 | WLS 8.1 sp3 verfügbar | milestone | 0d | 2004-07-05 | 2004-07-05 |  | 5d |  | start no earlier than 2004-07-05 |  |  |
| 13 | 4.1.2 | WLS 8.1 sp3 N0741 Abnahme |  | 3d | 2004-07-12 | 2004-07-14 | 12 | 2d | 0d | start no earlier than 2004-07-12 | Carlo de Rossi; Giando Mafrici | 48h |
| 14 | 4.1.3 | **Security** |  | 23d | 2004-07-15 | 2004-08-16 | 13 | 2d | 1d |  |  | 114h |
| 15 | 4.1.3.1 | ATN Tech Users |  | 10d | 2004-07-15 | 2004-08-12 |  | 4d |  |  | Carlo de Rossi [25%] | 20h |
| 16 | 4.1.3.2 | ATN Business Users (IGL) |  | 5d | 2004-07-15 | 2004-08-05 |  | 9d |  |  | Carlo de Rossi [25%] | 10h |
| 17 | 4.1.3.3 | LDAP Anbindung |  | 10d | 2004-08-02 | 2004-08-16 |  | 2d |  | start no earlier than 2004-08-02 | Carlo de Rossi [50%] | 40h |
| 18 | 4.1.3.4 | T3S CSFS extensions |  | 11d | 2004-07-15 | 2004-08-16 |  | 2d |  | start no earlier than 2004-07-12 | Giando Mafrici [50%] | 44h |
| 19 | 4.1.4 | **Domain Config Standards** |  | 22d | 2004-07-19 | 2004-08-17 | 13 | 1d | 0d |  |  | 80h |
| 20 | 4.1.4.1 | Setup Solaris mit RefApp |  | 9d | 2004-07-19 | 2004-08-04 |  | 1d |  | start no earlier than 2004-07-19 | Virpi Heinonen | 72h |
| 21 | 4.1.4.2 | T1-T5 / Special Eng. Verifikation |  | 2d | 2004-08-16 | 2004-08-17 | 20 | 1d |  | start no earlier than 2004-07-19 | Virpi Heinonen [25%] | 4h |
| 22 | 4.1.4.3 | RefApp Sample verfügbar |  | 2d | 2004-08-16 | 2004-08-17 | 20 | 1d | 0d | start no earlier than 2004-07-19 | Virpi Heinonen [25%] | 4h |
| 23 | 4.1.5 | ET |  | 3d | 2004-08-18 | 2004-08-20 | 14, 22, 19 | 1d | 0d |  | Carlo de Rossi [50%]; Giando Mafrici [50%]; Virpi Heinonen [50%] | 36h |
| 24 | 4.1.6 | SW Bundling (XP, Solaris) |  | 1d | 2004-08-23 | 2004-08-23 | 23 | 1d | 0d |  | Virpi Heinonen; Carlo de Rossi | 16h |
| 25 | 4.1.7 | Vanilla Release | milestone | 0d | 2004-08-23 | 2004-08-23 | 24 | 1d | 0d | start no earlier than 2004-08-23 |  |  |
| 26 | 4.1.8 | Orbix/JCB verfügbar (JDK1.4) | milestone | 0d | 2004-08-23 | 2004-08-23 |  | 3d | 1d | start no earlier than 2004-08-23 |  |  |
| 27 | 4.1.9 | Integration Support CORBA/JCB |  | 23d | 2004-08-24 | 2004-09-23 | 26, 25 | 2d |  |  | Carlo de Rossi [5%]; Giando Mafrici [5%] | 16h |

Notes:
- 14: Basieren auf dem Design von WLS Addons (siehe RO) ist die CS spezifische Security Realm zu implementieren (Custom Security Realm). / Im weiteren muss die gesamte heute verfügbare Funktionalität durch die neuen WLS Addons angeboten werden. / Zusätzliche Features wie im Security Concept und IGL definiert sind umzusetzen
- 19: - Minimal Setup engineering, so dass WLS base functionality verfügbar ist / - Setup muss so definiert werden, dass ein Projekt basierend auf dem die applikations bedingten Anpssungen vornehmen kann. Beispiel (Einsatz von CORBA, DB Zugriff usw.) Auch JAP muss hier wietere Customization vornehmen. / - Beinhaltet auch minimale Integration in die CSFS Infrastruktur / -> BBSS / -> JDK1.4.2 / -> PKI
- 20: - Verifikation pre-vanilla auf Solaris / - Minimal Setup engineered, so dass WLS base functionality auf Solaris verfügbar ist / - Setup muss so definiert werden, dass ein Projekt basierend auf dem die applikations bedingten Anpssungen vornehmen kann. Beispiel: Einsatz von CORBA, DB Zugriff usw. Auch JAP muss hier wietere Customization vornehmen können. / - Beinhaltet auch minimale Integration in die CSFS Infrastruktur (ist natürlich den Rahmenbedingungen der pre-vanilla Version unterstellt -> BBSS -> JDK1.4.x -> PKI)
- 21: - Minimal Setup engineering, so dass WLS base functionality verfügbar ist / - Setup muss so definiert werden, dass ein Projekt basierend auf dem die applikations bedingten Anpssungen vornehmen kann. Beispiel (Einsatz von CORBA, DB Zugriff usw.) Auch JAP muss hier wietere Customization vornehmen. / - Beinhaltet auch minimale Integration in die CSFS Infrastruktur / -> BBSS / -> JDK1.4.2 / -> PKI
- 22: - Minimal Setup engineering, so dass WLS base functionality verfügbar ist / - Setup muss so definiert werden, dass ein Projekt basierend auf dem die applikations bedingten Anpssungen vornehmen kann. Beispiel (Einsatz von CORBA, DB Zugriff usw.) Auch JAP muss hier wietere Customization vornehmen. / - Beinhaltet auch minimale Integration in die CSFS Infrastruktur / -> BBSS / -> JDK1.4.2 / -> PKI
- 23: Das WLS base package wird getestet (functional tests). / Hierbei werden die Tests aus dem System Design wiederholt (L&P + Interoptests). / Testanwendung, Testprotokoll sind zu dokumentieren / Im Weiteren wird die RefApp überprüft gemäss Demo.

| ID | WBS | Task | Type | Duration | Start | Finish | Predecessors | Total slack | Free slack | Constraint | Resources | Work |
| --- | --- | --- | --- | --- | --- | --- | --- | --- | --- | --- | --- | --- |
| 28 | 4.2 | **Integration CFW** |  | 25d | 2004-08-09 | 2004-09-10 |  | 146d |  |  |  | 118h |
| 29 | 4.2.1 | Verifikation Beta Version |  | 10d | 2004-08-09 | 2004-08-20 |  | 161.31d | 5d | start no earlier than 2004-08-09 | Carlo de Rossi [10%] | 8h |
| 30 | 4.2.2 | Extensions (Servlet, Locator) |  | 15d | 2004-08-09 | 2004-08-27 |  | 156.31d | 0d | start no earlier than 2004-08-09 | Giando Mafrici [25%] | 30h |
| 31 | 4.2.3 | ET |  | 5d | 2004-08-30 | 2004-09-03 | 30, 29 | 156.31d | 0d |  | Carlo de Rossi [50%]; Giando Mafrici [50%] | 40h |
| 32 | 4.2.4 | Übergabe an KAID 1 |  | 5d | 2004-09-06 | 2004-09-10 | 31 | 156.31d |  |  | Carlo de Rossi [50%]; Giando Mafrici [50%] | 40h |
| 33 | 4.3 | PKI, JDK, BBSS (final) verfügbar | milestone | 0d | 2004-08-28 | 2004-08-28 |  | 0d |  | start no earlier than 2004-08-28 |  |  |
| 34 | 4.4 | ReTest Vanilla |  | 10d | 2004-08-30 | 2004-09-10 | 33, 25 | 0d |  |  | Carlo de Rossi [15%]; Giando Mafrici [15%]; Virpi Heinonen [15%] | 36h |
| 35 | 4.5 | IT 1 |  | 9d | 2004-09-13 | 2004-09-23 | 34 | 0d |  | start no earlier than 2004-09-13 | Carlo de Rossi [50%]; Giando Mafrici [50%]; Virpi Heinonen [50%] | 108h |
| 36 | 4.6 | SW Bundling (XP, Solaris) |  | 2d | 2004-09-24 | 2004-09-27 | 35 | 0d |  |  | Virpi Heinonen [50%]; Carlo de Rossi [75%] | 20h |
| 37 | 4.7 | Alpha Release | milestone | 0d | 2004-09-27 | 2004-09-27 | 36, 27 | 0d |  | start no earlier than 2004-09-06 |  |  |
| 38 | 5 | **Interface Aux Systems** |  | 80d | 2004-08-02 | 2004-11-19 |  | 16d |  |  |  | 346h |
| 39 | 5.1 | **B1 Entry** |  | 26d | 2004-08-23 | 2004-09-27 |  | 0d |  |  |  | 56h |
| 40 | 5.1.1 | JDk1.4 fähige Version verfügbar | milestone | 0d | 2004-08-23 | 2004-08-23 |  | 1d | 0d | start no earlier than 2004-08-23 |  |  |
| 41 | 5.1.2 | Verifikation Integration |  | 9d | 2004-08-24 | 2004-09-03 | 40 | 0d |  | start no earlier than 2004-08-24 | Carlo de Rossi [50%] | 24h |
| 42 | 5.1.3 | Doku Einsatzsrichtlinien |  | 16d | 2004-09-06 | 2004-09-27 | 41 | 0d |  |  | Carlo de Rossi [25%] | 32h |
| 43 | 5.2 | **Management (Administration)** |  | 80d | 2004-08-02 | 2004-11-19 |  | 31d |  |  |  | 200h |
| 44 | 5.2.1 | Detailplanung v1.0 | milestone | 0d | 2004-08-02 | 2004-08-02 |  | 151.81d | 0d | start no earlier than 2004-08-02 |  |  |
| 45 | 5.2.2 | Implementation Central Mgr |  | 14d | 2004-08-02 | 2004-08-19 | 44 | 136d | 16d | start no earlier than 2004-08-02 | Guido Diener [75%] | 84h |
| 46 | 5.2.3 | Unittests (XP) |  | 8d | 2004-09-27 | 2004-10-06 | 45 | 112d | 1d | start no earlier than 2004-09-27 | Guido Diener [50%] | 32h |
| 47 | 5.2.4 | Abnahme Central Manager (Demo) | milestone | 1d | 2004-10-08 | 2004-10-08 | 46 | 111d | 15d | start no earlier than 2004-10-08 | Guido Diener [50%] | 4h |
| 48 | 5.2.5 | Zwischenlösung für Beta |  | 10d | 2004-09-13 | 2004-09-24 |  | 1d |  | start no earlier than 2004-09-12 | Guido Diener [50%] | 40h |
| 49 | 5.2.6 | Tivoli Schnittstellen "ready for use" | milestone | 0d | 2004-10-29 | 2004-10-29 |  | 97d | 1d | start no earlier than 2004-10-29 |  |  |
| 50 | 5.2.7 | Integrationstests |  | 15d | 2004-11-01 | 2004-11-19 | 49, 47 | 96d |  | start no earlier than 2004-08-31 | Guido Diener [50%] | 40h |
| 51 | 5.3 | **Monitoring** |  | 75d | 2004-08-02 | 2004-11-12 |  | 31d |  |  |  | 90h |
| 52 | 5.3.1 | Detailplannung v1.0 | milestone | 0d | 2004-08-02 | 2004-08-02 |  | 147d | 0d | start no earlier than 2004-08-02 |  |  |
| 53 | 5.3.2 | Unittests JMX (XP) |  | 13d | 2004-08-02 | 2004-08-18 | 52 | 147d | 1d | start no earlier than 2004-08-02 | Guido Diener [25%] | 26h |
| 54 | 5.3.3 | Abnahme JMX (Demo, Präsentation) | milestone | 1d | 2004-08-20 | 2004-08-20 | 53 | 146d | 50d | start no earlier than 2004-08-20 | Guido Diener [50%] | 4h |
| 55 | 5.3.4 | Fallback mit Pingerservlet |  | 10d | 2004-09-13 | 2004-09-24 |  | 1d |  | start no earlier than 2004-08-31 | Guido Diener [50%] | 40h |
| 56 | 5.3.5 | JMX Agent verfügbar | milestone | 0d | 2004-10-29 | 2004-10-29 |  | 97d | 1d | start no earlier than 2004-10-29 |  |  |
| 57 | 5.3.6 | Integrationsstests JMX Agent |  | 10d | 2004-11-01 | 2004-11-12 | 56, 54 | 101d |  | start no earlier than 2004-11-01 | Guido Diener [25%] | 20h |
| 58 | 6 | WLS Base Setup Detaildesign |  | 19d | 2004-07-26 | 2004-08-27 |  | 1d | 0d | start no earlier than 2004-07-26 | Virpi Heinonen [50%]; Padmaraju Nanduri [50%]; Carlo de Rossi [60%] | 66.53h |

Notes:
- 31: Das WLS base package wird getestet (functional tests). Testanwendung, Testprotokoll sind zu dokumentieren
- 32: Das WLS base package wird getestet (functional tests). Testanwendung, Testprotokoll sind zu dokumentieren
- 34: - Vanilla wird mit den finalen Versionen von PKI, JDK und BBSS Release, welche für das Zielplattform definiert wurden, getestet / - Inkompatibilitäten werden an Umsysteme gemeldet und Anpassungen vorgenommnen
- 35: - Load und Performance Tests aus Sys Design werden wiederholt / - Interoperabilitätests werden wiederholt / > Parallelbetrieb (Installation auf der gleichen Maschine) / > Kommunikation ("over the wire")
- 40: - Das SLS API ist nicht mit JDK1.4 getestet worden und muss im Vorfeld durchgeführt werden (-> B1 Entry KMV) / - Das SLS API unterstützt zur Zeit nur die 1.3 Keystores. Für WLS 8.1 werden aber 1.4 keystores vorausgesetzt (siehe PKI AR4). Eine entsprechende kompatible Version muss von B1 Entry zur Verfügung gestellt werden.
- 41: - Für die Verifikation wird das Setup von WLS 6.1 Addons verwendet und überprüft. Insbesondere der Simulator muss überprüft werden. Ein detaillietes Testing erfolgt im Rahmen von IT2.
- 42: - Zu erstellen analog dem Entwicklerhanbuch (Usage Dokument) für WLS 6.1 Addons / - Fokus: Einsetzbar für Anwender vom Alpha Release
- 44: - System Design Papier vollständig (inkl. Feedback aus Vernehmlassung) / - Detailplan (inkl. Produktionseinführung) erstellt / > Einzelne Arbeitsschritte klar aufgezeigt und Ressourcen zugeteilt / > Abgrenzungen und Abhängigkeiten sind ersichtlich / > Cirtical Path ermittelt / - Testsetup (ET, IT, PTA, Prod) erstellt
- 46: - Volle Funktionalität wird getestet / - Abhängigkeiten zu anderen Sys Mgmt Komponenten (TNM, Tivoli Start Agent usw.) werden simuliert / - proof-of-concept getestet und ready für Präsentation für key players
- 47: - Einladung an key people verschickt und Termin vereinbart / - Key People / > KernAGr / > KTSO (Imholz, Moser) / > KXM (A. Meier) / > KPTX / - Präesentation soll / 1. Überblick über angestrebte Lösung aufzeigen / 2. Alle abhängigen Systeme aufzeigen (inkl. Status) / 3. Fallback aufzeigen / 4. Demo basierend auf ET
- 48: - Da die Central Manager Lösung erst mit der Anbindung mit Tivoli zur Verfügung steht, muss bis dann eine Zwischenlösung bereitgestellt werden. / - Hierfür wird auf dem bestehenden Weboper aufgesetzt
- 49: - Anbindung ans Tivoli Node Manager verfügbar / - Testsetup (HW, SW) für Integrationstests verfügbar / - Entscheid GO/NOGO und Beschluss, ob Fallback "gezündet" werden soll
- 50: - Die auf XP getestete Umgebung wird nun auf einem Zielsystem ähnlichen Setup verifziert. / - Hinzu kommt vor allem das Starten / Stoppen der WLS Instanzen via TNM bzw. StartAgent / - Tests basierend auf einem RefApp Aufbau durchgeführt / - Betriebsprozesse mit JAP abschliessend abstimmen
- 52: - System Design Papier vollständig (inkl. Feedback aus Vernehmlassung) / - Detailplan (inkl. Produktionseinführung) erstellt / > Einzelne Arbeitsschritte klar aufgezeigt und Ressourcen zugeteilt / > Abgrenzungen und Abhängigkeiten sind ersichtlich / > Cirtical Path ermittelt / - Testsetup (ET, IT, PTA, Prod) erstellt / - Security Anbindung an JMX Agenten finalisiert
- 53: - Tests auf XP mit einem "DEMO" JMX Agenten wie z.B. WLSHELL / - Volle Funktionalität wird getestet / - proof-of-concept getestet und ready für Präsentation für key players
- 54: - Tests auf XP mit einem "DEMO" JMX Agenten wie z.B. WLSHELL / - Volle Funktionalität wird getestet / - proof-of-concept getestet und ready für Präsentation für key players / - Einladung an key people verschickt und Termin vereinbart (am besten zusammen mit Management Task) / - Key People / > KernAGr / > KTSO (Imholz, Moser) / > KXM (A. Meier) / > KPTX / - Präesentation soll / 1. Überblick über angestrebte Lösung aufzeigen / 2. Alle abhängigen Systeme aufzeigen (inkl. Status) / 3. Fallback aufzeigen / 4. Demo basierend auf ET
- 55: - Da der JMX Agent erst gegen Ende Oktober zur Verfügung steht, muss eine Zwischenlösung bis dann erarbeitet werden / - Die Zwischenlösung setzt auf den bestehenden Pingerservlet auf / - Wichitig ist hier die Interoperabilität zwischen TIP2.1 und TIP3.0 managed objects zu gewährleisten
- 56: - Die Ziellösung steht fest (JMX Agent, welches in der Produktion eingesetzt werden soll, ist durch JAP definiert) / -
- 57: - Die auf XP getestete Umgebung wird nun auf einem Zielsystem ähnlichen Setup verifziert. / - Tests basierend auf einem RefApp Aufbau durchgeführt / - Betriebsprozesse mit JAP abschliessend abstimmen
- 58: - Finalisierung vom Scope des WLS Bases Setups / - Vernehmlassung via N0741 Kern AGr, JAP, RTP / - Impacts auf V-CoP, Bestellprozess ermittelt / - Notwendige Anpassungen für V-CoP für

| ID | WBS | Task | Type | Duration | Start | Finish | Predecessors | Total slack | Free slack | Constraint | Resources | Work |
| --- | --- | --- | --- | --- | --- | --- | --- | --- | --- | --- | --- | --- |
| 59 | 7 | **Interface Ordering, Deployment** |  | 36d | 2004-08-09 | 2004-09-27 |  | 0d |  |  |  | 374h |
| 60 | 7.1 | JAP Ordering Tool Schnittstelle |  | 24d | 2004-08-24 | 2004-09-24 |  | 1d |  | finish no earlier than 2004-09-24 | Virpi Heinonen [20%] | 9.2h |
| 61 | 7.2 | **V-CoP Domain Manager** |  | 30d | 2004-08-16 | 2004-09-24 |  | 1d |  |  |  | 208.8h |
| 62 | 7.2.1 | V-CoP v2.0 baseline erstellt | milestone | 0d | 2004-08-16 | 2004-08-16 |  | 2.33d | 0d | start no earlier than 2004-08-16 | Virpi Heinonen [45%]; Karsten Walpert |  |
| 63 | 7.2.2 | V-CoP Anpassungen finalisiert |  | 7d | 2004-08-16 | 2004-08-25 | 62 | 2.33d | 1.33d | start no earlier than 2004-08-16 | Virpi Heinonen [80%] | 20.4h |
| 64 | 7.2.3 | Template Anpassungen |  | 15.67d | 2004-08-27 | 2004-09-17 | 63, 58 | 1d | 0d | start no earlier than 2004-08-15 | Virpi Heinonen [45%]; Karsten Walpert | 130.4h |
| 65 | 7.2.4 | ET |  | 5d | 2004-09-20 | 2004-09-24 | 64 | 1d |  | start no earlier than 2004-08-15 | Virpi Heinonen [45%]; Karsten Walpert | 58h |
| 66 | 7.3 | **QMBridge Appl. Deployment** |  | 36d | 2004-08-09 | 2004-09-27 |  | 0d |  |  |  | 156h |
| 67 | 7.3.1 | Requirement Specs finalization |  | 10d | 2004-08-09 | 2004-08-20 |  | 2d |  | start no earlier than 2004-08-08 | Padmaraju Nanduri [50%]; Giando Mafrici [25%] | 60h |
| 68 | 7.3.2 | Implementation |  | 24d | 2004-08-25 | 2004-09-27 | 25, 67 | 0d |  | finish no earlier than 2004-09-27 | Phil Spencer [50%]; Giando Mafrici [25%] | 96h |
| 69 | 8 | IT 2 (Final) |  | 18d | 2004-09-28 | 2004-10-21 | 37, 59, 39, 66, 55, 48 | 0d |  |  | Carlo de Rossi; Giando Mafrici [50%]; Virpi Heinonen [80%]; Karsten Walpert; Guido Diener [20%]; Padmaraju Nanduri [25%]; Dieter Kruse [25%] | 360.06h |
| 70 | 9 | SW Bundling (TIPD3.0, TIP+BBSS compliance) |  | 6d | 2004-10-22 | 2004-10-29 | 69 | 0d |  |  | Virpi Heinonen [90%]; Dieter Kruse [50%] | 67.2h |
| 71 | 10 | Beta Release | milestone | 0d | 2004-10-29 | 2004-10-29 | 70 | 0d |  | start no earlier than 2004-10-29 |  |  |
| 72 | 11 | **Interface Platforms** |  | 108d | 2004-11-01 | 2005-03-30 | 71 | 2d |  |  |  |  |
| 73 | 11.1 | Frontnet |  | 108d | 2004-11-01 | 2005-03-30 |  | 2d |  | start no earlier than 2004-08-23 |  |  |
| 74 | 11.2 | TIP3.0 |  | 108d | 2004-11-01 | 2005-03-30 |  | 2d |  |  |  |  |
| 75 | 12 | **Interface TIP2.1** |  | 108d | 2004-11-01 | 2005-03-30 | 71 | 3d |  |  |  |  |
| 76 | 12.1 | Interoptests TIP2.1 Pilots |  | 108d | 2004-11-01 | 2005-03-30 |  | 3d |  | start no earlier than 2004-09-13 |  |  |
| 77 | 13 | **Special Topics** |  | 92d? | 2004-08-23 | 2004-12-28 |  | 69d |  |  |  | 116.4h |
| 78 | 13.1 | Portal Implementation Guidelines |  | 20d | 2004-09-27 | 2004-11-12 |  | 68d | 0d | start no earlier than 2004-09-27 | Guido Diener [50%] | 22.4h |
| 79 | 13.2 | Pilotproject defined by JAP | milestone | 1d? | 2004-11-15 | 2004-11-15 | 78, 71 | 68d | 0d | start no earlier than 2004-11-01 |  |  |
| 80 | 13.3 | Custom build for Pilot |  | 20d? | 2004-11-16 | 2004-12-13 | 79, 78 | 68d | 0d |  |  |  |
| 81 | 13.4 | Consolidation for JASS AR4 |  | 11d? | 2004-12-14 | 2004-12-28 | 80 | 68d |  |  |  |  |
| 82 | 13.5 | Start Integration Corba EJB Bridge | milestone | 25d | 2004-10-04 | 2004-11-05 |  | 106d |  | start no earlier than 2004-10-04 |  |  |
| 83 | 13.6 | JCA Einsatzrichtlinien |  | 50d | 2004-08-23 | 2004-11-09 |  | 104d |  | start no earlier than 2004-08-22 | Padmaraju Nanduri [25%] | 94h |
| 84 | 14 | Erstellung Guidelines |  | 75d | 2004-09-28 | 2005-01-10 | 37 | 60d | 0d | start no earlier than 2004-09-06 | Padmaraju Nanduri [25%]; Rufer Daniel [24%]; Virpi Heinonen [20%]; Salvatore Antioco [8%]; Carlo de Rossi [50%]; Guido Diener [25%]; Dieter Kruse [25%] | 811.39h |
| 85 | 15 | KMV Guidelines für CFW, Addons |  | 50d | 2004-11-01 | 2005-01-07 | 71 | 61d | 1d | start no earlier than 2004-09-06 | Carlo de Rossi [39.2%]; Virpi Heinonen [29.4%]; Guido Diener [25%] | 370.51h |
| 86 | 16 | Vorbereitung Betriebsübergabe |  | 40d | 2004-09-29 | 2004-11-23 | 37 | 94d | 34d | start no earlier than 2004-09-29 | Padmaraju Nanduri [25%]; Dieter Kruse [25%] | 110h |

Notes:
- 60: - Schnittstellen Management, so dass Input von V-CoP Anpassungen an Bestellttool Projekt mitgeliefert werden / - Schnittstellen Management, so dass Input vom Bestelltool Projekt in die V-CoP Anpassungen einfliessen
- 63: - Parellel zum Solaris Setup soll überprüft werden, ob die grundsätzlichen Anpassungen an V-CoP bestimmt sind / - Aufgabenaufteilung zwischen Ressourcen Karsten und Heinonen liegt for / - Aufträge an Bestelltool Team erstellt
- 65: - Erstellung von Sample Instanzen für T1-T5 und Special Engineering / - Verifikation via Installation mittels pkgadd (keine PVCS Integration) / - Usage Document für IT2 erstellt
- 67: - Anpassungen WLS 8.1 bedingt / - Exploded EAR Einsatz / - Classloading Anpassungen
- 69: - Siehe N0741 Testkonzept / - Testumfang: / -> JAP reference application / -> Special Engineering Projekt (SESAM)
- 70: - XP Version kann problemlos ins TIPD 3.0 integriert werden / - Solaris Version (Basepackages für TIP) für PVCS ready / - Festlegung der Komponenten, welche BBSS zertifiziert werden müssen
- 73: - Unterstützung der Plattform sowie diese anfallt (insbesondere bei der Migration nach JAP)
- 74: - Coaching und Support für Piloten gewährleistet / - Fine Tuning der gelieferten Komponenten / - Open Issues die während der Realisierung entstehen (siehe jap_open_issues.xls Dokument)
- 76: - Support von Pilotprojekten bei der Migration nach WLS 8.1
- 78: - Guidelines erstellt / - Vernehmlassung via KernAGr, JAP erfolgt / - Fokus: / > Wie kann eine Portal Infrastruktur angeboten werden? / >
- 80: - Plannung abschliessend nicht möglich, da Definition von einem entsprechenden Piloten erst ab 01.11.04 möglich
- 82: - Anforderungsspezifikation aus JAP3.0 steht fest / > Offen zur Zeit: ob Standard Lösung angeboten werden kann oder nur im Rahmen eines Special Engineering Projektes / - Auftrag an JASS AR3 steht fest / - Detailplanung basieren darauf ist erstellt / - Geplante Ressourcen hierfür: / > gma / > psp / > kwa
- 84: - Templates an JAP Dokumenten ausrichten (pna) / - Migrationsrichtlinien für die Umstellung von WLS6.1 nach WLS8.1 (cdr) / - WLS Infrastruktur Übersicht und Detaillierung (vhe) / - Konfiguration des WLS Security Frameworks (cdr) / - Einsatzsrichtlinien sowie PV Dokument für V-CoP (dkr, dru) / - Einsatzsrichtlinien sowie PV Dokument für Sys Management + Monitoring (gdi)

| ID | WBS | Task | Type | Duration | Start | Finish | Predecessors | Total slack | Free slack | Constraint | Resources | Work |
| --- | --- | --- | --- | --- | --- | --- | --- | --- | --- | --- | --- | --- |
| 87 | 17 | **Erstellung RD** |  | 41d | 2004-11-15 | 2005-01-10 | 71 | 60d |  |  |  | 159.23h |
| 88 | 17.1 | Dokumentation Phasenpapier |  | 20d | 2004-11-15 | 2004-12-10 |  | 65d | 0d | start no earlier than 2004-11-15 | Padmaraju Nanduri [50%]; Markus Kradolfer [40%]; Dieter Kruse [25%] | 159.23h |
| 89 | 17.2 | Vernehmlassung |  | 16d | 2004-12-13 | 2005-01-03 | 88 | 65d | 5d |  |  |  |
| 90 | 17.3 | Request for Deployment (CCB tbd) | milestone | 0d | 2005-01-10 | 2005-01-10 | 89, 86, 84, 85 | 60d |  | start no earlier than 2004-12-17 |  |  |
| 91 | 18 | **Burn-in** |  | 110d | 2004-11-01 | 2005-04-01 | 71 | 0d |  |  |  |  |
| 92 | 18.1 | Koordination Pilot projects (tbd) |  | 110d | 2004-11-01 | 2005-04-01 |  | 0d |  |  |  |  |
| 93 | 19 | Request for Conclusion | milestone | 1d? | 2005-04-04 | 2005-04-04 | 92, 72, 81 | 0d |  | start no earlier than 2004-11-17 |  |  |

Notes:
- 89: - Erfolgt über Schnittstellenpartner
- 92: - Hängt mit Tasks 70, 71 und 73 ab und wird abschliessend nach bekanntgabe durch JAP festlegt
