Schedule from MS Project, 2005-05-09 to 2006-03-03.
COGNIZANT TECHNOLOGICAL SOLUTIONS

## Calendars

- Standard: Mon-Fri 08:00-12:00, 13:00-17:00; Sat-Sun off.

## Resources

| Resource |
| --- |
| Credit Suisse |
| Cog-Onsite1 |
| Cog-Onsite1 |
| R1 |
| R2 |
| R3 |
| R4 |
| R5 |
| R6 |
| BF1 |
| BF2 |
| Cognizant |
| BB |
| MD |
| CK |
| SA |
| PS |
| AK |
| XYZ |
| 9 |
| D.Gauch |
| H.Meier |
| PCO |
| N.Evangelista |
| Business |
| adhoc |
| JAP2E |
| CCB |
| C.Wolf |
| H. Meier |
| Th. Mayer |
| CTS |
| Business Test-Team |

## Schedule

| ID | WBS | Task | Type | Duration | Start | Finish | Predecessors | Total slack | Free slack | Constraint | Resources | Work |
| --- | --- | --- | --- | --- | --- | --- | --- | --- | --- | --- | --- | --- |
| 1 | 1 | **NOB AR4.1 (Tading) - Projektergebnisse** |  | 214d? | 2005-05-09 | 2006-03-03 |  | 0d |  |  |  | 5376h |
| 2 | 1.1.3.5 | Tradenet MCP façade & Otex Corba services in IT with IT quality (With limitations in validateSubmit & initOrder) | milestone | 0d | 2005-07-12 | 2005-07-12 |  | 168d |  | start no earlier than 2005-07-12 | Credit Suisse |  |
| 3 | 1.1.3.6 | Tradenet MCP façade & Otex Corba services in IT with IT quality(No Limitations) | milestone | 0d | 2005-08-30 | 2005-08-30 |  | 133d |  | start no earlier than 2005-08-30 | Credit Suisse |  |
| 4 | 1.6 | **Release - Trading** |  | 116d? | 2005-05-09 | 2005-10-17 |  | 98d |  |  |  | 1120h |
| 5 | 1.2.1 | **Iteration-1 (All Use Cases except TR011-TR013,TR015-17)** |  | 95d? | 2005-05-09 | 2005-09-16 |  | 119d |  |  |  | 624h |
| 6 | 1.2.1.1 | Construction and Unit Testing |  | 47d | 2005-05-09 | 2005-07-12 |  | 152d | 0d | finish no earlier than 2005-07-12 |  |  |
| 7 | 1.2.1.2 | Credit Suisse Code Review- Release from Cognizant | milestone | 0d | 2005-07-12 | 2005-07-12 | 6 | 152d | 0d |  |  |  |
| 8 | 1.2.1.3 | CS Review Comments - Inspection Report Receipt |  | 10d | 2005-07-13 | 2005-07-26 | 7 | 152d | 0d |  |  |  |
| 9 | 1.2.1.4 | CS - Code Review Fixes |  | 5d | 2005-07-27 | 2005-08-02 | 8 | 152d |  |  |  |  |
| 10 | 1.2.1.5 | Onsite Testing - ET / AT |  | 15d | 2005-07-13 | 2005-08-02 | 6 | 152d | 0d | finish no earlier than 2005-08-01 |  |  |
| 11 | 1.2.1.6 | Deployment in IT | milestone | 0d | 2005-08-01 | 2005-08-01 |  | 154d |  | start no earlier than 2005-08-01 |  |  |
| 12 | 1.2.1.7 | Submission of Test Report | milestone | 0d | 2005-08-02 | 2005-08-02 | 10 | 152d |  |  |  |  |
| 13 | 1.3.1.8 | Installations Tests |  | 1d? | 2005-07-20 | 2005-07-20 |  | 161d |  | start no earlier than 2005-07-20 | H. Meier | 8h |
| 14 | 1.3.1.9 | Durchführung und Auswertung der statistischen und dynamischen Unittests |  | 3d | 2005-07-20 | 2005-07-22 |  | 159d |  | start no earlier than 2005-07-20 | Th. Mayer | 24h |
| 15 | 1.3.1.10 | Planung Applikationstest |  | 1d | 2005-07-20 | 2005-07-20 |  | 161d |  | start no earlier than 2005-07-20 |  |  |
| 16 | 1.3.1.11 | Testdatenbereitstellung für Umgebung IT |  | 4d | 2005-05-16 | 2005-05-19 |  | 205d |  | start no earlier than 2005-05-16 | N.Evangelista | 32h |
| 17 | 1.3.1.12 | Infrastruktur- und Release-Pretest |  | 1d | 2005-07-20 | 2005-07-20 |  | 161d |  | start no earlier than 2005-07-20 | N.Evangelista | 8h |
| 18 | 1.3.1.13 | **Durchführung Applikationstest (IT) durch Business** |  | 35d? | 2005-08-01 | 2005-09-16 |  | 119d |  |  | Business Test-Team | 552h |
| 19 | 1.3.1.13.1 | Operative Testunterstützung |  | 34d | 2005-08-01 | 2005-09-15 |  | 119d | 0d | finish no earlier than 2005-09-15 | N.Evangelista | 272h |
| 20 | 1.3.1.13.2 | Testauswertung Applikationstest (IT) |  | 1d? | 2005-09-16 | 2005-09-16 | 19 | 119d |  |  |  |  |
| 21 | 1.2.2 | **Iteration-2 (TR011-TR013,TR015-17)** |  | 96d? | 2005-06-06 | 2005-10-17 |  | 98d |  |  |  | 496h |
| 22 | 1.2.1.1 | Construction and Unit Testing |  | 40d | 2005-07-06 | 2005-08-30 |  | 117d | 0d | finish no earlier than 2005-08-30 |  |  |
| 23 | 1.2.1.2 | Credit Suisse Code Review- Release from Cognizant | milestone | 0d | 2005-08-30 | 2005-08-30 | 22 | 117d | 0d |  |  |  |
| 24 | 1.2.1.3 | CS Review Comments - Inspection Report Receipt |  | 10d | 2005-08-31 | 2005-09-13 | 23 | 117d | 0d |  |  |  |
| 25 | 1.2.1.4 | CS - Code Review Fixes |  | 5d | 2005-09-14 | 2005-09-20 | 24 | 117d |  |  |  |  |
| 26 | 1.2.1.5 | Onsite Testing - ET / AT |  | 15d | 2005-08-30 | 2005-09-19 |  | 118d | 0d | start no earlier than 2005-08-30 |  |  |
| 27 | 1.2.1.6 | Deployment in IT | milestone | 0d | 2005-09-09 | 2005-09-09 |  | 98d | 0d | start no earlier than 2005-09-09 |  |  |
| 28 | 1.2.1.7 | Submission of Test Report | milestone | 0d | 2005-09-19 | 2005-09-19 | 26 | 118d |  |  |  |  |
| 29 | 1.3.2.8 | Installations Tests |  | 1d? | 2005-09-05 | 2005-09-05 |  | 128d |  | start no earlier than 2005-09-05 | H. Meier | 8h |
| 30 | 1.3.2.9 | Durchführung und Auswertung der statistischen und dynamischen Unittests |  | 3d | 2005-09-05 | 2005-09-07 |  | 126d |  | start no earlier than 2005-09-05 | Th. Mayer | 24h |
| 31 | 1.3.2.10 | Planung Applikationstest |  | 1d | 2005-09-05 | 2005-09-05 |  | 128d |  | start no earlier than 2005-09-05 |  |  |
| 32 | 1.3.2.11 | Testdatenbereitstellung für Umgebung IT |  | 4d | 2005-06-06 | 2005-06-09 |  | 190d |  | start no earlier than 2005-06-06 | N.Evangelista | 32h |
| 33 | 1.3.2.12 | Infrastruktur- und Release-Pretest |  | 1d | 2005-09-05 | 2005-09-05 |  | 128d |  | start no earlier than 2005-09-05 | N.Evangelista | 8h |

Notes:
- 2: Assumed date of all services in IT is July 12 2005. / initOrder & validateSubmitOrder shall be functional with very few limitations
- 3: Services will have no limitations
- 18: Trading will not be deployed in IT for testing by Business. This is being done only for Initial Code Review.

| ID | WBS | Task | Type | Duration | Start | Finish | Predecessors | Total slack | Free slack | Constraint | Resources | Work |
| --- | --- | --- | --- | --- | --- | --- | --- | --- | --- | --- | --- | --- |
| 34 | 1.3.2.13 | **Durchführung Applikationstest (IT) durch Business** |  | 27d | 2005-09-09 | 2005-10-17 | 27 | 98d |  |  | Business Test-Team | 424h |
| 35 | 1.3.2.13.1 | Operative Testunterstützung |  | 26d | 2005-09-09 | 2005-10-14 |  | 98d | 0d | finish no earlier than 2005-10-14 | N.Evangelista | 208h |
| 36 | 1.3.2.13.2 | Testauswertung Applikationstest (IT) |  | 1d | 2005-10-17 | 2005-10-17 | 35 | 98d |  |  |  |  |
| 37 | 1.2.3 | **Iteration-3 (Clean-up)** |  | 34d | 2005-08-30 | 2005-10-14 |  | 99d |  |  |  |  |
| 38 | 1.2.3.2 | Onsite Testing - ET / AT |  | 16d | 2005-08-30 | 2005-09-20 |  | 99d | 0d | start no earlier than 2005-08-30 |  |  |
| 39 | 1.2.3.3 | Deployment in IT | milestone | 0d | 2005-09-20 | 2005-09-20 | 38 | 117d | 0d |  |  |  |
| 40 | 1.2.3.6 | Submission of Test Report | milestone | 0d | 2005-09-20 | 2005-09-20 | 39 | 117d |  |  |  |  |
| 41 | 1.2.3.7 | IT Testing Cycle (Business) |  | 18d | 2005-09-21 | 2005-10-14 | 38 | 99d | 0d |  |  |  |
| 42 | 1.2.9 | PTA Preparation |  | 5d | 2005-10-10 | 2005-10-14 | 41FS-5d | 99d |  |  | Credit Suisse | 40h |
| 43 | 1.5 | **PTA (2 - 3 Deployments for SWAN XP)** |  | 51d? | 2005-10-14 | 2005-12-23 |  | 49d |  |  |  | 3544h |
| 44 | 1.5.1 | Request for Deployment |  | 50d | 2005-10-17 | 2005-12-23 |  | 49d |  | start no earlier than 2005-10-17 | D.Gauch | 400h |
| 45 | 1.5.2 | Prepare/Check SwanXP CR |  | 50d | 2005-10-17 | 2005-12-23 |  | 49d |  | start no earlier than 2005-10-17 | H.Meier | 400h |
| 46 | 1.5.3 | Prepare CCB |  | 50d | 2005-10-17 | 2005-12-23 |  | 49d |  | start no earlier than 2005-10-17 | PCO | 400h |
| 47 | 1.5.4 | Inform Support Center |  | 50d | 2005-10-17 | 2005-12-23 |  | 49d |  | start no earlier than 2005-10-17 |  |  |
| 48 | 1.5.5 | Prepare BHB |  | 50d | 2005-10-17 | 2005-12-23 |  | 49d |  | start no earlier than 2005-10-17 |  |  |
| 49 | 1.5.6 | Prepare PAKT |  | 50d | 2005-10-17 | 2005-12-23 |  | 49d |  | start no earlier than 2005-10-17 |  |  |
| 50 | 1.5.7 | Prepare Monitoring |  | 50d | 2005-10-17 | 2005-12-23 |  | 49d |  | start no earlier than 2005-10-17 |  |  |
| 51 | 1.5.8 | Prepare PTA server environemnt ( FW,JAP Env, B1,DB,EAS) |  | 50d | 2005-10-17 | 2005-12-23 |  | 49d |  | start no earlier than 2005-10-17 | H.Meier | 400h |
| 52 | 1.5.9 | Prepare Deploymentplan ( Which Pck to which server ) |  | 50d | 2005-10-17 | 2005-12-23 |  | 49d |  | start no earlier than 2005-10-17 |  |  |
| 53 | 1.5.10 | Prepare Testcases for Testdirector |  | 50d | 2005-10-17 | 2005-12-23 |  | 49d |  | start no earlier than 2005-10-17 | N.Evangelista | 400h |
| 54 | 1.5.11 | Testdatenbereitstellung für Umgebung PT (alle Module) |  | 6d | 2005-10-17 | 2005-10-24 |  | 92d | 0d | finish no earlier than 2005-10-24 | N.Evangelista | 48h |
| 55 | 1.5.12 | Planung Applikationstest (Systemtest PT) |  | 1d | 2005-10-25 | 2005-10-25 | 54 | 92d |  | start no earlier than 2005-10-17 | N.Evangelista | 8h |
| 56 | 1.5.13 | Allocate Ressources KP for PTA Deployment |  | 50d | 2005-10-17 | 2005-12-23 |  | 49d |  | start no earlier than 2005-10-17 |  |  |
| 57 | 1.5.14 | Create Packages for PTA ( NPL,EAS) |  | 50d | 2005-10-17 | 2005-12-23 |  | 49d |  | start no earlier than 2005-10-17 | H.Meier | 400h |
| 58 | 1.5.15 | Prepare Sateliteproject Pckg |  | 50d | 2005-10-17 | 2005-12-23 |  | 49d |  | start no earlier than 2005-10-17 |  |  |
| 59 | 1.5.16 | Installations-Test |  | 3d | 2005-10-14 | 2005-10-18 |  | 97d |  | start no earlier than 2005-10-14 | H.Meier | 24h |
| 60 | 1.5.17 | Deploy NOB Packages |  | 50d | 2005-10-17 | 2005-12-23 |  | 49d |  | start no earlier than 2005-10-17 | H.Meier | 400h |
| 61 | 1.5.18 | NOB Running in PT Environment |  | 50d | 2005-10-17 | 2005-12-23 |  | 49d |  | start no earlier than 2005-10-17 |  |  |
| 62 | 1.5.19 | Durchführung Applikationstest (PT) durch Business |  | 1d? | 2005-10-14 | 2005-10-14 |  | 99d |  | start no earlier than 2005-10-14 | Business | 8h |
| 63 | 1.5.20 | Durchführung technische Tests (Ausfall, Failover, auf PT Umgebung) |  | 3d | 2005-10-17 | 2005-10-19 |  | 96d |  | start no earlier than 2005-10-17 | N.Evangelista | 24h |

Notes:
- 34: Trading will not be deployed in IT for testing by Business. This is being done only for Initial Code Review.
- 37: This iteration is a independant iteration and works with Otext November release i.e services received in IT by August 30 2005

| ID | WBS | Task | Type | Duration | Start | Finish | Predecessors | Total slack | Free slack | Constraint | Resources | Work |
| --- | --- | --- | --- | --- | --- | --- | --- | --- | --- | --- | --- | --- |
| 64 | 1.5.21 | **Test on PTA ( L&P )** |  | 16d | 2005-10-17 | 2005-11-07 |  | 83d |  |  | adhoc | 304h |
| 65 | 1.5.21.1 | Planung L&P Tests |  | 1d | 2005-10-17 | 2005-10-17 |  | 83d | 0d | start no earlier than 2005-10-17 | adhoc | 8h |
| 66 | 1.5.21.2 | Testdatenbereitstellung L&P Tests |  | 7d | 2005-10-18 | 2005-10-26 | 65 | 83d | 0d |  | N.Evangelista | 56h |
| 67 | 1.5.21.3 | Durchführung L&P Tests auf PT Umgebung (durch Adhoc) |  | 6d | 2005-10-27 | 2005-11-03 | 66 | 85d |  |  | adhoc | 48h |
| 68 | 1.5.21.4 | Operative Testunterstützung |  | 7d | 2005-10-27 | 2005-11-04 | 66 | 83d | 0d |  | N.Evangelista | 56h |
| 69 | 1.5.21.5 | Testauswertung L&P |  | 1d | 2005-11-07 | 2005-11-07 | 68 | 83d |  |  | adhoc | 8h |
| 70 | 1.5.22 | Create Testrports & Statistics |  | 41d? | 2005-10-17 | 2005-12-12 |  | 58d |  | start no earlier than 2005-10-17 | N.Evangelista | 328h |
| 71 | 1.5.23 | Acceptance & Abnahme durch Business |  | 50d? | 2005-10-17 | 2005-12-23 |  | 49d |  | start no earlier than 2005-10-17 |  |  |
| 72 | 1.6 | **Production"Einführung 1" ( F&F testphase )** |  | 16d? | 2006-01-13 | 2006-02-03 |  | 19d |  |  |  | 672h |
| 73 | 1.6.1 | Erarbeiten Antrag zur Einführung in die Produktion |  | 16d? | 2006-01-13 | 2006-02-03 |  | 19d |  | start no earlier than 2006-01-13 | D.Gauch | 128h |
| 74 | 1.6.2 | Prepare F&F B1 (Closed User Group with B1 ) |  | 16d? | 2006-01-13 | 2006-02-03 |  | 19d |  | start no earlier than 2006-01-13 | JAP2E | 128h |
| 75 | 1.6.3 | Prepare/Check SwanXP CR |  | 16d? | 2006-01-13 | 2006-02-03 |  | 19d |  | start no earlier than 2006-01-13 | D.Gauch | 128h |
| 76 | 1.6.4 | Prepare CCB |  | 16d? | 2006-01-13 | 2006-02-03 |  | 19d |  | start no earlier than 2006-01-13 | PCO | 128h |
| 77 | 1.6.5 | Approval CCB |  | 1d? | 2006-02-03 | 2006-02-03 |  | 19d |  | start no earlier than 2006-02-03 | CCB | 8h |
| 78 | 1.6.6 | Inform Support Center |  | 16d? | 2006-01-13 | 2006-02-03 |  | 19d |  | start no earlier than 2006-01-13 |  |  |
| 79 | 1.6.7 | Prepare "Einfürungswochende"incl. Lunch |  | 16d? | 2006-01-13 | 2006-02-03 |  | 19d |  | start no earlier than 2006-01-13 | C.Wolf | 128h |
| 80 | 1.6.8 | Prepare Going Live for F&F (make planning,with needed ressources ) |  | 16d? | 2006-01-13 | 2006-02-03 |  | 19d |  | start no earlier than 2006-01-13 |  |  |
| 81 | 1.6.9 | Prepare NOB Monitoring ( Tivoli, Processes, Logfile Transport,…) |  | 16d? | 2006-01-13 | 2006-02-03 |  | 19d |  | start no earlier than 2006-01-13 |  |  |
| 82 | 1.6.10 | Prepare Fallbacksolution |  | 16d? | 2006-01-13 | 2006-02-03 |  | 19d |  | start no earlier than 2006-01-13 |  |  |
| 83 | 1.6.11 | Prepare Monitoring |  | 16d? | 2006-01-13 | 2006-02-03 |  | 19d |  | start no earlier than 2006-01-13 |  |  |
| 84 | 1.6.12 | Prepare Prod server environemnt ( FW,JAP Env, B1,DB,EAS) |  | 16d? | 2006-01-13 | 2006-02-03 |  | 19d |  | start no earlier than 2006-01-13 |  |  |
| 85 | 1.6.13 | Prepare Deploymentplan ( Which Pck to which server ) |  | 16d? | 2006-01-13 | 2006-02-03 |  | 19d |  | start no earlier than 2006-01-13 |  |  |
| 86 | 1.6.14 | Allocate Ressources KP for Deployment |  | 16d? | 2006-01-13 | 2006-02-03 |  | 19d |  | start no earlier than 2006-01-13 |  |  |
| 87 | 1.6.15 | Create Packages for Prod (NPL,EAS) |  | 16d? | 2006-01-13 | 2006-02-03 |  | 19d |  | start no earlier than 2006-01-13 |  |  |
| 88 | 1.6.16 | Prepare Sateliteproject Pckg |  | 16d? | 2006-01-13 | 2006-02-03 |  | 19d |  | start no earlier than 2006-01-13 |  |  |
| 89 | 1.6.17 | Planung Betriebstag (F&F) |  | 1d | 2006-02-03 | 2006-02-03 |  | 19d |  | finish no earlier than 2006-02-03 | N.Evangelista | 8h |
| 90 | 1.6.18 | Durchführung Betriebstag F&F (durch Business) |  | 1d | 2006-02-03 | 2006-02-03 |  | 19d |  | start no earlier than 2006-02-03 | Business | 8h |
| 91 | 1.6.19 | Testauswertung F&F |  | 1d | 2006-02-03 | 2006-02-03 |  | 19d |  | start no earlier than 2006-02-03 | N.Evangelista | 8h |
| 92 | 1.7 | Switch Off F&F Closed User group | milestone | 0d | 2006-02-03 | 2006-02-03 |  | 20d |  | start no earlier than 2006-02-03 |  |  |
| 93 | 1.8 | PatchRelease 1 (Phase red ) | milestone | 0d | 2006-02-17 | 2006-02-17 |  | 10d |  | start no earlier than 2006-02-17 |  |  |
| 94 | 1.9 | PatchRelease 2(Phase yellow) | milestone | 0d | 2006-03-03 | 2006-03-03 |  | 0d |  | start no earlier than 2006-03-03 |  |  |
