# project_schedule_task_force

Schedule from MS Project, 2009-05-11 to 2009-08-31, costs in SFr., A marks actual dates.
CREDIT SUISSE

## Calendars

- Standard: Mon-Fri 08:00-12:00, 13:00-17:00; Sat-Sun off.

## Resources

| Resource | Rate |
| --- | --- |
| René Steg | 192.5 |
| Solution Engineer | 150 |
| TIS | 106.25 |
| Debarghya Ghatak | 125 |
| Sebastian Risse |  |
| José Hernaiz |  |
| L&P Team | 106.25 |

## Schedule

| ID | WBS | Task | Type | Duration | Start | Finish | Predecessors | Complete | Remaining | Total slack | Free slack | Constraint | Resources | Work | Actual work | Cost | Actual cost |
| --- | --- | --- | --- | --- | --- | --- | --- | --- | --- | --- | --- | --- | --- | --- | --- | --- | --- |
| 1 | 1 | **Project N2130** |  | 81d | 2009-05-11 A | 2009-08-31 |  | 2% | 79.35d | 0d |  |  |  | 1376h | 32h | 192,950 | 6,160 |
| 2 | 1.1 | Weekly Project Status Meeting 1 |  | 1h | 2009-05-18 A | 2009-05-18 A |  | 100% |  |  |  | start no earlier than 2009-05-18 |  |  |  |  |  |
| 3 | 1.2 | Weekly Project Status Meeting 2 |  | 1h | 2009-05-25 A | 2009-05-25 A |  | 100% |  |  |  | start no earlier than 2009-05-25 |  |  |  |  |  |
| 4 | 1.3 | Weekly Project Status Meeting 3 |  | 1h | 2009-06-01 | 2009-06-01 |  |  |  | 30d |  | start no earlier than 2009-06-01 |  |  |  |  |  |
| 5 | 1.4 | Weekly Project Status Meeting 4 |  | 1h | 2009-06-08 | 2009-06-08 |  |  |  | 25d |  | start no earlier than 2009-06-08 |  |  |  |  |  |
| 6 | 1.5 | Weekly Project Status Meeting 5 |  | 1h | 2009-06-15 | 2009-06-15 |  |  |  | 20d |  | start no earlier than 2009-06-15 |  |  |  |  |  |
| 7 | 1.6 | Weekly Project Status Meeting 6 |  | 1h | 2009-06-22 | 2009-06-22 |  |  |  | 15d |  | start no earlier than 2009-06-22 |  |  |  |  |  |
| 8 | 1.7 | Weekly Project Status Meeting 7 |  | 1h | 2009-06-29 | 2009-06-29 |  |  |  | 10d |  | start no earlier than 2009-06-29 |  |  |  |  |  |
| 9 | 1.8 | Weekly Project Status Meeting 8 |  | 1h | 2009-07-06 | 2009-07-06 |  |  |  | 5d |  | start no earlier than 2009-07-06 |  |  |  |  |  |
| 10 | 1.9 | Weekly Project Status Meeting 9 |  | 1h | 2009-07-13 | 2009-07-13 |  |  |  | 31.88d |  | start no earlier than 2009-07-13 |  |  |  |  |  |
| 11 | 1.10 | **Project Setup** |  | 23d | 2009-05-11 A | 2009-06-10 |  | 8% | 21.16d | 58d |  |  |  | 200h | 16h | 37,480 | 3,080 |
| 12 | 1.10.1 | Create Project Schedule |  | 2d | 2009-05-14 A | 2009-05-15 A |  | 100% |  |  |  | start no earlier than 2009-05-14 | René Steg | 16h | 16h | 3,080 | 3,080 |
| 13 | 1.10.2 | Assign Solution Engineer |  | 20d | 2009-05-11 | 2009-06-05 |  |  |  | 0d |  |  | René Steg | 160h |  | 30,800 |  |
| 14 | 1.10.3 | Onboard the Solution Engineer |  | 2d | 2009-06-08 | 2009-06-09 | 13 |  |  | 0d |  |  | Solution Engineer | 16h |  | 2,400 |  |
| 15 | 1.10.4 | Solution Engineer available for project tasks | milestone | 0d | 2009-06-09 | 2009-06-09 | 14 |  |  | 59d |  |  |  |  |  |  |  |
| 16 | 1.10.5 | Conduct JAP Kickoff |  | 1d | 2009-06-10 | 2009-06-10 | 14 |  |  | 58d |  |  | Solution Engineer | 8h |  | 1,200 |  |
| 17 | 1.11 | **Initialisation** |  | 8d | 2009-05-11 A | 2009-05-20 |  | 40% | 4.8d | 73d |  |  |  | 40h | 16h | 3,080 | 3,080 |
| 18 | 1.11.1 | Gather Requirements |  | 1d | 2009-05-18 | 2009-05-18 |  |  |  | 62d | 0d | start no earlier than 2009-05-18 | Sebastian Risse | 8h |  |  |  |
| 19 | 1.11.2 | Signoff Requirements / Scope freeze |  | 1d | 2009-05-19 | 2009-05-19 | 18 |  |  | 62d | 9d |  | Sebastian Risse | 8h |  |  |  |
| 20 | 1.11.3 | Create Project Charter |  | 1d | 2009-05-20 | 2009-05-20 |  |  |  | 73d |  | start no earlier than 2009-05-20 | Sebastian Risse | 8h |  |  |  |
| 21 | 1.11.4 | Setup Configuration Management for Documentation |  | 1d | 2009-05-11 A | 2009-05-11 A |  | 100% |  |  |  |  | René Steg | 8h | 8h | 1,540 | 1,540 |
| 22 | 1.11.5 | Setup Change Management |  | 1d | 2009-05-12 A | 2009-05-12 A | 21 | 100% |  |  |  |  | René Steg | 8h | 8h | 1,540 | 1,540 |
| 23 | 1.12 | **System Design** |  | 28d | 2009-05-20 A | 2009-06-26 |  |  | 28d | 46d |  |  |  | 200h |  | 24,960 |  |
| 24 | 1.12.1 | Code Delivery by iGrafx | milestone | 0d | 2009-05-20 A | 2009-05-20 A |  | 100% |  |  |  | start no earlier than 2009-05-20 |  |  |  |  |  |
| 25 | 1.12.2 | Documentation Delivery by iGrafx | milestone | 0d | 2009-05-27 | 2009-05-27 |  |  |  | 67d | 0d | start no earlier than 2009-05-27 |  |  |  |  |  |
| 26 | 1.12.3 | Analyse Code according to JAP standards and iGrafx documentation |  | 2d | 2009-06-10 | 2009-06-11 | 25, 15 |  |  | 55d | 0d |  |  |  |  |  |  |
| 27 | 1.12.4 | Workshop with iGrafx to discuss open questions |  | 1d | 2009-06-12 | 2009-06-12 | 26 |  |  | 55d | 0d |  |  |  |  |  |  |
| 28 | 1.12.5 | Analyse System Context and identify surrouding systems |  | 1d | 2009-06-03 | 2009-06-03 |  |  |  | 63d |  | start no earlier than 2009-06-03 | René Steg | 8h |  | 1,540 |  |
| 29 | 1.12.6 | Update High-Level design in System Specification |  | 1d | 2009-06-15 | 2009-06-15 | 27 |  |  | 55d |  | start no earlier than 2009-05-20 | Solution Engineer | 8h |  | 1,200 |  |
| 30 | 1.12.7 | Create Detail Design in System Specification incl. Appl. Structure for JAP |  | 5d | 2009-06-10 | 2009-06-16 | 14 |  |  | 0d |  |  | Solution Engineer | 40h |  | 6,000 |  |
| 31 | 1.12.8 | Internal review of System Specification |  | 1d | 2009-06-17 | 2009-06-17 | 30 |  |  | 46d | 0d |  | René Steg | 8h |  | 1,540 |  |
| 32 | 1.12.9 | Update System Specification according to review findings |  | 1d | 2009-06-18 | 2009-06-18 | 31 |  |  | 46d | 0d |  | Solution Engineer | 8h |  | 1,200 |  |
| 33 | 1.12.10 | Approval of System Specification by necessary boards |  | 2d | 2009-06-19 | 2009-06-22 | 32 |  |  | 46d | 0d |  | TIS | 16h |  | 1,700 |  |
| 34 | 1.12.11 | System Specification is approved by the necessary boards | milestone | 0d | 2009-06-22 | 2009-06-22 | 33 |  |  | 46d | 0d |  |  |  |  |  |  |
| 35 | 1.12.12 | Create Operational Manual |  | 2d | 2009-06-23 | 2009-06-24 | 34 |  |  | 46d | 0d |  | TIS | 16h |  | 1,700 |  |
| 36 | 1.12.13 | Prepare Deployment Plan |  | 1d | 2009-06-25 | 2009-06-25 | 35 |  |  | 46d | 0d |  | René Steg | 8h |  | 1,540 |  |
| 37 | 1.12.14 | Prepare Release Notes |  | 1d | 2009-06-26 | 2009-06-26 | 36 |  |  | 46d |  |  | René Steg | 8h |  | 1,540 |  |
| 38 | 1.12.15 | Create first draft of Test Design |  | 2d | 2009-06-02 | 2009-06-03 | 19 |  |  | 53d | 0d | start no earlier than 2009-06-02 | Debarghya Ghatak | 16h |  | 2,000 |  |
| 39 | 1.12.16 | Review Test Design |  | 2d | 2009-06-04 | 2009-06-05 | 38 |  |  | 53d | 0d |  | José Hernaiz | 16h |  |  |  |
| 40 | 1.12.17 | Finalize Test Design |  | 2d | 2009-06-08 | 2009-06-09 | 39 |  |  | 53d | 0d |  | Debarghya Ghatak | 16h |  | 2,000 |  |
| 41 | 1.12.18 | Replicate Requirements to Quality Center |  | 1d | 2009-06-10 | 2009-06-10 | 40 |  |  | 53d | 0d |  | Debarghya Ghatak | 8h |  | 1,000 |  |
| 42 | 1.12.19 | Create Test Cases |  | 1d | 2009-06-11 | 2009-06-11 | 41 |  |  | 53d | 0d |  | Debarghya Ghatak | 8h |  | 1,000 |  |
| 43 | 1.12.20 | Review Test Cases |  | 1d | 2009-06-12 | 2009-06-12 | 42 |  |  | 53d | 0d |  | José Hernaiz | 8h |  |  |  |
| 44 | 1.12.21 | Finalize Test Cases |  | 1d | 2009-06-15 | 2009-06-15 | 43 |  |  | 53d | 0d |  | Debarghya Ghatak | 8h |  | 1,000 |  |
| 45 | 1.12.22 | Test Design and Test Cases ready for tests | milestone | 0d | 2009-06-15 | 2009-06-15 | 44 |  |  | 55d |  |  |  |  |  |  |  |

| ID | WBS | Task | Type | Duration | Start | Finish | Predecessors | Total slack | Free slack | Resources | Work | Cost |
| --- | --- | --- | --- | --- | --- | --- | --- | --- | --- | --- | --- | --- |
| 46 | 1.13 | **Realisation** |  | 29d | 2009-06-10 | 2009-07-20 |  | 5d |  |  | 328h | 47,480 |
| 47 | 1.13.1 | Create CIM Entries |  | 1d | 2009-06-10 | 2009-06-10 | 14 | 57d | 0d | René Steg | 8h | 1,540 |
| 48 | 1.13.2 | Create SwanXP Change Requests |  | 1d | 2009-06-11 | 2009-06-11 | 47 | 57d |  | René Steg | 8h | 1,540 |
| 49 | 1.13.3 | Order Batch |  | 10d | 2009-06-17 | 2009-06-30 | 30 | 44d |  | Solution Engineer | 80h | 12,000 |
| 50 | 1.13.4 | Code Freeze | milestone | 0d | 2009-06-22 | 2009-06-22 | 33 | 50d |  |  |  |  |
| 51 | 1.13.5 | Prepare Test Data |  | 2d | 2009-06-16 | 2009-06-17 | 44 | 53d |  | José Hernaiz | 16h |  |
| 52 | 1.13.6 | Request Server Capacity for JAP (all stages!) incl. DB |  | 5d | 2009-06-17 | 2009-06-23 | 30 | 0d |  | Solution Engineer | 40h | 6,000 |
| 53 | 1.13.7 | Manually Install Windows Server components |  | 2d | 2009-06-17 | 2009-06-18 | 30 | 52d |  | Solution Engineer | 16h | 2,400 |
| 54 | 1.13.8 | Manually Install Windows Desktop components |  | 1d | 2009-06-17 | 2009-06-17 | 30 | 53d |  | Solution Engineer | 8h | 1,200 |
| 55 | 1.13.9 | Setup Code Repository (CVS) according to JAP standards |  | 5d | 2009-06-24 | 2009-06-30 | 52 | 0d |  | Solution Engineer | 40h | 6,000 |
| 56 | 1.13.10 | Deploy Application to ET / IT environment |  | 4d | 2009-07-01 | 2009-07-06 | 55 | 0d |  | Solution Engineer | 32h | 4,800 |
| 57 | 1.13.11 | Initial deployment tests and corrections |  | 10d | 2009-07-07 | 2009-07-20 | 56 | 0d |  | Solution Engineer | 80h | 12,000 |
| 58 | 1.13.12 | Application is running on Credit Suisse test environment | milestone | 0d | 2009-07-20 | 2009-07-20 | 57 | 0d |  |  |  |  |
| 59 | 1.14 | **Deployment** |  | 81d | 2009-05-11 | 2009-08-31 |  | 0d |  |  | 288h | 25,150 |
| 60 | 1.14.1 | **Integration Test** |  | 61d | 2009-05-11 | 2009-08-03 |  | 20d |  |  | 160h | 13,100 |
| 61 | 1.14.1.1 | Get exceptional Desktop Client Package created |  | 10d | 2009-05-11 | 2009-05-22 |  | 71d |  | TIS | 80h | 8,500 |
| 62 | 1.14.1.2 | Create Baseline and deploy to Integration Test environment |  | 1d | 2009-07-21 | 2009-07-21 | 58 | 0d |  | Solution Engineer | 8h | 1,200 |
| 63 | 1.14.1.3 | Update test data for integration test |  | 1d | 2009-07-22 | 2009-07-22 | 62 | 0d |  | José Hernaiz | 8h |  |
| 64 | 1.14.1.4 | Execute test cases |  | 5d | 2009-07-23 | 2009-07-29 | 63 | 0d |  | José Hernaiz | 40h |  |
| 65 | 1.14.1.5 | Resolve defects including re-tests |  | 2d | 2009-07-30 | 2009-07-31 | 64 | 0d |  | Solution Engineer | 16h | 2,400 |
| 66 | 1.14.1.6 | Create Test Report |  | 1d | 2009-08-03 | 2009-08-03 | 65 | 0d |  | Debarghya Ghatak | 8h | 1,000 |
| 67 | 1.14.1.7 | Integration Test approved | milestone | 0d | 2009-08-03 | 2009-08-03 | 66 | 0d |  |  |  |  |
| 68 | 1.14.2 | **Load and Performance Test** |  | 7d | 2009-07-21 | 2009-07-29 |  | 3d |  |  | 56h | 6,800 |
| 69 | 1.14.2.1 | Deploy to PTA environment |  | 1d | 2009-07-21 | 2009-07-21 | 58 | 3d | 0d | Solution Engineer | 8h | 1,200 |
| 70 | 1.14.2.2 | Update test data for L&P Test |  | 2d | 2009-07-22 | 2009-07-23 | 69 | 3d | 0d | L&P Team | 16h | 1,700 |
| 71 | 1.14.2.3 | Execute test cases |  | 2d | 2009-07-24 | 2009-07-27 | 70 | 3d | 0d | L&P Team | 16h | 1,700 |
| 72 | 1.14.2.4 | Resolve defects including re-tests |  | 1d | 2009-07-28 | 2009-07-28 | 71 | 3d | 0d | Solution Engineer | 8h | 1,200 |
| 73 | 1.14.2.5 | Create Test Report |  | 1d | 2009-07-29 | 2009-07-29 | 72 | 3d | 0d | Debarghya Ghatak | 8h | 1,000 |
| 74 | 1.14.2.6 | Load and Performance Test approved | milestone | 0d | 2009-07-29 | 2009-07-29 | 73 | 3d | 0d |  |  |  |

| ID | WBS | Task | Type | Duration | Start | Finish | Predecessors | Total slack | Free slack | Constraint | Resources | Work | Cost |
| --- | --- | --- | --- | --- | --- | --- | --- | --- | --- | --- | --- | --- | --- |
| 75 | 1.14.3 | **Operational Acceptance Test** |  | 2d | 2009-07-30 | 2009-07-31 |  | 21d |  |  |  | 16h | 1,850 |
| 76 | 1.14.3.1 | Execute test cases |  | 1d | 2009-07-30 | 2009-07-30 | 74 | 20d | 0d |  | TIS | 8h | 850 |
| 77 | 1.14.3.2 | Create Test Report |  | 1d | 2009-07-31 | 2009-07-31 | 76 | 21d | 0d |  | Debarghya Ghatak | 8h | 1,000 |
| 78 | 1.14.3.3 | Operational Acceptance | milestone | 0d | 2009-07-31 | 2009-07-31 | 77 | 21d |  |  |  |  |  |
| 79 | 1.14.4 | **User Acceptance Test** |  | 7d | 2009-08-04 | 2009-08-12 |  | 0d |  |  |  | 56h | 3,400 |
| 80 | 1.14.4.1 | Deploy to PTA environment |  | 1d | 2009-08-04 | 2009-08-04 | 74, 67 | 0d |  |  | Solution Engineer | 8h | 1,200 |
| 81 | 1.14.4.2 | Update test data for PTA |  | 2d | 2009-08-05 | 2009-08-06 | 80 | 0d |  |  | José Hernaiz | 16h |  |
| 82 | 1.14.4.3 | Execute test cases |  | 2d | 2009-08-07 | 2009-08-10 | 81 | 0d |  |  | José Hernaiz | 16h |  |
| 83 | 1.14.4.4 | Resolve defects including re-tests |  | 1d | 2009-08-11 | 2009-08-11 | 82 | 0d |  |  | Solution Engineer | 8h | 1,200 |
| 84 | 1.14.4.5 | Create Test Report |  | 1d | 2009-08-12 | 2009-08-12 | 83 | 0d |  |  | Debarghya Ghatak | 8h | 1,000 |
| 85 | 1.14.4.6 | User Acceptance PTA | milestone | 0d | 2009-08-12 | 2009-08-12 | 84 | 0d |  |  |  |  |  |
| 86 | 1.14.5 | CCB Approval for Go Live | milestone | 0d | 2009-08-12 | 2009-08-12 | 85 | 0d |  |  |  |  |  |
| 87 | 1.14.6 | **Go live** |  | 13d | 2009-08-13 | 2009-08-31 |  | 0d |  |  |  |  |  |
| 88 | 1.14.6.1 | Buffer Task |  | 10d | 2009-08-13 | 2009-08-26 | 86 | 0d |  |  |  |  |  |
| 89 | 1.14.6.2 | General Go Live Preparation Tasks |  | 2d | 2009-08-27 | 2009-08-28 | 88 | 0d |  |  |  |  |  |
| 90 | 1.14.6.3 | Deploy to PROD environment |  | 1d | 2009-08-31 | 2009-08-31 | 89 | 0d |  |  |  |  |  |
| 91 | 1.14.6.4 | iGrafx Gen 2 is live | milestone | 0d | 2009-08-31 | 2009-08-31 | 90 | 0d |  |  |  |  |  |
| 92 | 1.15 | Define Maintenance responsibilities |  | 10d | 2009-05-11 | 2009-05-22 |  | 71d |  |  |  |  |  |
| 93 | 1.16 | Track SwanXP Change Requests |  | 4d | 2009-05-11 | 2009-05-14 |  | 77d |  |  |  |  |  |
| 94 | 1.17 | Request Windows Desktop Packages creation |  | 20d | 2009-07-21 | 2009-08-17 | 58 | 10d |  |  | Solution Engineer | 160h | 24,000 |
| 95 | 1.18 | Request Windows Server Packages creation |  | 20d | 2009-05-20 | 2009-06-16 |  | 54d |  | start no earlier than 2009-05-20 | René Steg | 160h | 30,800 |
| 96 | 1.19 | Create Data Migration Plan |  | 2d | 2009-05-11 | 2009-05-12 |  | 79d |  |  |  |  |  |
| 97 | 1.20 | Review Data Migration Plan |  | 1d | 2009-05-11 | 2009-05-11 |  | 80d |  |  |  |  |  |
| 98 | 1.21 | Test Data Migration |  | 2d | 2009-05-11 | 2009-05-12 |  | 79d |  |  |  |  |  |
